# Plan de Trabajo CEI

How a schedule from MS Project changed from version to version. A marks actual dates.

## Version 1 (saved 2018-04-30)

Note of the change: docs planificacion al 20180504

| ID | WBS | Task | Duration | Start | Finish | Predecessors | Total float | Constraint |
| --- | --- | --- | --- | --- | --- | --- | --- | --- |
| 1 | 1 | **Control Electrónico del IGV** | 1140d? | 2014-03-03 | 2018-07-16 |  | 0d |  |
| 2 | 1.1 | **Gestión del Proyecto** | 1085d | 2014-03-03 | 2018-04-27 |  | 55d |  |
| 3 | 1.1.1 | **Iniciación** | 0.5d | 2018-04-23 | 2018-04-23 |  | 55d |  |
| 4 | 1.1.1.1 | **Project Charter** | 0.5d | 2018-04-23 | 2018-04-23 |  | 59.5d |  |
| 5 |  | Elaborar el Project Charter | 3h | 2018-04-23 | 2018-04-23 |  | 59.5d |  |
| 6 |  | Revisar el Project Charter | 1h | 2018-04-23 | 2018-04-23 | 5 | 59.5d |  |
| 7 | 1.1.1.2 | **Scope Statement** | 0.5d | 2018-04-23 | 2018-04-23 |  | 55d |  |
| 8 |  | Elaborar el Scope Statement | 3h | 2018-04-23 | 2018-04-23 |  | 55d |  |
| 9 |  | Revisar el Scope Statement | 1h | 2018-04-23 | 2018-04-23 | 8 | 55d |  |
| 10 | 1.1.2 | **Plan de Proyecto** | 4.5d | 2018-04-23 | 2018-04-27 |  | 55d |  |
| 11 |  | Elaborar el Plan de Proyecto | 36h | 2018-04-23 | 2018-04-27 | 9 | 55d |  |
| 12 | 1.1.3 | **Informes de Estado del Proyecto** | 70.12d | 2014-03-03 | 2014-06-09 |  | 1069.88d |  |
| 13 |  | Informes de Estado del Proyecto 1 | 1h | 2014-03-03 | 2014-03-03 |  | 1139.88d | start no earlier than 2014-03-03 |
| 14 |  | Informes de Estado del Proyecto 2 | 1h | 2014-03-10 | 2014-03-10 |  | 1134.88d | start no earlier than 2014-03-10 |
| 15 |  | Informes de Estado del Proyecto 3 | 1h | 2014-03-17 | 2014-03-17 |  | 1129.88d | start no earlier than 2014-03-17 |
| 16 |  | Informes de Estado del Proyecto 4 | 1h | 2014-03-24 | 2014-03-24 |  | 1124.88d | start no earlier than 2014-03-24 |
| 17 |  | Informes de Estado del Proyecto 5 | 1h | 2014-03-31 | 2014-03-31 |  | 1119.88d | start no earlier than 2014-03-31 |
| 18 |  | Informes de Estado del Proyecto 6 | 1h | 2014-04-07 | 2014-04-07 |  | 1114.88d | start no earlier than 2014-04-07 |
| 19 |  | Informes de Estado del Proyecto 7 | 1h | 2014-04-14 | 2014-04-14 |  | 1109.88d | start no earlier than 2014-04-14 |
| 20 |  | Informes de Estado del Proyecto 8 | 1h | 2014-04-21 | 2014-04-21 |  | 1104.88d | start no earlier than 2014-04-21 |
| 21 |  | Informes de Estado del Proyecto 9 | 1h | 2014-04-28 | 2014-04-28 |  | 1099.88d | start no earlier than 2014-04-28 |
| 22 |  | Informes de Estado del Proyecto 10 | 1h | 2014-05-05 | 2014-05-05 |  | 1094.88d | start no earlier than 2014-05-05 |
| 23 |  | Informes de Estado del Proyecto 11 | 1h | 2014-05-12 | 2014-05-12 |  | 1089.88d | start no earlier than 2014-05-12 |
| 24 |  | Informes de Estado del Proyecto 12 | 1h | 2014-05-19 | 2014-05-19 |  | 1084.88d | start no earlier than 2014-05-19 |
| 25 |  | Informes de Estado del Proyecto 13 | 1h | 2014-05-26 | 2014-05-26 |  | 1079.38d | start no earlier than 2014-05-26 |
| 26 |  | Informes de Estado del Proyecto 14 | 1h | 2014-06-02 | 2014-06-02 |  | 1074.88d | start no earlier than 2014-06-02 |
| 27 |  | Informes de Estado del Proyecto 15 | 1h | 2014-06-09 | 2014-06-09 |  | 1069.88d | start no earlier than 2014-06-09 |
| 28 | 1.1.4 | **Reunión de Coordinación Semanal** | 70.12d | 2014-03-03 | 2014-06-09 |  | 1069.88d |  |
| 29 |  | Reunión de Coordinación Semanal 1 | 1h | 2014-03-03 | 2014-03-03 |  | 1139.88d | start no earlier than 2014-03-03 |
| 30 |  | Reunión de Coordinación Semanal 2 | 1h | 2014-03-10 | 2014-03-10 |  | 1134.88d | start no earlier than 2014-03-10 |
| 31 |  | Reunión de Coordinación Semanal 3 | 1h | 2014-03-17 | 2014-03-17 |  | 1129.88d | start no earlier than 2014-03-17 |
| 32 |  | Reunión de Coordinación Semanal 4 | 1h | 2014-03-24 | 2014-03-24 |  | 1124.88d | start no earlier than 2014-03-24 |
| 33 |  | Reunión de Coordinación Semanal 5 | 1h | 2014-03-31 | 2014-03-31 |  | 1119.88d | start no earlier than 2014-03-31 |
| 34 |  | Reunión de Coordinación Semanal 6 | 1h | 2014-04-07 | 2014-04-07 |  | 1114.88d | start no earlier than 2014-04-07 |
| 35 |  | Reunión de Coordinación Semanal 7 | 1h | 2014-04-14 | 2014-04-14 |  | 1109.88d | start no earlier than 2014-04-14 |
| 36 |  | Reunión de Coordinación Semanal 8 | 1h | 2014-04-21 | 2014-04-21 |  | 1104.88d | start no earlier than 2014-04-21 |
| 37 |  | Reunión de Coordinación Semanal 9 | 1h | 2014-04-28 | 2014-04-28 |  | 1099.88d | start no earlier than 2014-04-28 |
| 38 |  | Reunión de Coordinación Semanal 10 | 1h | 2014-05-05 | 2014-05-05 |  | 1094.88d | start no earlier than 2014-05-05 |
| 39 |  | Reunión de Coordinación Semanal 11 | 1h | 2014-05-12 | 2014-05-12 |  | 1089.88d | start no earlier than 2014-05-12 |
| 40 |  | Reunión de Coordinación Semanal 12 | 1h | 2014-05-19 | 2014-05-19 |  | 1084.88d | start no earlier than 2014-05-19 |
| 41 |  | Reunión de Coordinación Semanal 13 | 1h | 2014-05-26 | 2014-05-26 |  | 1079.38d | start no earlier than 2014-05-26 |
| 42 |  | Reunión de Coordinación Semanal 14 | 1h | 2014-06-02 | 2014-06-02 |  | 1074.88d | start no earlier than 2014-06-02 |
| 43 |  | Reunión de Coordinación Semanal 15 | 1h | 2014-06-09 | 2014-06-09 |  | 1069.88d | start no earlier than 2014-06-09 |
| 44 | 1.1.5 | **Cierre del Proyecto** | 0.5d | 2014-05-26 | 2014-05-26 |  | 1079.38d |  |
| 45 |  | Elaborar Documentos de Cierre del Proyecto | 4h | 2014-05-26 | 2014-05-26 | 25, 41 | 1079.38d |  |
| 46 | 1.2 | **Disponibilidad de Modelos de IGV y PN** | 42.5d | 2018-04-23 | 2018-06-21 |  | 17.5d |  |
| 47 | 1.2.1 | **Planificación** | 1d | 2018-04-23 | 2018-04-23 |  | 17.5d |  |
| 48 |  | Levantamiento de Requerimientos | 1d | 2018-04-23 | 2018-04-23 |  | 17.5d |  |
| 49 |  | Entregable: Documento de Requerimientos | 0d | 2018-04-23 | 2018-04-23 | 48 | 17.5d |  |
| 50 | 1.2.2 | **Elecución** | 40.5d | 2018-04-24 | 2018-06-20 |  | 17.5d |  |
| 51 | 1.2.2.1 | **Control de Calidad** | 40d | 2018-04-24 | 2018-06-19 |  | 17.5d |  |
| 52 |  | Revisar Modelo de IGV - Teradata | 5d | 2018-04-24 | 2018-04-30 | 49 | 17.5d |  |
| 53 |  | Revisar Modelo de PN – Teradata | 35d | 2018-05-02 | 2018-06-19 | 52 | 17.5d |  |
| 54 |  | Entregable: Modelo del IGV y PN -Teradata -QA | 0d | 2018-06-19 | 2018-06-19 | 53 | 17.5d |  |
| 55 | 1.2.2.2 | **Implantación** | 0.5d | 2018-06-20 | 2018-06-20 |  | 17.5d |  |
| 56 |  | Modelo de IGV - Teradata | 0.5d | 2018-06-20 | 2018-06-20 | 54 | 18.5d |  |
| 57 |  | Modelo de PN – Teradata | 0.5d | 2018-06-20 | 2018-06-20 | 54 | 17.5d |  |
| 58 |  | Entregable: Modelo del IGV y PN -Teradata - Implementado | 0d | 2018-06-20 | 2018-06-20 | 57 | 17.5d |  |
| 59 | 1.2.3 | **Cierre** | 1d | 2018-06-20 | 2018-06-21 |  | 17.5d |  |
| 60 |  | Acta de aceptación del Producto | 1d | 2018-06-20 | 2018-06-21 | 58 | 17.5d |  |
| 61 |  | Entregable: Acta de Aceptación del Producto - Aprobado | 0d | 2018-06-21 | 2018-06-21 | 60 | 17.5d |  |
| 62 | 1.3 | **Gestión de Riesgo del Cumplimiento Tributario del IGV** | 60d? | 2018-04-23 | 2018-07-16 |  | 0d |  |
| 63 | 1.3.1 | **Planificación** | 4d | 2018-04-23 | 2018-04-26 |  | 56d |  |
| 64 |  | Levantamiento de Requerimiento de Variable de Condición de Domicilio - Estado del Contribuyente | 1d | 2018-04-23 | 2018-04-23 |  | 56d |  |
| 65 |  | Levantamiento de Requerimiento de Variable de Omiso a la Declaración MEPECO | 1d | 2018-04-24 | 2018-04-24 | 64 | 56d |  |
| 66 |  | Levantamiento de Requerimiento de Variable de Omiso a la Declaración PRICO | 1d | 2018-04-25 | 2018-04-25 | 65 | 56d |  |
| 67 |  | Levantamiento de Requerimiento de Servicio de Perfil | 1d | 2018-04-26 | 2018-04-26 | 66 | 56d |  |
| 68 |  | Entregable: Documento de Requerimientos de Matriz PRC | 0d | 2018-04-26 | 2018-04-26 | 67 | 56d |  |
| 69 | 1.3.2 | **Ejecución** | 50d | 2018-04-23 | 2018-07-02 |  | 9d |  |
| 70 | 1.3.2.1 | **Desarrollo** | 19d | 2018-04-23 | 2018-05-18 |  | 9d |  |

| ID | WBS | Task | Duration | Start | Finish | Predecessors | Total float |
| --- | --- | --- | --- | --- | --- | --- | --- |
| 71 |  | Matriz PRC - Variable de Condición de Domicilio - Estado del Contribuyente | 19d | 2018-04-23 | 2018-05-18 |  | 9d |
| 72 | 1.3.2.1.2 | **Matriz PRC - Variable de Omiso a la Declaración MEPECO** | 19d | 2018-04-23 | 2018-05-18 |  | 9d |
| 73 |  | Ajustes en los procesos de la infracción. Graba en la tabla de variables | 13d | 2018-04-23 | 2018-05-10 |  | 9d |
| 74 |  | Actualización de la omisión desde la tabla de variables cuando Llega la DJ | 6d | 2018-05-11 | 2018-05-18 | 73 | 9d |
| 75 |  | Matriz PRC - Variable de Omiso a la Declaración PRICO | 19d | 2018-04-23 | 2018-05-18 |  | 9d |
| 76 | 1.3.2.1.4 | **Matriz PRC - Variable Omisos Libros Electrónicos - Padrón acotado** | 19d | 2018-04-23 | 2018-05-18 |  | 9d |
| 77 |  | La generación de la variable de omiso de libros electrónicos | 13d | 2018-04-23 | 2018-05-10 |  | 9d |
| 78 |  | Los ajustes a la emisión electrónica basada en el perfil. | 6d | 2018-05-11 | 2018-05-18 | 77 | 9d |
| 79 |  | Matriz PRC - Servicio de Perfil | 19d | 2018-04-23 | 2018-05-18 |  | 9d |
| 80 |  | Entregable: Matriz de Riesgos del Contrinuyente Desarrollada | 0d | 2018-05-18 | 2018-05-18 | 71, 74, 75, 78, 79 | 41d |
| 81 | 1.3.2.2 | **Control de Calidad** | 30d | 2018-05-21 | 2018-06-29 |  | 9d |
| 82 |  | Matriz PRC - Variable de Condición de Domicilio - Estado del Contribuyente | 30d | 2018-05-21 | 2018-06-29 | 71 | 9d |
| 83 |  | Matriz PRC - Variable de Omiso a la Declaración MEPECO | 30d | 2018-05-21 | 2018-06-29 | 74 | 9d |
| 84 |  | Matriz PRC - Variable de Omiso a la Declaración PRICO | 30d | 2018-05-21 | 2018-06-29 | 75 | 9d |
| 85 |  | Matriz PRC - Variable Omisos Libros Electrónicos - Padrón acotado | 30d | 2018-05-21 | 2018-06-29 | 78 | 9d |
| 86 |  | Matriz PRC - Servicio de Perfil | 30d | 2018-05-21 | 2018-06-29 | 79 | 9d |
| 87 |  | Entregable: Matriz de Riesgos del Contrinuyente - QA | 0d | 2018-06-29 | 2018-06-29 | 82, 83, 84, 85, 86 | 9d |
| 88 | 1.3.2.3 | **Implantación** | 1d | 2018-07-02 | 2018-07-02 |  | 9d |
| 89 |  | Insatación de Matriz de Riesgos del Contribuyente | 1d | 2018-07-02 | 2018-07-02 | 87 | 9d |
| 90 |  | Entregable: Matriz de Riesgos del Contrinuyente -Implementada | 0d | 2018-07-02 | 2018-07-02 | 89 | 9d |
| 91 | 1.3.3 | **Cierre** | 1d | 2018-07-03 | 2018-07-03 |  | 9d |
| 92 |  | Matriz de Riesgos del Contribuyente | 1d | 2018-07-03 | 2018-07-03 | 90 | 9d |
| 93 |  | Entregable: Matriz de Riesgos del Contrinuyente -Implementada | 0d | 2018-07-03 | 2018-07-03 | 92 | 9d |
| 94 | 1.3.4 | **Variables del IGV para la selección en la gestión masiva y selectiva** | 1d | 2018-04-23 | 2018-04-23 |  | 59d |
| 95 | 1.3.4.1 | **Planificación** | 1d | 2018-04-23 | 2018-04-23 |  | 59d |
| 96 |  | Levantamiento de Requerimientos de Variables del IGV para la selección en la gestión masiva y selectiva | 1d | 2018-04-23 | 2018-04-23 |  | 59d |
| 97 |  | Entregable: Documento de Requerimientos de Variables del IGV para la selección en la gestión masiva y selectiva | 0d | 2018-04-23 | 2018-04-23 | 96 | 59d |
| 98 | 1.3.4.2 | **Ejecución** | 1d | 2018-04-23 | 2018-04-23 |  | 59d |
| 99 | 1.3.4.2.1 | **Desarrollo** | 1d | 2018-04-23 | 2018-04-23 |  | 59d |
| 100 |  | Desarrollar Variables del IGV para la selección en la gestión masiva y selectiva | 1d | 2018-04-23 | 2018-04-23 |  | 59d |
| 101 |  | Entregable: Variables del IGV para la selección en la gestión masiva y selectiva- Desarrollo | 0d | 2018-04-23 | 2018-04-23 |  | 60d |
| 102 | 1.3.4.2.2 | **Control de Calidad** | 1d | 2018-04-23 | 2018-04-23 |  | 59d |
| 103 |  | CC Variables del IGV para la selección en la gestión masiva y selectiva | 1d | 2018-04-23 | 2018-04-23 |  | 59d |
| 104 |  | Entregable: Variables del IGV para la selección en la gestión masiva y selectiva-QA | 0d | 2018-04-23 | 2018-04-23 |  | 60d |
| 105 | 1.3.4.2.3 | **Implantación** | 1d | 2018-04-23 | 2018-04-23 |  | 59d |
| 106 |  | Implementar Variables del IGV para la selección en la gestión masiva y selectiva | 1d | 2018-04-23 | 2018-04-23 |  | 59d |
| 107 |  | Entregable: Variables del IGV para la selección en la gestión masiva y selectiva - Implementado | 0d | 2018-04-23 | 2018-04-23 |  | 60d |
| 108 | 1.3.4.3 | **Cierre** | 1d | 2018-04-23 | 2018-04-23 |  | 59d |
| 109 |  | Realizar el Acta de Aprobación de Variables del IGV para la selección en la gestión masiva y selectiva | 1d | 2018-04-23 | 2018-04-23 |  | 59d |
| 110 |  | Entregable: Acta de Aprobación de Variables del IGV para la selección en la gestión masiva y selectiva | 0d | 2018-04-23 | 2018-04-23 |  | 60d |
| 111 | 1.3.5 | **Variables del PPNN para la selección en la gestión masiva y 2.5 selectiva** | 2d? | 2018-04-23 | 2018-04-24 |  | 58d |
| 112 | 1.3.5.1 | **Planificación** | 2d | 2018-04-23 | 2018-04-24 |  | 58d |
| 113 |  | Levantamiento de Requerimientos de Variables del PPNN para la selección en la gestión masiva y 2.5 selectiva | 2d | 2018-04-23 | 2018-04-24 |  | 58d |
| 114 |  | Entregable: Documento de Requerimientos de Variables del PPNN para la selección en la gestión masiva y 2.5 selectiva | 0d | 2018-04-23 | 2018-04-23 |  | 60d |
| 115 | 1.3.5.2 | **Ejecución** | 1d? | 2018-04-23 | 2018-04-23 |  | 59d |
| 116 | 1.3.5.2.1 | **Desarrollo** | 1d? | 2018-04-23 | 2018-04-23 |  | 59d |
| 117 |  | Desarrollar Variables del PPNN para la selección en la gestión masiva y 2.5 selectiva | 1d? | 2018-04-23 | 2018-04-23 |  | 59d |
| 118 |  | Entregable: Variables del PPNN para la selección en la gestión masiva y 2.5 selectiva | 0d | 2018-04-23 | 2018-04-23 |  | 60d |
| 119 | 1.3.5.2.2 | **Control de Calidad** | 1d? | 2018-04-23 | 2018-04-23 |  | 59d |
| 120 |  | CC Variables del PPNN para la selección en la gestión masiva y 2.5 selectiva | 1d? | 2018-04-23 | 2018-04-23 |  | 59d |
| 121 |  | Entregable: Variables del PPNN para la selección en la gestión masiva y 2.5 selectiva-QA | 0d | 2018-04-23 | 2018-04-23 |  | 60d |
| 122 | 1.3.5.2.3 | **Implantación** | 1d? | 2018-04-23 | 2018-04-23 |  | 59d |
| 123 |  | Implementar Variables del PPNN para la selección en la gestión masiva y 2.5 selectiva | 1d? | 2018-04-23 | 2018-04-23 |  | 59d |
| 124 |  | Entregable: Variables del PPNN para la selección en la gestión masiva y 2.5 selectiva - Implementado | 0d | 2018-04-23 | 2018-04-23 |  | 60d |
| 125 | 1.3.5.3 | **Cierre** | 2d | 2018-04-23 | 2018-04-24 |  | 58d |
| 126 |  | Realizar el Acta de Aprobación de Variables del PPNN para la selección en la gestión masiva y 2.5 selectiva | 2d | 2018-04-23 | 2018-04-24 |  | 58d |
| 127 |  | Entregable: Acta de Aprobación de Variables del PPNN para la selección en la gestión masiva y 2.5 selectiva | 0d | 2018-04-23 | 2018-04-23 |  | 60d |
| 128 | 1.3.6 | **Actualizar vinculaciones a los ONR** | 2d? | 2018-04-23 | 2018-04-24 |  | 58d |
| 129 | 1.3.6.1 | **Planificación** | 2d | 2018-04-23 | 2018-04-24 |  | 58d |
| 130 |  | Levantamiento de Requerimientos de Actualizar vinculaciones a los ONR | 2d | 2018-04-23 | 2018-04-24 |  | 58d |
| 131 |  | Entregable: Documento de Requerimientos de Actualizar vinculaciones a los ONR | 0d | 2018-04-23 | 2018-04-23 |  | 60d |
| 132 | 1.3.6.2 | **Ejecución** | 1d? | 2018-04-23 | 2018-04-23 |  | 59d |
| 133 | 1.3.6.2.1 | **Desarrollo** | 1d? | 2018-04-23 | 2018-04-23 |  | 59d |
| 134 |  | Desarrollar Actualizar vinculaciones a los ONR | 1d? | 2018-04-23 | 2018-04-23 |  | 59d |
| 135 |  | Entregable: Actualizar vinculaciones a los ONR | 0d | 2018-04-23 | 2018-04-23 |  | 60d |
| 136 | 1.3.6.2.2 | **Control de Calidad** | 1d? | 2018-04-23 | 2018-04-23 |  | 59d |
| 137 |  | CC Actualizar vinculaciones a los ONR | 1d? | 2018-04-23 | 2018-04-23 |  | 59d |
| 138 |  | Entregable: Actualizar vinculaciones a los ONR-QA | 0d | 2018-04-23 | 2018-04-23 |  | 60d |
| 139 | 1.3.6.2.3 | **Implantación** | 1d? | 2018-04-23 | 2018-04-23 |  | 59d |
| 140 |  | Implementar Actualizar vinculaciones a los ONR | 1d? | 2018-04-23 | 2018-04-23 |  | 59d |

| ID | WBS | Task | Duration | Start | Finish | Predecessors | Total float |
| --- | --- | --- | --- | --- | --- | --- | --- |
| 141 |  | Entregable: Actualizar vinculaciones a los ONR - Implementado | 0d | 2018-04-23 | 2018-04-23 |  | 60d |
| 142 | 1.3.6.3 | **Cierre** | 2d | 2018-04-23 | 2018-04-24 |  | 58d |
| 143 |  | Realizar el Acta de Aprobación de Actualizar vinculaciones a los ONR | 2d | 2018-04-23 | 2018-04-24 |  | 58d |
| 144 |  | Entregable: Acta de Aprobación de Actualizar vinculaciones a los ONR | 0d | 2018-04-23 | 2018-04-23 |  | 60d |
| 145 | 1.3.7 | **Variables de inconsistencias del RCVE** | 60d? | 2018-04-23 | 2018-07-16 |  | 0d |
| 146 | 1.3.7.1 | **Planificación** | 1d | 2018-04-23 | 2018-04-23 |  | 59d |
| 147 |  | Levantamiento de Requerimientos de Variables de Inconsistencias del RCVE | 1d | 2018-04-23 | 2018-04-23 |  | 59d |
| 148 |  | Entregable: Documento de Requerimientos de Variables de Inconsistencia del RCVE | 0d | 2018-04-23 | 2018-04-23 |  | 60d |
| 149 | 1.3.7.2 | **Ejecución** | 60d? | 2018-04-23 | 2018-07-16 |  | 0d |
| 150 | 1.3.7.2.1 | **Desarrollo** | 60d | 2018-04-23 | 2018-07-16 |  | 0d |
| 151 |  | Desarrollar Variables de inconsistencias del RCVE | 60d | 2018-04-23 | 2018-07-16 |  | 0d |
| 152 |  | Entregable: Variables de inconsistencias del RCVE - Desarrollo | 0d | 2018-07-16 | 2018-07-16 | 151 | 0d |
| 153 | 1.3.7.2.2 | **Control de Calidad** | 1d? | 2018-04-23 | 2018-04-23 |  | 59d |
| 154 |  | Variables de inconsistencias del RCVE | 1d? | 2018-04-23 | 2018-04-23 |  | 59d |
| 155 |  | Entregable: Variables de inconsistencias del RCVE-QA | 0d | 2018-04-23 | 2018-04-23 |  | 60d |
| 156 | 1.3.7.2.3 | **Implantación** | 1d? | 2018-04-23 | 2018-04-23 |  | 59d |
| 157 |  | Variables de inconsistencias del RCVE | 1d? | 2018-04-23 | 2018-04-23 |  | 59d |
| 158 |  | Entregable: Variables de inconsistencias del RCVE - Implementado | 0d | 2018-04-23 | 2018-04-23 |  | 60d |
| 159 | 1.3.7.3 | **Cierre** | 1d | 2018-04-23 | 2018-04-23 |  | 59d |
| 160 |  | Realizar el Acta de Aprobación de Variables de inconsistencias del RCVE | 1d | 2018-04-23 | 2018-04-23 |  | 59d |
| 161 |  | Entregable: Acta de Aprobación de Variables de Inconsistencias del RCVE | 0d | 2018-04-23 | 2018-04-23 |  | 60d |
| 162 |  | APP de Consulta de Cumplimiento Tributario del IGV | 1d? | 2018-04-23 | 2018-04-23 |  | 59d |
| 163 | 1.4 | **Actualización del Registro Único de Contribuyente** | 1d? | 2018-04-23 | 2018-04-23 |  | 59d |
| 164 | 1.4.1 | **Campaña de Actualización email** | 1d? | 2018-04-23 | 2018-04-23 |  | 59d |
| 165 | 1.4.1.1 | **Planificación** | 1d? | 2018-04-23 | 2018-04-23 |  | 59d |
| 166 |  | Levantamiento de Requerimientos de Campaña de Actualización email | 1d? | 2018-04-23 | 2018-04-23 |  | 59d |
| 167 |  | Entregable: Documento de Requerimientos de Campaña de Actualización email | 1d? | 2018-04-23 | 2018-04-23 |  | 59d |
| 168 | 1.4.1.2 | **Ejecución** | 1d? | 2018-04-23 | 2018-04-23 |  | 59d |
| 169 | 1.4.1.2.1 | **Desarrollo** | 1d? | 2018-04-23 | 2018-04-23 |  | 59d |
| 170 |  | Desarrollar Campaña de Actualización email | 1d? | 2018-04-23 | 2018-04-23 |  | 59d |
| 171 |  | Entregable: Campaña de Actualización email-Desarrolado | 1d? | 2018-04-23 | 2018-04-23 |  | 59d |
| 172 | 1.4.1.2.2 | **Control de Calidad** | 1d? | 2018-04-23 | 2018-04-23 |  | 59d |
| 173 |  | CC Campaña de Actualización email | 1d? | 2018-04-23 | 2018-04-23 |  | 59d |
| 174 |  | Entregable: Campaña de Actualización email-QA | 1d? | 2018-04-23 | 2018-04-23 |  | 59d |
| 175 | 1.4.1.2.3 | **Implantación** | 1d? | 2018-04-23 | 2018-04-23 |  | 59d |
| 176 |  | Implementar Campaña de Actualización email | 1d? | 2018-04-23 | 2018-04-23 |  | 59d |
| 177 |  | Entregable: Campaña de Actualización email - Implementado | 1d? | 2018-04-23 | 2018-04-23 |  | 59d |
| 178 | 1.4.1.3 | **Cierre** | 1d? | 2018-04-23 | 2018-04-23 |  | 59d |
| 179 |  | Realizar el Acta de Aprobación de Campaña de Actualización email | 1d? | 2018-04-23 | 2018-04-23 |  | 59d |
| 180 |  | Entregable: Acta de Aprobación de Campaña de Actualización email | 1d? | 2018-04-23 | 2018-04-23 |  | 59d |
| 181 | 1.5 | **Campaña de Actualización celular** | 1d? | 2018-04-23 | 2018-04-23 |  | 59d |
| 182 | 1.5.1 | **Planificación** | 1d? | 2018-04-23 | 2018-04-23 |  | 59d |
| 183 |  | Levantamiento de Requerimientos de Campaña de Actualización celular | 1d? | 2018-04-23 | 2018-04-23 |  | 59d |
| 184 |  | Entregable: Documento de Requerimientos de Campaña de Actualización celular | 1d? | 2018-04-23 | 2018-04-23 |  | 59d |
| 185 | 1.5.2 | **Ejecución** | 1d? | 2018-04-23 | 2018-04-23 |  | 59d |
| 186 | 1.5.2.1 | **Desarrollo** | 1d? | 2018-04-23 | 2018-04-23 |  | 59d |
| 187 |  | Desarrollar Campaña de Actualización celular | 1d? | 2018-04-23 | 2018-04-23 |  | 59d |
| 188 |  | Entregable: Campaña de Actualización celular-Desarrolado | 1d? | 2018-04-23 | 2018-04-23 |  | 59d |
| 189 | 1.5.2.2 | **Control de Calidad** | 1d? | 2018-04-23 | 2018-04-23 |  | 59d |
| 190 |  | CC Campaña de Actualización celular | 1d? | 2018-04-23 | 2018-04-23 |  | 59d |
| 191 |  | Entregable: Campaña de Actualización celular-QA | 1d? | 2018-04-23 | 2018-04-23 |  | 59d |
| 192 | 1.5.2.3 | **Implantación** | 1d? | 2018-04-23 | 2018-04-23 |  | 59d |
| 193 |  | Implementar Campaña de Actualización celular | 1d? | 2018-04-23 | 2018-04-23 |  | 59d |
| 194 |  | Entregable: Campaña de Actualización celular- Implementado | 1d? | 2018-04-23 | 2018-04-23 |  | 59d |
| 195 | 1.5.3 | **Cierre** | 1d? | 2018-04-23 | 2018-04-23 |  | 59d |
| 196 |  | Realizar el Acta de Aprobación de Campaña de Actualización celular | 1d? | 2018-04-23 | 2018-04-23 |  | 59d |
| 197 |  | Entregable: Acta de Aprobación de Campaña de Actualización celular | 1d? | 2018-04-23 | 2018-04-23 |  | 59d |
| 198 | 1.6 | **Controles electrónicos a la autorización y emisión de CdP** | 1d? | 2018-04-23 | 2018-04-23 |  | 59d |
| 199 | 1.6.1 | **Alertas de inconsistencias en el CPE** | 1d? | 2018-04-23 | 2018-04-23 |  | 59d |
| 200 | 1.6.1.1 | **Planificación** | 1d? | 2018-04-23 | 2018-04-23 |  | 59d |
| 201 |  | Levantamiento de Requerimientos de Alertas de inconsistencias en el CPE | 1d? | 2018-04-23 | 2018-04-23 |  | 59d |
| 202 |  | Entregable: Documento de Requerimientos de Alertas de inconsistencias en el CPE | 1d? | 2018-04-23 | 2018-04-23 |  | 59d |
| 203 | 1.6.1.2 | **Ejecución** | 1d? | 2018-04-23 | 2018-04-23 |  | 59d |
| 204 | 1.6.1.2.1 | **Desarrollo** | 1d? | 2018-04-23 | 2018-04-23 |  | 59d |
| 205 |  | Desarrollar Alertas de inconsistencias en el CPE | 1d? | 2018-04-23 | 2018-04-23 |  | 59d |
| 206 |  | Entregable: Alertas de inconsistencias en el CPE-Desarrolado | 1d? | 2018-04-23 | 2018-04-23 |  | 59d |
| 207 | 1.6.1.2.2 | **Control de Calidad** | 1d? | 2018-04-23 | 2018-04-23 |  | 59d |
| 208 |  | CC Alertas de inconsistencias en el CPE | 1d? | 2018-04-23 | 2018-04-23 |  | 59d |
| 209 |  | Entregable: Alertas de inconsistencias en el CPE-QA | 1d? | 2018-04-23 | 2018-04-23 |  | 59d |
| 210 | 1.6.1.2.3 | **Implantación** | 1d? | 2018-04-23 | 2018-04-23 |  | 59d |

| ID | WBS | Task | Duration | Start | Finish | Total float |
| --- | --- | --- | --- | --- | --- | --- |
| 211 |  | Implementar Alertas de inconsistencias en el CPE | 1d? | 2018-04-23 | 2018-04-23 | 59d |
| 212 |  | Entregable: Alertas de inconsistencias en el CPE- Implementado | 1d? | 2018-04-23 | 2018-04-23 | 59d |
| 213 | 1.6.1.3 | **Cierre** | 1d? | 2018-04-23 | 2018-04-23 | 59d |
| 214 |  | Realizar el Acta de Aprobación de Alertas de inconsistencias en el CPE | 1d? | 2018-04-23 | 2018-04-23 | 59d |
| 215 |  | Entregable: Acta de Aprobación de Alertas de inconsistencias en el CPE | 1d? | 2018-04-23 | 2018-04-23 | 59d |
| 216 | 1.6.2 | **Restricción a la Autorización de CdP** | 1d? | 2018-04-23 | 2018-04-23 | 59d |
| 217 | 1.6.2.1 | **Planificación** | 1d? | 2018-04-23 | 2018-04-23 | 59d |
| 218 |  | Levantamiento de Requerimientos de Restricción a la Autorización de CdP | 1d? | 2018-04-23 | 2018-04-23 | 59d |
| 219 |  | Entregable: Documento de Requerimientos de Restricción a la Autorización de CdP | 1d? | 2018-04-23 | 2018-04-23 | 59d |
| 220 | 1.6.2.2 | **Ejecución** | 1d? | 2018-04-23 | 2018-04-23 | 59d |
| 221 | 1.6.2.2.1 | **Desarrollo** | 1d? | 2018-04-23 | 2018-04-23 | 59d |
| 222 |  | Desarrollar Restricción a la Autorización de CdP | 1d? | 2018-04-23 | 2018-04-23 | 59d |
| 223 |  | Entregable: Restricción a la Autorización de CdP-Desarrolado | 1d? | 2018-04-23 | 2018-04-23 | 59d |
| 224 | 1.6.2.2.2 | **Control de Calidad** | 1d? | 2018-04-23 | 2018-04-23 | 59d |
| 225 |  | CC Restricción a la Autorización de CdP | 1d? | 2018-04-23 | 2018-04-23 | 59d |
| 226 |  | Entregable: Restricción a la Autorización de CdP-QA | 1d? | 2018-04-23 | 2018-04-23 | 59d |
| 227 | 1.6.2.2.3 | **Implantación** | 1d? | 2018-04-23 | 2018-04-23 | 59d |
| 228 |  | Implementar Restricción a la Autorización de CdP | 1d? | 2018-04-23 | 2018-04-23 | 59d |
| 229 |  | Entregable: Restricción a la Autorización de CdP- Implementado | 1d? | 2018-04-23 | 2018-04-23 | 59d |
| 230 | 1.6.2.3 | **Cierre** | 1d? | 2018-04-23 | 2018-04-23 | 59d |
| 231 |  | Realizar el Acta de Aprobación de Restricción a la Autorización de CdP | 1d? | 2018-04-23 | 2018-04-23 | 59d |
| 232 |  | Entregable: Acta de Aprobación de Restricción a la Autorización de CdP | 1d? | 2018-04-23 | 2018-04-23 | 59d |
| 233 | 1.6.3 | **Limitación de CdP Autorizados** | 1d? | 2018-04-23 | 2018-04-23 | 59d |
| 234 | 1.6.3.1 | **Planificación** | 1d? | 2018-04-23 | 2018-04-23 | 59d |
| 235 |  | Levantamiento de Requerimientos de Limitación de CdP Autorizados | 1d? | 2018-04-23 | 2018-04-23 | 59d |
| 236 |  | Entregable: Documento de Requerimientos de Limitación de CdP Autorizados | 1d? | 2018-04-23 | 2018-04-23 | 59d |
| 237 | 1.6.3.2 | **Ejecución** | 1d? | 2018-04-23 | 2018-04-23 | 59d |
| 238 | 1.6.3.2.1 | **Desarrollo** | 1d? | 2018-04-23 | 2018-04-23 | 59d |
| 239 |  | Desarrollar Limitación de CdP Autorizados | 1d? | 2018-04-23 | 2018-04-23 | 59d |
| 240 |  | Entregable: Limitación de CdP Autorizados-Desarrolado | 1d? | 2018-04-23 | 2018-04-23 | 59d |
| 241 | 1.6.3.2.2 | **Control de Calidad** | 1d? | 2018-04-23 | 2018-04-23 | 59d |
| 242 |  | CC Limitación de CdP Autorizados | 1d? | 2018-04-23 | 2018-04-23 | 59d |
| 243 |  | Entregable: Limitación de CdP Autorizados-QA | 1d? | 2018-04-23 | 2018-04-23 | 59d |
| 244 | 1.6.3.2.3 | **Implantación** | 1d? | 2018-04-23 | 2018-04-23 | 59d |
| 245 |  | Implementar Limitación de CdP Autorizados | 1d? | 2018-04-23 | 2018-04-23 | 59d |
| 246 |  | Entregable: Limitación de CdP Autorizados- Implementado | 1d? | 2018-04-23 | 2018-04-23 | 59d |
| 247 | 1.6.3.3 | **Cierre** | 1d? | 2018-04-23 | 2018-04-23 | 59d |
| 248 |  | Realizar el Acta de Aprobación de Limitación de CdP Autorizados | 1d? | 2018-04-23 | 2018-04-23 | 59d |
| 249 |  | Entregable: Acta de Aprobación de Limitación de CdP Autorizados | 1d? | 2018-04-23 | 2018-04-23 | 59d |
| 250 | 1.6.4 | **Restricción a la Emisión de CdP (web services)** | 1d? | 2018-04-23 | 2018-04-23 | 59d |
| 251 | 1.6.4.1 | **Planificación** | 1d? | 2018-04-23 | 2018-04-23 | 59d |
| 252 |  | Levantamiento de Requerimientos de Restricción a la Emisión de CdP (web services) | 1d? | 2018-04-23 | 2018-04-23 | 59d |
| 253 |  | Entregable: Documento de Requerimientos de Restricción a la Emisión de CdP (web services) | 1d? | 2018-04-23 | 2018-04-23 | 59d |
| 254 | 1.6.4.2 | **Ejecución** | 1d? | 2018-04-23 | 2018-04-23 | 59d |
| 255 | 1.6.4.2.1 | **Desarrollo** | 1d? | 2018-04-23 | 2018-04-23 | 59d |
| 256 |  | Desarrollar Restricción a la Emisión de CdP (web services) | 1d? | 2018-04-23 | 2018-04-23 | 59d |
| 257 |  | Entregable: Restricción a la Emisión de CdP (web services) - Desarrollado | 1d? | 2018-04-23 | 2018-04-23 | 59d |
| 258 | 1.6.4.2.2 | **Control de Calidad** | 1d? | 2018-04-23 | 2018-04-23 | 59d |
| 259 |  | CC Restricción a la Emisión de CdP (web services) | 1d? | 2018-04-23 | 2018-04-23 | 59d |
| 260 |  | Entregable: Restricción a la Emisión de CdP (web services)-QA | 1d? | 2018-04-23 | 2018-04-23 | 59d |
| 261 | 1.6.4.2.3 | **Implantación** | 1d? | 2018-04-23 | 2018-04-23 | 59d |
| 262 |  | Implementar Restricción a la Emisión de CdP (web services) | 1d? | 2018-04-23 | 2018-04-23 | 59d |
| 263 |  | Entregable: Restricción a la Emisión de CdP (web services)- Implementado | 1d? | 2018-04-23 | 2018-04-23 | 59d |
| 264 | 1.6.4.3 | **Cierre** | 1d? | 2018-04-23 | 2018-04-23 | 59d |
| 265 |  | Realizar el Acta de Aprobación de Restricción a la Emisión de CdP (web services) | 1d? | 2018-04-23 | 2018-04-23 | 59d |
| 266 |  | Entregable: Acta de Aprobación de Restricción a la Emisión de CdP (web services) | 1d? | 2018-04-23 | 2018-04-23 | 59d |
| 267 | 1.6.5 | **Restricción a la Emisión de CPE** | 1d? | 2018-04-23 | 2018-04-23 | 59d |
| 268 | 1.6.5.1 | **Planificación** | 1d? | 2018-04-23 | 2018-04-23 | 59d |
| 269 |  | Levantamiento de Requerimientos de Restricción a la Emisión de CPE | 1d? | 2018-04-23 | 2018-04-23 | 59d |
| 270 |  | Entregable: Documento de Requerimientos de Restricción a la Emisión de CPE | 1d? | 2018-04-23 | 2018-04-23 | 59d |
| 271 | 1.6.5.2 | **Ejecución** | 1d? | 2018-04-23 | 2018-04-23 | 59d |
| 272 | 1.6.5.2.1 | **Desarrollo** | 1d? | 2018-04-23 | 2018-04-23 | 59d |
| 273 |  | Desarrollar Restricción a la Emisión de CPE | 1d? | 2018-04-23 | 2018-04-23 | 59d |
| 274 |  | Entregable: Restricción a la Emisión de CPE-Desarrolado | 1d? | 2018-04-23 | 2018-04-23 | 59d |
| 275 | 1.6.5.2.2 | **Control de Calidad** | 1d? | 2018-04-23 | 2018-04-23 | 59d |
| 276 |  | CC Restricción a la Emisión de CPE | 1d? | 2018-04-23 | 2018-04-23 | 59d |
| 277 |  | Entregable: Restricción a la Emisión de CPE-QA | 1d? | 2018-04-23 | 2018-04-23 | 59d |
| 278 | 1.6.5.2.3 | **Implantación** | 1d? | 2018-04-23 | 2018-04-23 | 59d |
| 279 |  | Implementar Restricción a la Emisión de CPE | 1d? | 2018-04-23 | 2018-04-23 | 59d |
| 280 |  | Entregable: Restricción a la Emisión de CPE- Implementado | 1d? | 2018-04-23 | 2018-04-23 | 59d |

| ID | WBS | Task | Duration | Start | Finish | Total float |
| --- | --- | --- | --- | --- | --- | --- |
| 281 | 1.6.5.3 | **Cierre** | 1d? | 2018-04-23 | 2018-04-23 | 59d |
| 282 |  | Realizar el Acta de Aprobación de Restricción a la Emisión de CPE | 1d? | 2018-04-23 | 2018-04-23 | 59d |
| 283 |  | Entregable: Acta de Aprobación de Restricción a la Emisión de CPE | 1d? | 2018-04-23 | 2018-04-23 | 59d |
| 284 | 1.6.6 | **Comprobante de contingencia al CPE** | 1d? | 2018-04-23 | 2018-04-23 | 59d |
| 285 | 1.6.6.1 | **Planificación** | 1d? | 2018-04-23 | 2018-04-23 | 59d |
| 286 |  | Levantamiento de Requerimientos de Comprobante de contingencia al CPE | 1d? | 2018-04-23 | 2018-04-23 | 59d |
| 287 |  | Entregable: Documento de Requerimientos de Comprobante de contingencia al CPE | 1d? | 2018-04-23 | 2018-04-23 | 59d |
| 288 | 1.6.6.2 | **Ejecución** | 1d? | 2018-04-23 | 2018-04-23 | 59d |
| 289 | 1.6.6.2.1 | **Desarrollo** | 1d? | 2018-04-23 | 2018-04-23 | 59d |
| 290 |  | Desarrollar Comprobante de contingencia al CPE | 1d? | 2018-04-23 | 2018-04-23 | 59d |
| 291 |  | Entregable: Comprobante de contingencia al CPE-Desarrolado | 1d? | 2018-04-23 | 2018-04-23 | 59d |
| 292 | 1.6.6.2.2 | **Control de Calidad** | 1d? | 2018-04-23 | 2018-04-23 | 59d |
| 293 |  | CC Comprobante de contingencia al CPE | 1d? | 2018-04-23 | 2018-04-23 | 59d |
| 294 |  | Entregable: Comprobante de contingencia al CPE-QA | 1d? | 2018-04-23 | 2018-04-23 | 59d |
| 295 | 1.6.6.2.3 | **Implantación** | 1d? | 2018-04-23 | 2018-04-23 | 59d |
| 296 |  | Implementar Comprobante de contingencia al CPE | 1d? | 2018-04-23 | 2018-04-23 | 59d |
| 297 |  | Entregable: Comprobante de contingencia al CPE- Implementado | 1d? | 2018-04-23 | 2018-04-23 | 59d |
| 298 | 1.6.6.3 | **Cierre** | 1d? | 2018-04-23 | 2018-04-23 | 59d |
| 299 |  | Realizar el Acta de Aprobación de Comprobante de contingencia al CPE | 1d? | 2018-04-23 | 2018-04-23 | 59d |
| 300 |  | Entregable: Acta de Aprobación de Comprobante de contingencia al CPE | 1d? | 2018-04-23 | 2018-04-23 | 59d |
| 301 | 1.7 | **Control del registro de compras y ventas electrónico (RCVE)** | 1d? | 2018-04-23 | 2018-04-23 | 59d |
| 302 | 1.7.1 | **Campaña de omisos al RVCE** | 1d? | 2018-04-23 | 2018-04-23 | 59d |
| 303 | 1.7.1.1 | **Planificación** | 1d? | 2018-04-23 | 2018-04-23 | 59d |
| 304 |  | Levantamiento de Requerimientos de Campaña de Actualización celular | 1d? | 2018-04-23 | 2018-04-23 | 59d |
| 305 |  | Entregable: Documento de Requerimientos de Campaña de Actualización celular | 1d? | 2018-04-23 | 2018-04-23 | 59d |
| 306 | 1.7.1.2 | **Ejecución** | 1d? | 2018-04-23 | 2018-04-23 | 59d |
| 307 | 1.7.1.2.1 | **Desarrollo** | 1d? | 2018-04-23 | 2018-04-23 | 59d |
| 308 |  | Desarrollar Campaña de Actualización celular | 1d? | 2018-04-23 | 2018-04-23 | 59d |
| 309 |  | Entregable: Campaña de Actualización celular-Desarrolado | 1d? | 2018-04-23 | 2018-04-23 | 59d |
| 310 | 1.7.1.2.2 | **Control de Calidad** | 1d? | 2018-04-23 | 2018-04-23 | 59d |
| 311 |  | CC Campaña de Actualización celular | 1d? | 2018-04-23 | 2018-04-23 | 59d |
| 312 |  | Entregable: Campaña de Actualización celular-QA | 1d? | 2018-04-23 | 2018-04-23 | 59d |
| 313 | 1.7.1.2.3 | **Implantación** | 1d? | 2018-04-23 | 2018-04-23 | 59d |
| 314 |  | Implementar Campaña de Actualización celular | 1d? | 2018-04-23 | 2018-04-23 | 59d |
| 315 |  | Entregable: Campaña de Actualización celular- Implementado | 1d? | 2018-04-23 | 2018-04-23 | 59d |
| 316 | 1.7.1.3 | **Cierre** | 1d? | 2018-04-23 | 2018-04-23 | 59d |
| 317 |  | Realizar el Acta de Aprobación de Campaña de Actualización celular | 1d? | 2018-04-23 | 2018-04-23 | 59d |
| 318 |  | Entregable: Acta de Aprobación de Campaña de Actualización celular | 1d? | 2018-04-23 | 2018-04-23 | 59d |
| 319 | 1.7.2 | **Padrón de omisos a la presentación del RCVE** | 1d? | 2018-04-23 | 2018-04-23 | 59d |
| 320 | 1.7.2.1 | **Planificación** | 1d? | 2018-04-23 | 2018-04-23 | 59d |
| 321 |  | Levantamiento de Requerimientos de Padrón de omisos a la presentación del RCVE | 1d? | 2018-04-23 | 2018-04-23 | 59d |
| 322 |  | Entregable: Documento de Requerimientos de Padrón de omisos a la presentación del RCVE | 1d? | 2018-04-23 | 2018-04-23 | 59d |
| 323 | 1.7.2.2 | **Ejecución** | 1d? | 2018-04-23 | 2018-04-23 | 59d |
| 324 | 1.7.2.2.1 | **Desarrollo** | 1d? | 2018-04-23 | 2018-04-23 | 59d |
| 325 |  | Desarrollar Padrón de omisos a la presentación del RCVE | 1d? | 2018-04-23 | 2018-04-23 | 59d |
| 326 |  | Entregable: Padrón de omisos a la presentación del RCVE-Desarrolado | 1d? | 2018-04-23 | 2018-04-23 | 59d |
| 327 | 1.7.2.2.2 | **Control de Calidad** | 1d? | 2018-04-23 | 2018-04-23 | 59d |
| 328 |  | CC Padrón de omisos a la presentación del RCVE | 1d? | 2018-04-23 | 2018-04-23 | 59d |
| 329 |  | Entregable: Padrón de omisos a la presentación del RCVE-QA | 1d? | 2018-04-23 | 2018-04-23 | 59d |
| 330 | 1.7.2.2.3 | **Implantación** | 1d? | 2018-04-23 | 2018-04-23 | 59d |
| 331 |  | Implementar Padrón de omisos a la presentación del RCVE | 1d? | 2018-04-23 | 2018-04-23 | 59d |
| 332 |  | Entregable: Padrón de omisos a la presentación del RCVE- Implementado | 1d? | 2018-04-23 | 2018-04-23 | 59d |
| 333 | 1.7.2.3 | **Cierre** | 1d? | 2018-04-23 | 2018-04-23 | 59d |
| 334 |  | Realizar el Acta de Aprobación de Padrón de omisos a la presentación del RCVE | 1d? | 2018-04-23 | 2018-04-23 | 59d |
| 335 |  | Entregable: Acta de Aprobación de Padrón de omisos a la presentación del RCVE | 1d? | 2018-04-23 | 2018-04-23 | 59d |
| 336 | 1.7.3 | **Control de omisos con padrón de RCVE** | 1d? | 2018-04-23 | 2018-04-23 | 59d |
| 337 | 1.7.3.1 | **Planificación** | 1d? | 2018-04-23 | 2018-04-23 | 59d |
| 338 |  | Levantamiento de Requerimientos de Control de omisos con padrón de RCVE | 1d? | 2018-04-23 | 2018-04-23 | 59d |
| 339 |  | Entregable: Documento de Requerimientos de Control de omisos con padrón de RCVE | 1d? | 2018-04-23 | 2018-04-23 | 59d |
| 340 | 1.7.3.2 | **Ejecución** | 1d? | 2018-04-23 | 2018-04-23 | 59d |
| 341 | 1.7.3.2.1 | **Desarrollo** | 1d? | 2018-04-23 | 2018-04-23 | 59d |
| 342 |  | Desarrollar Control de omisos con padrón de RCVE | 1d? | 2018-04-23 | 2018-04-23 | 59d |
| 343 |  | Entregable: Control de omisos con padrón de RCVE-Desarrolado | 1d? | 2018-04-23 | 2018-04-23 | 59d |
| 344 | 1.7.3.2.2 | **Control de Calidad** | 1d? | 2018-04-23 | 2018-04-23 | 59d |
| 345 |  | CC Control de omisos con padrón de RCVE | 1d? | 2018-04-23 | 2018-04-23 | 59d |
| 346 |  | Entregable: Control de omisos con padrón de RCVE-QA | 1d? | 2018-04-23 | 2018-04-23 | 59d |
| 347 | 1.7.3.2.3 | **Implantación** | 1d? | 2018-04-23 | 2018-04-23 | 59d |
| 348 | 1.7.3.2.3.1 | **Implementar Control de omisos con padrón de RCVE** | 1d? | 2018-04-23 | 2018-04-23 | 59d |
| 349 |  | Entregable: Control de omisos con padrón de RCVE- Implementado | 1d? | 2018-04-23 | 2018-04-23 | 59d |
| 350 | 1.7.3.3 | **Cierre** | 1d? | 2018-04-23 | 2018-04-23 | 59d |

| ID | WBS | Task | Duration | Start | Finish | Total float |
| --- | --- | --- | --- | --- | --- | --- |
| 351 |  | Realizar el Acta de Aprobación de Control de omisos con padrón de RCVE | 1d? | 2018-04-23 | 2018-04-23 | 59d |
| 352 | 1.7.3.3.2 | **Entregable: Acta de Aprobación de Control de omisos con padrón de RCVE** | 1d? | 2018-04-23 | 2018-04-23 | 59d |
| 353 |  | Reemplazo de PDT por Declara Fácil con propuesta de DJ | 1d? | 2018-04-23 | 2018-04-23 | 59d |
| 354 |  | Reporte de consistencia del crédito presentado en el RCE con el Declara Fácil IGV Renta Mensual | 1d? | 2018-04-23 | 2018-04-23 | 59d |
| 355 |  | Determinación de omisos a la DJ del IGV Renta Mensual | 1d? | 2018-04-23 | 2018-04-23 | 59d |
| 356 |  | Actualización en línea de las presentaciones de DJ - MEPECO | 1d? | 2018-04-23 | 2018-04-23 | 59d |
| 357 |  | Determinación de omisos a la DDJJ IGV Renta Mensual - Comprobante Único | 1d? | 2018-04-23 | 2018-04-23 | 59d |
| 358 | 1.7.4 | **Control de Declaración IGV - Renta Mensual** | 1d? | 2018-04-23 | 2018-04-23 | 59d |
| 359 | 1.7.4.1 | **Reemplazo de PDT por Declara Fácil con propuesta de DJ** | 1d? | 2018-04-23 | 2018-04-23 | 59d |
| 360 | 1.7.4.1.1 | **Planificación** | 1d? | 2018-04-23 | 2018-04-23 | 59d |
| 361 |  | Levantamiento de Requerimientos de Reemplazo de PDT por Declara Fácil con propuesta de DJ | 1d? | 2018-04-23 | 2018-04-23 | 59d |
| 362 |  | Entregable: Documento de Requerimientos de Reemplazo de PDT por Declara Fácil con propuesta de DJ | 1d? | 2018-04-23 | 2018-04-23 | 59d |
| 363 | 1.7.4.1.2 | **Ejecución** | 1d? | 2018-04-23 | 2018-04-23 | 59d |
| 364 | 1.7.4.1.2.1 | **Desarrollo** | 1d? | 2018-04-23 | 2018-04-23 | 59d |
| 365 |  | Desarrollar Reemplazo de PDT por Declara Fácil con propuesta de DJ | 1d? | 2018-04-23 | 2018-04-23 | 59d |
| 366 |  | Entregable: Reemplazo de PDT por Declara Fácil con propuesta de DJ-Desarrolado | 1d? | 2018-04-23 | 2018-04-23 | 59d |
| 367 | 1.7.4.1.2.2 | **Control de Calidad** | 1d? | 2018-04-23 | 2018-04-23 | 59d |
| 368 |  | CC Reemplazo de PDT por Declara Fácil con propuesta de DJ | 1d? | 2018-04-23 | 2018-04-23 | 59d |
| 369 |  | Entregable: Reemplazo de PDT por Declara Fácil con propuesta de DJ-QA | 1d? | 2018-04-23 | 2018-04-23 | 59d |
| 370 | 1.7.4.1.2.3 | **Implantación** | 1d? | 2018-04-23 | 2018-04-23 | 59d |
| 371 |  | Implementar Reemplazo de PDT por Declara Fácil con propuesta de DJ | 1d? | 2018-04-23 | 2018-04-23 | 59d |
| 372 |  | Entregable: Reemplazo de PDT por Declara Fácil con propuesta de DJ- Implementado | 1d? | 2018-04-23 | 2018-04-23 | 59d |
| 373 | 1.7.4.1.3 | **Cierre** | 1d? | 2018-04-23 | 2018-04-23 | 59d |
| 374 |  | Realizar el Acta de Aprobación de Reemplazo de PDT por Declara Fácil con propuesta de DJ | 1d? | 2018-04-23 | 2018-04-23 | 59d |
| 375 |  | Entregable: Acta de Aprobación de Reemplazo de PDT por Declara Fácil con propuesta de DJ | 1d? | 2018-04-23 | 2018-04-23 | 59d |
| 376 | 1.7.4.2 | **Reporte de consistencia del crédito presentado en el RCE con el Declara Fácil IGV Renta Mensual** | 1d? | 2018-04-23 | 2018-04-23 | 59d |
| 377 | 1.7.4.2.1 | **Planificación** | 1d? | 2018-04-23 | 2018-04-23 | 59d |
| 378 |  | Levantamiento de Requerimientos de Reporte de consistencia del crédito presentado en el RCE con el Declara Fácil IGV Renta Mensual | 1d? | 2018-04-23 | 2018-04-23 | 59d |
| 379 |  | Entregable: Documento de Requerimientos de Reporte de consistencia del crédito presentado en el RCE con el Declara Fácil IGV Renta Mensual | 1d? | 2018-04-23 | 2018-04-23 | 59d |
| 380 | 1.7.4.2.2 | **Ejecución** | 1d? | 2018-04-23 | 2018-04-23 | 59d |
| 381 | 1.7.4.2.2.1 | **Desarrollo** | 1d? | 2018-04-23 | 2018-04-23 | 59d |
| 382 |  | Desarrollar Reporte de consistencia del crédito presentado en el RCE con el Declara Fácil IGV Renta Mensual | 1d? | 2018-04-23 | 2018-04-23 | 59d |
| 383 |  | Entregable: Reporte de consistencia del crédito presentado en el RCE con el Declara Fácil IGV Renta Mensual-Desarrolado | 1d? | 2018-04-23 | 2018-04-23 | 59d |
| 384 | 1.7.4.2.2.2 | **Control de Calidad** | 1d? | 2018-04-23 | 2018-04-23 | 59d |
| 385 |  | CC Reporte de consistencia del crédito presentado en el RCE con el Declara Fácil IGV Renta Mensual | 1d? | 2018-04-23 | 2018-04-23 | 59d |
| 386 |  | Entregable: Reporte de consistencia del crédito presentado en el RCE con el Declara Fácil IGV Renta Mensual-QA | 1d? | 2018-04-23 | 2018-04-23 | 59d |
| 387 | 1.7.4.2.2.3 | **Implantación** | 1d? | 2018-04-23 | 2018-04-23 | 59d |
| 388 |  | Implementar Reporte de consistencia del crédito presentado en el RCE con el Declara Fácil IGV Renta Mensual | 1d? | 2018-04-23 | 2018-04-23 | 59d |
| 389 |  | Entregable: Reporte de consistencia del crédito presentado en el RCE con el Declara Fácil IGV Renta Mensual- Implementado | 1d? | 2018-04-23 | 2018-04-23 | 59d |
| 390 | 1.7.4.2.3 | **Cierre** | 1d? | 2018-04-23 | 2018-04-23 | 59d |
| 391 |  | Realizar el Acta de Aprobación de Reporte de consistencia del crédito presentado en el RCE con el Declara Fácil IGV Renta Mensual | 1d? | 2018-04-23 | 2018-04-23 | 59d |
| 392 |  | Entregable: Acta de Aprobación de Reporte de consistencia del crédito presentado en el RCE con el Declara Fácil IGV Renta Mensual | 1d? | 2018-04-23 | 2018-04-23 | 59d |
| 393 | 1.7.4.3 | **Determinación de omisos a la DJ del IGV Renta Mensual** | 1d? | 2018-04-23 | 2018-04-23 | 59d |
| 394 | 1.7.4.3.1 | **Planificación** | 1d? | 2018-04-23 | 2018-04-23 | 59d |
| 395 |  | Levantamiento de Requerimientos de Determinación de omisos a la DJ del IGV Renta Mensual | 1d? | 2018-04-23 | 2018-04-23 | 59d |
| 396 |  | Entregable: Documento de Requerimientos de Determinación de omisos a la DJ del IGV Renta Mensual | 1d? | 2018-04-23 | 2018-04-23 | 59d |
| 397 | 1.7.4.3.2 | **Ejecución** | 1d? | 2018-04-23 | 2018-04-23 | 59d |
| 398 | 1.7.4.3.2.1 | **Desarrollo** | 1d? | 2018-04-23 | 2018-04-23 | 59d |
| 399 |  | Desarrollar Determinación de omisos a la DJ del IGV Renta Mensual | 1d? | 2018-04-23 | 2018-04-23 | 59d |
| 400 |  | Entregable: Determinación de omisos a la DJ del IGV Renta Mensual-Desarrolado | 1d? | 2018-04-23 | 2018-04-23 | 59d |
| 401 | 1.7.4.3.2.2 | **Control de Calidad** | 1d? | 2018-04-23 | 2018-04-23 | 59d |
| 402 |  | CC Determinación de omisos a la DJ del IGV Renta Mensual | 1d? | 2018-04-23 | 2018-04-23 | 59d |
| 403 |  | Entregable: Determinación de omisos a la DJ del IGV Renta Mensual-QA | 1d? | 2018-04-23 | 2018-04-23 | 59d |
| 404 | 1.7.4.3.2.3 | **Implantación** | 1d? | 2018-04-23 | 2018-04-23 | 59d |
| 405 |  | Implementar Determinación de omisos a la DJ del IGV Renta Mensual | 1d? | 2018-04-23 | 2018-04-23 | 59d |
| 406 |  | Entregable: Determinación de omisos a la DJ del IGV Renta Mensual- Implementado | 1d? | 2018-04-23 | 2018-04-23 | 59d |
| 407 | 1.7.4.3.3 | **Cierre** | 1d? | 2018-04-23 | 2018-04-23 | 59d |
| 408 |  | Realizar el Acta de Aprobación de Determinación de omisos a la DJ del IGV Renta Mensual | 1d? | 2018-04-23 | 2018-04-23 | 59d |
| 409 |  | Entregable: Acta de Aprobación de Determinación de omisos a la DJ del IGV Renta Mensual | 1d? | 2018-04-23 | 2018-04-23 | 59d |
| 410 | 1.7.4.4 | **Actualización en línea de las presentaciones de DJ - MEPECO** | 1d? | 2018-04-23 | 2018-04-23 | 59d |
| 411 | 1.7.4.4.1 | **Planificación** | 1d? | 2018-04-23 | 2018-04-23 | 59d |
| 412 |  | Levantamiento de Requerimientos de Actualización en línea de las presentaciones de DJ - MEPECO | 1d? | 2018-04-23 | 2018-04-23 | 59d |
| 413 |  | Entregable: Documento de Requerimientos de Actualización en línea de las presentaciones de DJ - MEPECO | 1d? | 2018-04-23 | 2018-04-23 | 59d |
| 414 | 1.7.4.4.2 | **Ejecución** | 1d? | 2018-04-23 | 2018-04-23 | 59d |
| 415 | 1.7.4.4.2.1 | **Desarrollo** | 1d? | 2018-04-23 | 2018-04-23 | 59d |
| 416 |  | Desarrollar Actualización en línea de las presentaciones de DJ - MEPECO | 1d? | 2018-04-23 | 2018-04-23 | 59d |
| 417 |  | Entregable: Actualización en línea de las presentaciones de DJ - MEPECO-Desarrolado | 1d? | 2018-04-23 | 2018-04-23 | 59d |
| 418 | 1.7.4.4.2.2 | **Control de Calidad** | 1d? | 2018-04-23 | 2018-04-23 | 59d |
| 419 |  | CC Actualización en línea de las presentaciones de DJ - MEPECO | 1d? | 2018-04-23 | 2018-04-23 | 59d |
| 420 |  | Entregable: Actualización en línea de las presentaciones de DJ - MEPECO-QA | 1d? | 2018-04-23 | 2018-04-23 | 59d |

| ID | WBS | Task | Duration | Start | Finish | Total float |
| --- | --- | --- | --- | --- | --- | --- |
| 421 | 1.7.4.4.2.3 | **Implantación** | 1d? | 2018-04-23 | 2018-04-23 | 59d |
| 422 |  | Implementar Actualización en línea de las presentaciones de DJ - MEPECO | 1d? | 2018-04-23 | 2018-04-23 | 59d |
| 423 |  | Entregable: Actualización en línea de las presentaciones de DJ - MEPECO- Implementado | 1d? | 2018-04-23 | 2018-04-23 | 59d |
| 424 | 1.7.4.4.3 | **Cierre** | 1d? | 2018-04-23 | 2018-04-23 | 59d |
| 425 |  | Realizar el Acta de Aprobación de Actualización en línea de las presentaciones de DJ - MEPECO | 1d? | 2018-04-23 | 2018-04-23 | 59d |
| 426 |  | Entregable: Acta de Aprobación de Actualización en línea de las presentaciones de DJ - MEPECO | 1d? | 2018-04-23 | 2018-04-23 | 59d |
| 427 | 1.7.4.5 | **Determinación de omisos a la DDJJ IGV Renta Mensual - Comprobante Único** | 1d? | 2018-04-23 | 2018-04-23 | 59d |
| 428 | 1.7.4.5.1 | **Planificación** | 1d? | 2018-04-23 | 2018-04-23 | 59d |
| 429 |  | Levantamiento de Requerimientos de Determinación de omisos a la DDJJ IGV Renta Mensual - Comprobante Único | 1d? | 2018-04-23 | 2018-04-23 | 59d |
| 430 |  | Entregable: Determinación de omisos a la DDJJ IGV Renta Mensual - Comprobante Único | 1d? | 2018-04-23 | 2018-04-23 | 59d |
| 431 | 1.7.4.5.2 | **Ejecución** | 1d? | 2018-04-23 | 2018-04-23 | 59d |
| 432 | 1.7.4.5.2.1 | **Desarrollo** | 1d? | 2018-04-23 | 2018-04-23 | 59d |
| 433 |  | Desarrollar Determinación de omisos a la DDJJ IGV Renta Mensual - Comprobante Único | 1d? | 2018-04-23 | 2018-04-23 | 59d |
| 434 |  | Entregable: Determinación de omisos a la DDJJ IGV Renta Mensual - Comprobante Único-Desarrolado | 1d? | 2018-04-23 | 2018-04-23 | 59d |
| 435 | 1.7.4.5.2.2 | **Control de Calidad** | 1d? | 2018-04-23 | 2018-04-23 | 59d |
| 436 |  | CC Determinación de omisos a la DDJJ IGV Renta Mensual - Comprobante Único | 1d? | 2018-04-23 | 2018-04-23 | 59d |
| 437 |  | Entregable: Determinación de omisos a la DDJJ IGV Renta Mensual - Comprobante Único-QA | 1d? | 2018-04-23 | 2018-04-23 | 59d |
| 438 | 1.7.4.5.2.3 | **Implantación** | 1d? | 2018-04-23 | 2018-04-23 | 59d |
| 439 |  | Implementar Determinación de omisos a la DDJJ IGV Renta Mensual - Comprobante Único | 1d? | 2018-04-23 | 2018-04-23 | 59d |
| 440 |  | Entregable: Determinación de omisos a la DDJJ IGV Renta Mensual - Comprobante Único- Implementado | 1d? | 2018-04-23 | 2018-04-23 | 59d |
| 441 | 1.7.4.5.3 | **Cierre** | 1d? | 2018-04-23 | 2018-04-23 | 59d |
| 442 |  | Realizar el Acta de Aprobación de Determinación de omisos a la DDJJ IGV Renta Mensual - Comprobante Único | 1d? | 2018-04-23 | 2018-04-23 | 59d |
| 443 |  | Entregable: Acta de Aprobación de Determinación de omisos a la DDJJ IGV Renta Mensual - Comprobante Único | 1d? | 2018-04-23 | 2018-04-23 | 59d |
| 444 | 1.7.4.6 | **Fiscalización: Gestión Masiva de Inconsistencias** | 1d? | 2018-04-23 | 2018-04-23 | 59d |
| 445 | 1.7.4.6.1 | **Programa de Gestión Masiva de Inconsistencias** | 1d? | 2018-04-23 | 2018-04-23 | 59d |
| 446 | 1.7.4.6.1.1 | **Planificación** | 1d? | 2018-04-23 | 2018-04-23 | 59d |
| 447 |  | Levantamiento de Requerimientos de Programa de Gestión Masiva de Inconsistencias | 1d? | 2018-04-23 | 2018-04-23 | 59d |
| 448 |  | Entregable: Documento de Requerimientos de Programa de Gestión Masiva de Inconsistencias | 1d? | 2018-04-23 | 2018-04-23 | 59d |
| 449 | 1.7.4.6.1.2 | **Ejecución** | 1d? | 2018-04-23 | 2018-04-23 | 59d |
| 450 | 1.7.4.6.1.2.1 | **Desarrollo** | 1d? | 2018-04-23 | 2018-04-23 | 59d |
| 451 |  | Desarrollar Programa de Gestión Masiva de Inconsistencias | 1d? | 2018-04-23 | 2018-04-23 | 59d |
| 452 |  | Entregable: Programa de Gestión Masiva de Inconsistencias-Desarrolado | 1d? | 2018-04-23 | 2018-04-23 | 59d |
| 453 | 1.7.4.6.1.2.2 | **Control de Calidad** | 1d? | 2018-04-23 | 2018-04-23 | 59d |
| 454 |  | CC Programa de Gestión Masiva de Inconsistencias | 1d? | 2018-04-23 | 2018-04-23 | 59d |
| 455 |  | Entregable: Programa de Gestión Masiva de Inconsistencias-QA | 1d? | 2018-04-23 | 2018-04-23 | 59d |
| 456 | 1.7.4.6.1.2.3 | **Implantación** | 1d? | 2018-04-23 | 2018-04-23 | 59d |
| 457 |  | Implementar Programa de Gestión Masiva de Inconsistencias | 1d? | 2018-04-23 | 2018-04-23 | 59d |
| 458 |  | Entregable: Programa de Gestión Masiva de Inconsistencias- Implementado | 1d? | 2018-04-23 | 2018-04-23 | 59d |
| 459 | 1.7.4.6.1.3 | **Cierre** | 1d? | 2018-04-23 | 2018-04-23 | 59d |
| 460 |  | Realizar el Acta de Aprobación de Programa de Gestión Masiva de Inconsistencias | 1d? | 2018-04-23 | 2018-04-23 | 59d |
| 461 |  | Entregable: Acta de Aprobación de Programa de Gestión Masiva de Inconsistencias | 1d? | 2018-04-23 | 2018-04-23 | 59d |
| 462 | 1.7.4.6.2 | **Nuevo CCV que integra el Gema WEB** | 1d? | 2018-04-23 | 2018-04-23 | 59d |
| 463 | 1.7.4.6.2.1 | **Planificación** | 1d? | 2018-04-23 | 2018-04-23 | 59d |
| 464 |  | Levantamiento de Requerimientos de Nuevo CCV que integra el Gema WEB | 1d? | 2018-04-23 | 2018-04-23 | 59d |
| 465 |  | Entregable: Documento de Requerimientos de Nuevo CCV que integra el Gema WEB | 1d? | 2018-04-23 | 2018-04-23 | 59d |
| 466 | 1.7.4.6.2.2 | **Ejecución** | 1d? | 2018-04-23 | 2018-04-23 | 59d |
| 467 | 1.7.4.6.2.2.1 | **Desarrollo** | 1d? | 2018-04-23 | 2018-04-23 | 59d |
| 468 |  | Desarrollar Nuevo CCV que integra el Gema WEB | 1d? | 2018-04-23 | 2018-04-23 | 59d |
| 469 |  | Entregable: Nuevo CCV que integra el Gema WEB-Desarrolado | 1d? | 2018-04-23 | 2018-04-23 | 59d |
| 470 | 1.7.4.6.2.2.2 | **Control de Calidad** | 1d? | 2018-04-23 | 2018-04-23 | 59d |
| 471 |  | CC Nuevo CCV que integra el Gema WEB | 1d? | 2018-04-23 | 2018-04-23 | 59d |
| 472 |  | Entregable: Nuevo CCV que integra el Gema WEB-QA | 1d? | 2018-04-23 | 2018-04-23 | 59d |
| 473 | 1.7.4.6.2.2.3 | **Implantación** | 1d? | 2018-04-23 | 2018-04-23 | 59d |
| 474 |  | Implementar Nuevo CCV que integra el Gema WEB | 1d? | 2018-04-23 | 2018-04-23 | 59d |
| 475 |  | Entregable: Nuevo CCV que integra el Gema WEB- Implementado | 1d? | 2018-04-23 | 2018-04-23 | 59d |
| 476 | 1.7.4.6.2.3 | **Cierre** | 1d? | 2018-04-23 | 2018-04-23 | 59d |
| 477 |  | Realizar el Acta de Aprobación de Nuevo CCV que integra el Gema WEB | 1d? | 2018-04-23 | 2018-04-23 | 59d |
| 478 |  | Entregable: Acta de Aprobación de Nuevo CCV que integra el Gema WEB | 1d? | 2018-04-23 | 2018-04-23 | 59d |
| 479 | 1.7.4.6.3 | **Utilización del CRM como soporte a las campañas de gestión inductiva** | 1d? | 2018-04-23 | 2018-04-23 | 59d |
| 480 | 1.7.4.6.3.1 | **Planificación** | 1d? | 2018-04-23 | 2018-04-23 | 59d |
| 481 |  | Levantamiento de Requerimientos de Utilización del CRM como soporte a las campañas de gestión inductiva | 1d? | 2018-04-23 | 2018-04-23 | 59d |
| 482 |  | Entregable: Documento de Requerimientos de Utilización del CRM como soporte a las campañas de gestión inductiva | 1d? | 2018-04-23 | 2018-04-23 | 59d |
| 483 | 1.7.4.6.3.2 | **Ejecución** | 1d? | 2018-04-23 | 2018-04-23 | 59d |
| 484 | 1.7.4.6.3.2.1 | **Desarrollo** | 1d? | 2018-04-23 | 2018-04-23 | 59d |
| 485 |  | Desarrollar Utilización del CRM como soporte a las campañas de gestión inductiva | 1d? | 2018-04-23 | 2018-04-23 | 59d |
| 486 |  | Entregable: Utilización del CRM como soporte a las campañas de gestión inductiva-Desarrolado | 1d? | 2018-04-23 | 2018-04-23 | 59d |
| 487 | 1.7.4.6.3.2.2 | **Control de Calidad** | 1d? | 2018-04-23 | 2018-04-23 | 59d |
| 488 |  | Verificar Utilización del CRM como soporte a las campañas de gestión inductiva | 1d? | 2018-04-23 | 2018-04-23 | 59d |
| 489 |  | Entregable: Utilización del CRM como soporte a las campañas de gestión inductiva-QA | 1d? | 2018-04-23 | 2018-04-23 | 59d |
| 490 | 1.7.4.6.3.2.3 | **Implantación** | 1d? | 2018-04-23 | 2018-04-23 | 59d |

| ID | WBS | Task | Duration | Start | Finish | Total float |
| --- | --- | --- | --- | --- | --- | --- |
| 491 |  | Implementar Utilización del CRM como soporte a las campañas de gestión inductiva | 1d? | 2018-04-23 | 2018-04-23 | 59d |
| 492 |  | Entregable: Utilización del CRM como soporte a las campañas de gestión inductiva- Implementado | 1d? | 2018-04-23 | 2018-04-23 | 59d |
| 493 | 1.7.4.6.3.3 | **Cierre** | 1d? | 2018-04-23 | 2018-04-23 | 59d |
| 494 |  | Realizar el Acta de Aprobación de Utilización del CRM como soporte a las campañas de gestión inductiva | 1d? | 2018-04-23 | 2018-04-23 | 59d |
| 495 |  | Entregable: Acta de Aprobación de Utilización del CRM como soporte a las campañas de gestión inductiva | 1d? | 2018-04-23 | 2018-04-23 | 59d |
| 496 | 1.7.4.6.4 | **SINE para las carta inductivas y esquelas** | 1d? | 2018-04-23 | 2018-04-23 | 59d |
| 497 | 1.7.4.6.4.1 | **Planificación** | 1d? | 2018-04-23 | 2018-04-23 | 59d |
| 498 |  | Levantamiento de Requerimientos de SINE para las carta inductivas y esquelas | 1d? | 2018-04-23 | 2018-04-23 | 59d |
| 499 |  | Entregable: Documento de Requerimientos de SINE para las carta inductivas y esquelas | 1d? | 2018-04-23 | 2018-04-23 | 59d |
| 500 | 1.7.4.6.4.2 | **Ejecución** | 1d? | 2018-04-23 | 2018-04-23 | 59d |
| 501 | 1.7.4.6.4.2.1 | **Desarrollo** | 1d? | 2018-04-23 | 2018-04-23 | 59d |
| 502 |  | Desarrollar SINE para las carta inductivas y esquelas | 1d? | 2018-04-23 | 2018-04-23 | 59d |
| 503 |  | Entregable: SINE para las carta inductivas y esquelas-Desarrolado | 1d? | 2018-04-23 | 2018-04-23 | 59d |
| 504 | 1.7.4.6.4.2.2 | **Control de Calidad** | 1d? | 2018-04-23 | 2018-04-23 | 59d |
| 505 |  | Verificar SINE para las carta inductivas y esquelas | 1d? | 2018-04-23 | 2018-04-23 | 59d |
| 506 |  | Entregable: SINE para las carta inductivas y esquelas-QA | 1d? | 2018-04-23 | 2018-04-23 | 59d |
| 507 | 1.7.4.6.4.2.3 | **Implantación** | 1d? | 2018-04-23 | 2018-04-23 | 59d |
| 508 |  | Implementar SINE para las carta inductivas y esquelas | 1d? | 2018-04-23 | 2018-04-23 | 59d |
| 509 |  | Entregable: SINE para las carta inductivas y esquelas- Implementado | 1d? | 2018-04-23 | 2018-04-23 | 59d |
| 510 | 1.7.4.6.4.3 | **Cierre** | 1d? | 2018-04-23 | 2018-04-23 | 59d |
| 511 |  | Realizar el Acta de Aprobación de SINE para las carta inductivas y esquelas | 1d? | 2018-04-23 | 2018-04-23 | 59d |
| 512 |  | Entregable: Acta de Aprobación de SINE para las carta inductivas y esquelas | 1d? | 2018-04-23 | 2018-04-23 | 59d |
| 513 | 1.7.4.6.5 | **SIEV para la gestión inductiva** | 1d? | 2018-04-23 | 2018-04-23 | 59d |
| 514 | 1.7.4.6.5.1 | **Planificación** | 1d? | 2018-04-23 | 2018-04-23 | 59d |
| 515 |  | Levantamiento de Requerimientos de SIEV para la gestión inductiva | 1d? | 2018-04-23 | 2018-04-23 | 59d |
| 516 |  | Entregable: Documento de Requerimientos de SIEV para la gestión inductiva | 1d? | 2018-04-23 | 2018-04-23 | 59d |
| 517 | 1.7.4.6.5.2 | **Ejecución** | 1d? | 2018-04-23 | 2018-04-23 | 59d |
| 518 | 1.7.4.6.5.2.1 | **Desarrollo** | 1d? | 2018-04-23 | 2018-04-23 | 59d |
| 519 |  | Desarrollar SIEV para la gestión inductiva | 1d? | 2018-04-23 | 2018-04-23 | 59d |
| 520 |  | Entregable: SIEV para la gestión inductiva-Desarrolado | 1d? | 2018-04-23 | 2018-04-23 | 59d |
| 521 | 1.7.4.6.5.2.2 | **Control de Calidad** | 1d? | 2018-04-23 | 2018-04-23 | 59d |
| 522 |  | Verificar SIEV para la gestión inductiva | 1d? | 2018-04-23 | 2018-04-23 | 59d |
| 523 |  | Entregable: SIEV para la gestión inductiva-QA | 1d? | 2018-04-23 | 2018-04-23 | 59d |
| 524 | 1.7.4.6.5.2.3 | **Implantación** | 1d? | 2018-04-23 | 2018-04-23 | 59d |
| 525 |  | Implementar SIEV para la gestión inductiva | 1d? | 2018-04-23 | 2018-04-23 | 59d |
| 526 |  | Entregable: SIEV para la gestión inductiva- Implementado | 1d? | 2018-04-23 | 2018-04-23 | 59d |
| 527 | 1.7.4.6.5.3 | **Cierre** | 1d? | 2018-04-23 | 2018-04-23 | 59d |
| 528 |  | Realizar el Acta de Aprobación de SIEV para la gestión inductiva | 1d? | 2018-04-23 | 2018-04-23 | 59d |
| 529 |  | Entregable: Acta de Aprobación de SIEV para la gestión inductiva | 1d? | 2018-04-23 | 2018-04-23 | 59d |
| 530 | 1.7.4.6.6 | **Seleccionar contribuyentes para el Control del IGV** | 1d? | 2018-04-23 | 2018-04-23 | 59d |
| 531 | 1.7.4.6.6.1 | **Planificación** | 1d? | 2018-04-23 | 2018-04-23 | 59d |
| 532 |  | Levantamiento de Requerimientos de Seleccionar contribuyentes para el Control del IGV | 1d? | 2018-04-23 | 2018-04-23 | 59d |
| 533 |  | Entregable: Documento de Requerimientos de Seleccionar contribuyentes para el Control del IGV | 1d? | 2018-04-23 | 2018-04-23 | 59d |
| 534 | 1.7.4.6.6.2 | **Ejecución** | 1d? | 2018-04-23 | 2018-04-23 | 59d |
| 535 | 1.7.4.6.6.2.1 | **Desarrollo** | 1d? | 2018-04-23 | 2018-04-23 | 59d |
| 536 |  | Desarrollar Seleccionar contribuyentes para el Control del IGV | 1d? | 2018-04-23 | 2018-04-23 | 59d |
| 537 |  | Entregable: Seleccionar contribuyentes para el Control del IGV-Desarrolado | 1d? | 2018-04-23 | 2018-04-23 | 59d |
| 538 | 1.7.4.6.6.2.2 | **Control de Calidad** | 1d? | 2018-04-23 | 2018-04-23 | 59d |
| 539 |  | Realizar Pruebas de Seleccionar contribuyentes para el Control del IGV | 1d? | 2018-04-23 | 2018-04-23 | 59d |
| 540 |  | Entregable: Seleccionar contribuyentes para el Control del IGV-QA | 1d? | 2018-04-23 | 2018-04-23 | 59d |
| 541 | 1.7.4.6.6.2.3 | **Implantación** | 1d? | 2018-04-23 | 2018-04-23 | 59d |
| 542 |  | Implementar Seleccionar contribuyentes para el Control del IGV | 1d? | 2018-04-23 | 2018-04-23 | 59d |
| 543 |  | Entregable: Seleccionar contribuyentes para el Control del IGV- Implementado | 1d? | 2018-04-23 | 2018-04-23 | 59d |
| 544 | 1.7.4.6.6.3 | **Cierre** | 1d? | 2018-04-23 | 2018-04-23 | 59d |
| 545 |  | Realizar el Acta de Aprobación de Seleccionar contribuyentes para el Control del IGV | 1d? | 2018-04-23 | 2018-04-23 | 59d |
| 546 |  | Entregable: Acta de Aprobación de Seleccionar contribuyentes para el Control del IGV | 1d? | 2018-04-23 | 2018-04-23 | 59d |
| 547 | 1.7.4.6.7 | **Seleccionar contribuyentes para el Control del incremento patrimonial no justificado** | 1d? | 2018-04-23 | 2018-04-23 | 59d |
| 548 | 1.7.4.6.7.1 | **Planificación** | 1d? | 2018-04-23 | 2018-04-23 | 59d |
| 549 |  | Levantamiento de Requerimientos de Seleccionar contribuyentes para el Control del incremento patrimonial no justificado | 1d? | 2018-04-23 | 2018-04-23 | 59d |
| 550 |  | Entregable: Documento de Requerimientos de Seleccionar contribuyentes para el Control del incremento patrimonial no justificado | 1d? | 2018-04-23 | 2018-04-23 | 59d |
| 551 | 1.7.4.6.7.2 | **Ejecución** | 1d? | 2018-04-23 | 2018-04-23 | 59d |
| 552 | 1.7.4.6.7.2.1 | **Desarrollo** | 1d? | 2018-04-23 | 2018-04-23 | 59d |
| 553 |  | Desarrollar Seleccionar contribuyentes para el Control del incremento patrimonial no justificado | 1d? | 2018-04-23 | 2018-04-23 | 59d |
| 554 |  | Entregable: Seleccionar contribuyentes para el Control del incremento patrimonial no justificado-Desarrolado | 1d? | 2018-04-23 | 2018-04-23 | 59d |
| 555 | 1.7.4.6.7.2.2 | **Control de Calidad** | 1d? | 2018-04-23 | 2018-04-23 | 59d |
| 556 |  | Realizar pruebas de Seleccionar contribuyentes para el Control del incremento patrimonial no justificado | 1d? | 2018-04-23 | 2018-04-23 | 59d |
| 557 |  | Entregable: Seleccionar contribuyentes para el Control del incremento patrimonial no justificado-QA | 1d? | 2018-04-23 | 2018-04-23 | 59d |
| 558 | 1.7.4.6.7.2.3 | **Implantación** | 1d? | 2018-04-23 | 2018-04-23 | 59d |
| 559 |  | Implementar Seleccionar contribuyentes para el Control del incremento patrimonial no justificado | 1d? | 2018-04-23 | 2018-04-23 | 59d |
| 560 |  | Entregable: Seleccionar contribuyentes para el Control del incremento patrimonial no justificado- Implementado | 1d? | 2018-04-23 | 2018-04-23 | 59d |

| ID | WBS | Task | Duration | Start | Finish | Total float |
| --- | --- | --- | --- | --- | --- | --- |
| 561 | 1.7.4.6.7.3 | **Cierre** | 1d? | 2018-04-23 | 2018-04-23 | 59d |
| 562 |  | Realizar el Acta de Aprobación de Seleccionar contribuyentes para el Control del incremento patrimonial no justificado | 1d? | 2018-04-23 | 2018-04-23 | 59d |
| 563 |  | Entregable: Acta de Aprobación de Seleccionar contribuyentes para el Control del incremento patrimonial no justificado | 1d? | 2018-04-23 | 2018-04-23 | 59d |
| 564 | 1.7.4.6.8 | **Perfil para seleccionar Accion masiva** | 1d? | 2018-04-23 | 2018-04-23 | 59d |
| 565 | 1.7.4.6.8.1 | **Planificación** | 1d? | 2018-04-23 | 2018-04-23 | 59d |
| 566 |  | Levantamiento de Requerimientos de Perfil para seleccionar Accion masiva | 1d? | 2018-04-23 | 2018-04-23 | 59d |
| 567 |  | Entregable: Documento de Requerimientos de Perfil para seleccionar Accion masiva | 1d? | 2018-04-23 | 2018-04-23 | 59d |
| 568 | 1.7.4.6.8.2 | **Ejecución** | 1d? | 2018-04-23 | 2018-04-23 | 59d |
| 569 | 1.7.4.6.8.2.1 | **Desarrollo** | 1d? | 2018-04-23 | 2018-04-23 | 59d |
| 570 |  | Desarrollar Perfil para seleccionar Accion masiva | 1d? | 2018-04-23 | 2018-04-23 | 59d |
| 571 |  | Entregable: Perfil para seleccionar Accion masiva-Desarrolado | 1d? | 2018-04-23 | 2018-04-23 | 59d |
| 572 | 1.7.4.6.8.2.2 | **Control de Calidad** | 1d? | 2018-04-23 | 2018-04-23 | 59d |
| 573 |  | Realizar pruebas de Perfil para seleccionar Accion masiva | 1d? | 2018-04-23 | 2018-04-23 | 59d |
| 574 |  | Entregable: Perfil para seleccionar Accion masiva-QA | 1d? | 2018-04-23 | 2018-04-23 | 59d |
| 575 | 1.7.4.6.8.2.3 | **Implantación** | 1d? | 2018-04-23 | 2018-04-23 | 59d |
| 576 |  | Implementar Perfil para seleccionar Accion masiva | 1d? | 2018-04-23 | 2018-04-23 | 59d |
| 577 |  | Entregable: Perfil para seleccionar Accion masiva- Implementado | 1d? | 2018-04-23 | 2018-04-23 | 59d |
| 578 | 1.7.4.6.8.3 | **Cierre** | 1d? | 2018-04-23 | 2018-04-23 | 59d |
| 579 |  | Realizar el Acta de Aprobación de Perfil para seleccionar Accion masiva | 1d? | 2018-04-23 | 2018-04-23 | 59d |
| 580 |  | Entregable: Acta de Aprobación de Perfil para seleccionar Accion masiva | 1d? | 2018-04-23 | 2018-04-23 | 59d |
| 581 | 1.7.4.7 | **Fiscalización Parcial Electrónica del IGV** | 1d? | 2018-04-23 | 2018-04-23 | 59d |
| 582 | 1.7.4.7.1 | **Piloto de fiscalización parcial electrónica de comprobantes duplicados** | 1d? | 2018-04-23 | 2018-04-23 | 59d |
| 583 | 1.7.4.7.1.1 | **Planificación** | 1d? | 2018-04-23 | 2018-04-23 | 59d |
| 584 |  | Levantamiento de Requerimientos de Piloto de fiscalización parcial electrónica de comprobantes duplicados | 1d? | 2018-04-23 | 2018-04-23 | 59d |
| 585 |  | Entregable: Documento de Requerimientos de Piloto de fiscalización parcial electrónica de comprobantes duplicados | 1d? | 2018-04-23 | 2018-04-23 | 59d |
| 586 | 1.7.4.7.1.2 | **Ejecución** | 1d? | 2018-04-23 | 2018-04-23 | 59d |
| 587 | 1.7.4.7.1.2.1 | **Desarrollo** | 1d? | 2018-04-23 | 2018-04-23 | 59d |
| 588 |  | Desarrollar Piloto de fiscalización parcial electrónica de comprobantes duplicados | 1d? | 2018-04-23 | 2018-04-23 | 59d |
| 589 |  | Entregable: Piloto de fiscalización parcial electrónica de comprobantes duplicados-Desarrolado | 1d? | 2018-04-23 | 2018-04-23 | 59d |
| 590 | 1.7.4.7.1.2.2 | **Control de Calidad** | 1d? | 2018-04-23 | 2018-04-23 | 59d |
| 591 |  | Realizar pruebas de Piloto de fiscalización parcial electrónica de comprobantes duplicados | 1d? | 2018-04-23 | 2018-04-23 | 59d |
| 592 |  | Entregable: Piloto de fiscalización parcial electrónica de comprobantes duplicados-QA | 1d? | 2018-04-23 | 2018-04-23 | 59d |
| 593 | 1.7.4.7.1.2.3 | **Implantación** | 1d? | 2018-04-23 | 2018-04-23 | 59d |
| 594 |  | Implementar Piloto de fiscalización parcial electrónica de comprobantes duplicados | 1d? | 2018-04-23 | 2018-04-23 | 59d |
| 595 |  | Entregable: Piloto de fiscalización parcial electrónica de comprobantes duplicados- Implementado | 1d? | 2018-04-23 | 2018-04-23 | 59d |
| 596 | 1.7.4.7.1.3 | **Cierre** | 1d? | 2018-04-23 | 2018-04-23 | 59d |
| 597 |  | Realizar el Acta de Aprobación de Piloto de fiscalización parcial electrónica de comprobantes duplicados | 1d? | 2018-04-23 | 2018-04-23 | 59d |
| 598 |  | Entregable: Acta de Aprobación de Piloto de fiscalización parcial electrónica de comprobantes duplicados | 1d? | 2018-04-23 | 2018-04-23 | 59d |
| 599 | 1.7.4.7.2 | **Fiscalización parcial electrónica de diferencias entre RCVE y DJ de IGV** | 1d? | 2018-04-23 | 2018-04-23 | 59d |
| 600 | 1.7.4.7.2.1 | **Planificación** | 1d? | 2018-04-23 | 2018-04-23 | 59d |
| 601 |  | Levantamiento de Requerimientos de Fiscalización parcial electrónica de diferencias entre RCVE y DJ de IGV | 1d? | 2018-04-23 | 2018-04-23 | 59d |
| 602 |  | Entregable: Documento de Requerimientos de Fiscalización parcial electrónica de diferencias entre RCVE y DJ de IGV | 1d? | 2018-04-23 | 2018-04-23 | 59d |
| 603 | 1.7.4.7.2.2 | **Ejecución** | 1d? | 2018-04-23 | 2018-04-23 | 59d |
| 604 | 1.7.4.7.2.2.1 | **Desarrollo** | 1d? | 2018-04-23 | 2018-04-23 | 59d |
| 605 |  | Desarrollar Fiscalización parcial electrónica de diferencias entre RCVE y DJ de IGV | 1d? | 2018-04-23 | 2018-04-23 | 59d |
| 606 |  | Entregable: Fiscalización parcial electrónica de diferencias entre RCVE y DJ de IGV | 1d? | 2018-04-23 | 2018-04-23 | 59d |
| 607 | 1.7.4.7.2.2.2 | **Control de Calidad** | 1d? | 2018-04-23 | 2018-04-23 | 59d |
| 608 |  | Realizar pruebas de Fiscalización parcial electrónica de diferencias entre RCVE y DJ de IGV | 1d? | 2018-04-23 | 2018-04-23 | 59d |
| 609 |  | Entregable: Fiscalización parcial electrónica de diferencias entre RCVE y DJ de IGV-QA | 1d? | 2018-04-23 | 2018-04-23 | 59d |
| 610 | 1.7.4.7.2.2.3 | **Implantación** | 1d? | 2018-04-23 | 2018-04-23 | 59d |
| 611 |  | Implementar Fiscalización parcial electrónica de diferencias entre RCVE y DJ de IGV | 1d? | 2018-04-23 | 2018-04-23 | 59d |
| 612 |  | Entregable: Fiscalización parcial electrónica de diferencias entre RCVE y DJ de IGV- Implementado | 1d? | 2018-04-23 | 2018-04-23 | 59d |
| 613 | 1.7.4.7.2.3 | **Cierre** | 1d? | 2018-04-23 | 2018-04-23 | 59d |
| 614 |  | Realizar el Acta de Aprobación de Fiscalización parcial electrónica de diferencias entre RCVE y DJ de IGV | 1d? | 2018-04-23 | 2018-04-23 | 59d |
| 615 |  | Entregable: Acta de Aprobación de Fiscalización parcial electrónica de diferencias entre RCVE y DJ de IGV | 1d? | 2018-04-23 | 2018-04-23 | 59d |
| 616 | 1.8 | **CEI Alineado a Procesos** | 5d? | 2018-04-23 | 2018-04-27 | 55d |
| 617 | 1.8.1 | **Iteración 1** | 5d? | 2018-04-23 | 2018-04-27 | 55d |
| 618 |  | Elaborar Documento de Reglas de Negocio | 5d | 2018-04-23 | 2018-04-27 | 55d |
| 619 |  | Elaborar Mapa de Procesos AS IS | 1d? | 2018-04-23 | 2018-04-23 | 59d |
| 620 |  | Elaborar Mapa de Procesos TO BE | 1d? | 2018-04-23 | 2018-04-23 | 59d |
| 621 |  | Elaborar Ficha del Proceso | 1d? | 2018-04-23 | 2018-04-23 | 59d |
| 622 | 1.8.2 | **Iteración 2** | 1d? | 2018-04-23 | 2018-04-23 | 59d |
| 623 |  | Elaborar Documento de Reglas de Negocio | 1d? | 2018-04-23 | 2018-04-23 | 59d |
| 624 |  | Elaborar Mapa de Procesos AS IS | 1d? | 2018-04-23 | 2018-04-23 | 59d |
| 625 |  | Elaborar Mapa de Procesos TO BE | 1d? | 2018-04-23 | 2018-04-23 | 59d |
| 626 |  | Elaborar Ficha del Proceso | 1d? | 2018-04-23 | 2018-04-23 | 59d |

## Version 2 (saved 2018-05-17)

Note of the change: Para trabajar con project

Last finish stays 2018-07-16.

Added:

| ID | Task | Duration | Start | Finish | Predecessors | Resources |
| --- | --- | --- | --- | --- | --- | --- |
| 70 | **Arquitectura** | 45d | 2018-04-23 | 2018-06-25 |  |  |
| 71 | **Construcción** | 45d | 2018-04-23 | 2018-06-25 |  |  |
| 72 | Ambiente Desarrollo | 19d | 2018-04-23 | 2018-05-18 |  | DAIA; DGIT; DAT |
| 73 | Ambiente Calidad | 23d | 2018-04-23 | 2018-05-24 |  | DAIA; DGIT; DAT |
| 74 | Elaboración de Documentación Técnica e Instrucctivo. | 6d | 2018-06-18 | 2018-06-25 | 72FS+20d | DAIA |
| 75 | **Implantación** | 5d | 2018-05-21 | 2018-05-25 |  |  |
| 76 | Ambiente de Desarrollo | 1d | 2018-05-21 | 2018-05-21 | 72 | DAIA; DGIT; DAT |
| 77 | Ambiente de Calidad | 1d | 2018-05-25 | 2018-05-25 | 73 | DAIA; DGIT; DAT |
| 78 | **Post Implantación** | 2d | 2018-05-28 | 2018-05-29 |  |  |
| 79 | Pruebas de rendimiento | 2d | 2018-05-28 | 2018-05-29 | 77 | DCC |

Changed:

| ID | Task | Start | Finish | Duration | Total float | Other |
| --- | --- | --- | --- | --- | --- | --- |
| 46 | **Disponibilidad de Información** |  |  |  |  | was named Disponibilidad de Modelos de IGV y PN |
| 62 | **Gestión de Riesgo del Cumplimiento Tributario del IGV** |  |  | 60d? → 60d |  |  |
| 69 | **Ejecución** |  | 2018-07-02 → 2018-07-10 (+8d) | 50d → 56d | 9d → 3d |  |
| 80 | **Desarrollo** |  | 2018-05-18 → 2018-05-28 (+10d) | 19d → 25d | 9d → 3d |  |
| 81 | Matriz PRC - Variable de Condición de Domicilio - Estado del Contribuyente |  | 2018-05-18 → 2018-05-28 (+10d) | 19d → 25d | 9d → 3d |  |
| 82 | **Matriz PRC - Variable de Omiso a la Declaración MEPECO** |  | 2018-05-18 → 2018-05-28 (+10d) | 19d → 25d | 9d → 3d |  |
| 83 | Ajustes en los procesos de la infracción. Graba en la tabla de variables |  | 2018-05-10 → 2018-05-16 (+6d) | 13d → 17d | 9d → 3d |  |
| 84 | Actualización de la omisión desde la tabla de variables cuando Llega la DJ | 2018-05-11 → 2018-05-17 (+6d) | 2018-05-18 → 2018-05-28 (+10d) | 6d → 8d | 9d → 3d |  |
| 85 | Matriz PRC - Variable de Omiso a la Declaración PRICO |  | 2018-05-18 → 2018-05-28 (+10d) | 19d → 25d | 9d → 3d |  |
| 86 | **Matriz PRC - Variable Omisos Libros Electrónicos - Padrón acotado** |  | 2018-05-18 → 2018-05-28 (+10d) | 19d → 25d | 9d → 3d |  |
| 87 | La generación de la variable de omiso de libros electrónicos |  | 2018-05-10 → 2018-05-16 (+6d) | 13d → 17d | 9d → 3d |  |
| 88 | Los ajustes a la emisión electrónica basada en el perfil. | 2018-05-11 → 2018-05-17 (+6d) | 2018-05-18 → 2018-05-28 (+10d) | 6d → 8d | 9d → 3d |  |
| 90 | Entregable: Matriz de Riesgos del Contrinuyente Desarrollada | 2018-05-18 → 2018-05-28 (+10d) | 2018-05-18 → 2018-05-28 (+10d) |  | 41d → 35d |  |
| 91 | **Control de Calidad** |  | 2018-06-29 → 2018-07-09 (+10d) | 30d → 36d | 9d → 3d |  |
| 92 | Matriz PRC - Variable de Condición de Domicilio - Estado del Contribuyente | 2018-05-21 → 2018-05-29 (+8d) | 2018-06-29 → 2018-07-09 (+10d) |  | 9d → 3d |  |
| 93 | Matriz PRC - Variable de Omiso a la Declaración MEPECO | 2018-05-21 → 2018-05-29 (+8d) | 2018-06-29 → 2018-07-09 (+10d) |  | 9d → 3d |  |
| 94 | Matriz PRC - Variable de Omiso a la Declaración PRICO | 2018-05-21 → 2018-05-29 (+8d) | 2018-06-29 → 2018-07-09 (+10d) |  | 9d → 3d |  |
| 95 | Matriz PRC - Variable Omisos Libros Electrónicos - Padrón acotado | 2018-05-21 → 2018-05-29 (+8d) | 2018-06-29 → 2018-07-09 (+10d) |  | 9d → 3d |  |
| 97 | Entregable: Matriz de Riesgos del Contrinuyente - QA | 2018-06-29 → 2018-07-09 (+10d) | 2018-06-29 → 2018-07-09 (+10d) |  | 9d → 3d |  |
| 98 | **Implantación** | 2018-07-02 → 2018-07-10 (+8d) | 2018-07-02 → 2018-07-10 (+8d) |  | 9d → 3d |  |
| 99 | Insatación de Matriz de Riesgos del Contribuyente | 2018-07-02 → 2018-07-10 (+8d) | 2018-07-02 → 2018-07-10 (+8d) |  | 9d → 3d |  |
| 100 | Entregable: Matriz de Riesgos del Contrinuyente -Implementada | 2018-07-02 → 2018-07-10 (+8d) | 2018-07-02 → 2018-07-10 (+8d) |  | 9d → 3d |  |
| 101 | **Cierre** | 2018-07-03 → 2018-07-11 (+8d) | 2018-07-03 → 2018-07-11 (+8d) |  | 9d → 3d |  |
| 102 | Matriz de Riesgos del Contribuyente | 2018-07-03 → 2018-07-11 (+8d) | 2018-07-03 → 2018-07-11 (+8d) |  | 9d → 3d |  |
| 103 | Entregable: Matriz de Riesgos del Contrinuyente -Implementada | 2018-07-03 → 2018-07-11 (+8d) | 2018-07-03 → 2018-07-11 (+8d) |  | 9d → 3d |  |
| 121 | **Variables del PPNN para la selección en la gestión masiva y 2.5 selectiva** |  |  | 2d? → 2d |  |  |
| 125 | **Ejecución** |  |  | 1d? → 1d |  |  |
| 126 | **Desarrollo** |  |  | 1d? → 1d |  |  |
| 127 | Desarrollar Variables del PPNN para la selección en la gestión masiva y 2.5 selectiva |  |  | 1d? → 1d |  |  |
| 129 | **Control de Calidad** |  |  | 1d? → 1d |  |  |
| 130 | CC Variables del PPNN para la selección en la gestión masiva y 2.5 selectiva |  |  | 1d? → 1d |  |  |
| 132 | **Implantación** |  |  | 1d? → 1d |  |  |
| 133 | Implementar Variables del PPNN para la selección en la gestión masiva y 2.5 selectiva |  |  | 1d? → 1d |  |  |
| 138 | **Actualizar vinculaciones a los ONR** |  |  | 2d? → 2d |  |  |
| 139 | **Planificación** |  | 2018-04-24 → 2018-04-23 (-1d) | 2d → 1d | 58d → 59d |  |
| 140 | Levantamiento de Requerimientos de Actualizar vinculaciones a los ONR |  | 2018-04-24 → 2018-04-23 (-1d) | 2d → 1d | 58d → 59d |  |
| 142 | **Ejecución** |  |  | 1d? → 1d |  |  |
| 143 | **Desarrollo** |  |  | 1d? → 1d |  |  |
| 144 | Desarrollar Actualizar vinculaciones a los ONR |  |  | 1d? → 1d |  |  |
| 146 | **Control de Calidad** |  |  | 1d? → 1d |  |  |
| 147 | CC Actualizar vinculaciones a los ONR |  |  | 1d? → 1d |  |  |
| 149 | **Implantación** |  |  | 1d? → 1d |  |  |
| 150 | Implementar Actualizar vinculaciones a los ONR |  |  | 1d? → 1d |  |  |
| 155 | **Variables de inconsistencias del RCVE** |  |  | 60d? → 60d |  |  |
| 159 | **Ejecución** |  |  | 60d? → 60d |  |  |
| 163 | **Control de Calidad** |  |  | 1d? → 1d |  |  |
| 164 | Variables de inconsistencias del RCVE |  |  | 1d? → 1d |  |  |
| 166 | **Implantación** |  |  | 1d? → 1d |  |  |
| 167 | Variables de inconsistencias del RCVE |  |  | 1d? → 1d |  |  |
| 172 | APP de Consulta de Cumplimiento Tributario del IGV |  |  | 1d? → 1d |  |  |

## Version 3 (saved 2018-05-18)

Last finish stays 2018-07-16. Complete tasks 0 → 2.

Removed: 47 Planificación; 48 Levantamiento de Requerimientos; 49 Entregable: Documento de Requerimientos

Changed:

| ID | Task | Start | Finish | Duration | Complete | Total float | Predecessors |
| --- | --- | --- | --- | --- | --- | --- | --- |
| 1 | **Control Electrónico del IGV** | 2014-03-03 A |  |  | 0% → 2% |  |  |
| 46 | **Disponibilidad de Información** | 2018-04-23 A |  |  | 0% → 31% |  |  |
| 47 | **Elecución** | 2018-04-24 → 2018-04-23 A (-1d) |  | 40.5d → 41.5d | 0% → 32% |  |  |
| 48 | **Control de Calidad** | 2018-04-24 → 2018-04-23 A (-1d) |  | 40d → 41d | 0% → 32% |  |  |
| 49 | Revisar Modelo de IGV - Teradata | 2018-04-24 → 2018-04-23 A (-1d) | 2018-04-30 A | 5d → 6d | 0% → 100% | 17.5d → none | Entregable: Documento de Requerimientos → none |
| 50 | Revisar Modelo de PN – Teradata | 2018-05-02 A |  |  | 0% → 20% |  |  |
| 52 | **Implantación** | 2018-06-20 A |  |  | 0% → 50% |  |  |
| 53 | Modelo de IGV - Teradata | 2018-06-20 A | 2018-06-20 A |  | 0% → 100% | 18.5d → none |  |

## Version 4 (data date 2018-04-23, saved 2018-05-22)

Note of the change: XXX cronograma

Last finish 2018-07-16 → 2018-11-22 (+129d). Complete tasks 2 → 20.

Added:

| ID | Task | Duration | Start | Finish | Predecessors | Resources |
| --- | --- | --- | --- | --- | --- | --- |
| 55 | **Matriz de Riesgo del Contribuyente** | 49d | 2018-04-23 A | 2018-06-29 |  |  |
| 64 | Entregable: Ambientes de Desarrollo y Calidad | 0d | 2018-05-25 | 2018-05-25 | 63, 62 |  |
| 73 | **Integración** | 5d | 2018-05-21 A | 2018-05-25 |  |  |
| 80 | Matriz de Riesgo del Contribuyente | 24d | 2018-05-28 | 2018-06-28 | 78, 74, 75, 76, 77 | MPURILLA |
| 86 | Revisión del MPN | 1d | 2018-04-23 | 2018-04-23 |  |  |
| 96 | Entregable: APP de Consulta de Cumplimiento Tributario - Implementado | 0d | 2018-04-23 A | 2018-04-23 A |  |  |
| 97 | **Tablero de Gestión y Seguimiento del Control Electrónico del IGV** | 0d | 2018-04-23 A | 2018-04-23 A |  |  |
| 98 | Entregable: Tablero de Gestión y Seguimiento de Control Electónico del IGV - Implementado | 0d | 2018-04-23 A | 2018-04-23 A |  |  |
| 118 | **Análisis** | 2d | 2018-04-23 | 2018-04-24 |  |  |
| 119 | Revisión del MPN | 1d | 2018-04-23 | 2018-04-23 |  |  |
| 120 | Elaboración del F2-AR1 | 1d | 2018-04-24 | 2018-04-24 | 119 |  |
| 137 | **Analítica** | 2d | 2018-06-21 | 2018-06-22 |  |  |
| 144 | Entregable: Componente Análitico | 0d | 2018-06-22 | 2018-06-22 | 143 |  |
| 145 | **FSW** | 33.62d | 2018-05-14 | 2018-06-28 |  |  |
| 146 | **Analisis** | 20.5d | 2018-05-14 | 2018-06-11 |  |  |
| 147 | Elaboración de Análisis | 100h | 2018-05-14 | 2018-05-30 | 5FS+13d |  |
| 148 | Envío de Documento Análisis | 0d | 2018-06-04 | 2018-06-04 | 147FS+3d |  |
| 149 | Aprobación de Documento Análisis | 40h | 2018-06-04 | 2018-06-11 | 148 |  |
| 151 | **Diseño** | 13.12d | 2018-05-31 | 2018-06-19 |  |  |
| 152 | Elaboración de Diseño | 73h | 2018-05-31 | 2018-06-13 | 147FS+1d |  |
| 153 | Envío de Documento Diseño | 0d | 2018-06-14 | 2018-06-14 | 152FS+1d |  |
| 154 | Aprobación de Documento Diseño | 24h | 2018-06-14 | 2018-06-19 | 153 |  |
| 155 | **Construcción** | 19.62d | 2018-05-21 | 2018-06-15 |  |  |
| 156 | Construcción | 106h | 2018-05-21 | 2018-06-07 | 5FS+18d |  |
| 157 | Pruebas Unitarias | 8h | 2018-06-07 | 2018-06-08 | 156 |  |
| 158 | Pruebas de Integración y otros | 11h | 2018-06-08 | 2018-06-11 | 157 |  |
| 159 | Elaboración del documento de pase a producción | 24h | 2018-06-11 | 2018-06-14 | 158 |  |
| 160 | Actualización de documentación para el usuario | 16h | 2018-06-11 | 2018-06-13 | 158 |  |
| 161 | Envío de Construcción | 0d | 2018-06-15 | 2018-06-15 | 159FS+1d |  |
| 162 | Pruebas Desarrollo INSI | 24h | 2018-06-15 | 2018-06-20 | 161 |  |
| 163 | Envío entregable de software (Formal) | 0d | 2018-06-21 | 2018-06-21 | 162FS+1d |  |
| 164 | Aprobación de entregable de software | 40h | 2018-06-21 | 2018-06-28 | 163 |  |
| 184 | Proceso de Carga de Obligados- Contingencia CPE ( RF12) | 22d | 2018-04-23 | 2018-05-23 |  |  |
| 185 | Factura BVE Portal - Contingencia CPE ( RF3/RF7/RF8) | 39d | 2018-04-23 | 2018-06-15 |  |  |
| 186 | Receptor Contingencia CPE ( RF5/RF6) | 39d | 2018-04-23 | 2018-06-15 |  |  |
| 187 | Consultas SOL /Intranet - Contingencia CPE ( RF9/RF10/RF11) | 57d | 2018-04-23 | 2018-07-11 |  |  |
| 189 | Formulario 816-Solicitud de autorización-Contingencia CPE ( RF1/RF2) | 20d | 2018-05-24 | 2018-06-20 | 183 |  |
| 190 | Proceso de Carga de Obligados- Contingencia CPE ( RF12) | 20d | 2018-05-24 | 2018-06-20 | 184 |  |
| 191 | Factura BVE Portal - Contingencia CPE ( RF3/RF7/RF8) | 30d | 2018-06-18 | 2018-07-27 | 185 |  |
| 192 | Receptor Contingencia CPE ( RF5/RF6) | 30d | 2018-06-18 | 2018-07-27 | 186 |  |
| 199 | **Análisis** | 5d | 2018-05-02 | 2018-05-08 |  |  |
| 200 | Revisión del MPN | 2d | 2018-05-02 | 2018-05-03 | 5FS+5d |  |
| 201 | Elaboración del F2-AR1 | 3d | 2018-05-04 | 2018-05-08 | 200 |  |
| 204 | Consulta de obligados-Reporte del mes siguiente-Consulta de omisos | 38d | 2018-05-09 | 2018-06-29 | 201 |  |
| 205 | Opción libre consulta de obligados | 38d | 2018-05-09 | 2018-06-29 | 201 |  |
| 208 | Consulta de obligados-Reporte del mes siguiente-Consulta de omisos | 33d | 2018-07-02 | 2018-08-15 | 204 |  |
| 209 | Opción libre consulta de obligados | 33d | 2018-07-02 | 2018-08-15 | 205 |  |
| 214 | **Análisis** | 2d | 2018-04-23 | 2018-04-24 |  |  |
| 215 | Revisión del MPN | 1d | 2018-04-23 | 2018-04-23 |  |  |
| 216 | Elaboración del F2-AR1 | 1d | 2018-04-24 | 2018-04-24 | 215 |  |
| 226 | **Análisis** | 2d | 2018-04-23 | 2018-04-24 |  |  |
| 227 | Revisión del MPN | 1d | 2018-04-23 | 2018-04-23 |  |  |
| 228 | Elaboración del F2-AR1 | 1d | 2018-04-24 | 2018-04-24 | 227 |  |
| 230 | Reemplazo de PDT por Declara Fácil con propuesta de DJ | 70d | 2018-04-25 | 2018-08-01 | 228 |  |
| 232 | Control de Calidad a reemplazo de PDT por Declara Fácil con propuesta de DJ | 21d | 2018-08-02 | 2018-08-30 | 230 |  |
| 234 | Reemplazo de PDT por Declara Fácil con propuesta de DJ | 0d | 2018-08-30 | 2018-08-30 | 232 |  |
| 235 | **Integración del control de inconsistencias del RCVE y la propuesta de la Dec. IGV Renta Mensual** | 5d | 2018-04-23 | 2018-04-27 |  |  |
| 236 | **Análisis** | 2d | 2018-04-23 | 2018-04-24 |  |  |
| 237 | Revisión del MPN | 1d | 2018-04-23 | 2018-04-23 |  |  |
| 238 | Elaboración del F2-AR1 | 1d | 2018-04-24 | 2018-04-24 | 237 |  |
| 240 | Integración del control de inconsistencias del RCVE y la propuesta de la Dec. IGV Renta Mensual | 1d | 2018-04-25 | 2018-04-25 | 238 |  |
| 242 | Integración del control de inconsistencias del RCVE y la propuesta de la Dec. IGV Renta Mensual | 1d | 2018-04-26 | 2018-04-26 | 240 |  |
| 244 | Integración del control de inconsistencias del RCVE y la propuesta de la Dec. IGV Renta Mensual | 1d | 2018-04-27 | 2018-04-27 | 242 |  |
| 246 | **Análisis** | 2d | 2018-04-23 | 2018-04-24 |  |  |
| 247 | Revisión del MPN | 1d | 2018-04-23 | 2018-04-23 |  |  |
| 248 | Elaboración del F2-AR1 | 1d | 2018-04-24 | 2018-04-24 | 247 |  |
| 252 | Determinación de omisos a la DJ del IGV Renta Mensual | 10d | 2018-05-17 | 2018-05-30 | 250 |  |
| 254 | Determinación de omisos a la DJ del IGV Renta Mensual | 1d | 2018-05-30 | 2018-05-30 | 252FS-1d |  |
| 255 | Entregable: Determinación de omisos a la DJ del IGV renta Mensual Implementado | 0d | 2018-05-30 | 2018-05-30 | 254 |  |
| 257 | **Análisis** | 2d | 2018-04-23 | 2018-04-24 |  |  |
| 258 | Revisión del MPN | 1d | 2018-04-23 | 2018-04-23 |  |  |
| 259 | Elaboración del F2-AR1 | 1d | 2018-04-24 | 2018-04-24 | 258 |  |
| 263 | Determinación de omisos a la DDJJ IGV Renta Mensual - Comprobante Único | 1d | 2018-04-26 | 2018-04-26 | 261 |  |
| 265 | Determinación de omisos a la DDJJ IGV Renta Mensual - Comprobante Único | 1d | 2018-04-27 | 2018-04-27 | 263 |  |
| 266 | Entregable: Determinación de omisos a la DDJJ IGV Renta Mensual - Comprobante Único Implementado | 0d | 2018-04-27 | 2018-04-27 | 265 |  |
| 268 | **Análisis** | 2d | 2018-04-23 | 2018-04-24 |  |  |
| 269 | Revisión del MPN | 1d | 2018-04-23 | 2018-04-23 |  |  |
| 270 | Elaboración del F2-AR1 | 1d | 2018-04-24 | 2018-04-24 | 269 |  |
| 274 | Actualización en línea de las presentaciones de DJ - MEPECO | 25d | 2018-05-21 | 2018-06-22 | 272 |  |
| 276 | Actualización en línea de las presentaciones de DJ - MEPECO | 1d | 2018-06-22 | 2018-06-22 | 274FS-1d |  |
| 277 | Entregable: Actualización en línea de las presentaciones de DJ - MEPECO Implementado | 0d | 2018-06-22 | 2018-06-22 | 276 |  |
| 278 | **Fiscalización: Gestión Masiva de Control del IGV** | 5d | 2018-04-23 | 2018-04-27 |  |  |
| 280 | **Análisis** | 2d | 2018-04-23 | 2018-04-24 |  |  |
| 281 | Revisión del MPN | 1d | 2018-04-23 | 2018-04-23 |  |  |
| 282 | Elaboración del F2-AR1 | 1d | 2018-04-24 | 2018-04-24 | 281 |  |
| 284 | Perfil para seleccionar Accion masiva | 1d | 2018-04-25 | 2018-04-25 | 282 |  |
| 286 | Perfil para seleccionar Accion masiva | 1d | 2018-04-26 | 2018-04-26 | 284 |  |
| 288 | Perfil para seleccionar Accion masiva | 1d | 2018-04-27 | 2018-04-27 | 286 |  |
| 289 | Entregable: Perfil para seleccionar Accion masiva Implementado | 0d | 2018-04-27 | 2018-04-27 | 288 |  |
| 291 | **Análisis** | 2d | 2018-04-23 | 2018-04-24 |  |  |
| 292 | Revisión del MPN | 1d | 2018-04-23 | 2018-04-23 |  |  |
| 293 | Elaboración del F2-AR1 | 1d | 2018-04-24 | 2018-04-24 | 292 |  |
| 295 | Nuevo CCV que integra el Gema WEB | 1d | 2018-04-25 | 2018-04-25 | 293 |  |
| 297 | Nuevo CCV que integra el Gema WEB | 1d | 2018-04-26 | 2018-04-26 | 295 |  |
| 299 | Nuevo CCV que integra el Gema WEB | 1d | 2018-04-27 | 2018-04-27 | 297 |  |
| 300 | Entregable: Nuevo CCV que integra el Gema WEB Implementado | 0d | 2018-04-27 | 2018-04-27 | 299 |  |
| 302 | **Análisis** | 2d | 2018-04-23 | 2018-04-24 |  |  |
| 303 | Revisión del MPN | 1d | 2018-04-23 | 2018-04-23 |  |  |
| 304 | Elaboración del F2-AR1 | 1d | 2018-04-24 | 2018-04-24 | 303 |  |
| 306 | SINE para las carta inductivas y esquelas | 1d | 2018-04-25 | 2018-04-25 | 304 |  |
| 308 | SINE para las carta inductivas y esquelas | 1d | 2018-04-26 | 2018-04-26 | 306 |  |
| 310 | SINE para las carta inductivas y esquelas | 1d | 2018-04-27 | 2018-04-27 | 308 |  |
| 311 | Entregable: SINE para las carta inductivas y esquelas Implementado | 0d | 2018-04-27 | 2018-04-27 | 310 |  |
| 313 | **Análisis** | 2d | 2018-04-23 | 2018-04-24 |  |  |
| 314 | Revisión del MPN | 1d | 2018-04-23 | 2018-04-23 |  |  |
| 315 | Elaboración del F2-AR1 | 1d | 2018-04-24 | 2018-04-24 | 314 |  |
| 317 | SIEV para la gestión inductiva | 1d | 2018-04-25 | 2018-04-25 | 315 |  |
| 319 | SIEV para la gestión inductiva | 1d | 2018-04-26 | 2018-04-26 | 317 |  |
| 321 | SIEV para la gestión inductiva | 1d | 2018-04-27 | 2018-04-27 | 319 |  |
| 322 | Entregable: SIEV para la gestión inductiva Implementado | 0d | 2018-04-27 | 2018-04-27 | 321 |  |
| 324 | **Análisis** | 2d | 2018-04-23 | 2018-04-24 |  |  |
| 325 | Revisión del MPN | 1d | 2018-04-23 | 2018-04-23 |  |  |
| 326 | Elaboración del F2-AR1 | 1d | 2018-04-24 | 2018-04-24 | 325 |  |
| 328 | CRM como soporte a las campañas de gestión inductiva | 1d | 2018-04-25 | 2018-04-25 | 326 |  |
| 330 | CRM como soporte a las campañas de gestión inductiva | 1d | 2018-04-26 | 2018-04-26 | 328 |  |
| 332 | CRM como soporte a las campañas de gestión inductiva | 1d | 2018-04-27 | 2018-04-27 | 330 |  |
| 333 | Entregable: CRM como soporte a las campañas de gestión inductiva-Implementado | 0d | 2018-04-27 | 2018-04-27 | 332 |  |
| 336 | **Análisis** | 2d | 2018-04-23 | 2018-04-24 |  |  |
| 337 | Revisión del MPN | 1d | 2018-04-23 | 2018-04-23 |  |  |
| 338 | Elaboración del F2-AR1 | 1d | 2018-04-24 | 2018-04-24 | 337 |  |
| 340 | Piloto de fiscalización parcial electrónica de comprobantes duplicados | 26d | 2018-04-25 | 2018-05-31 | 338 |  |
| 342 | Piloto de fiscalización parcial electrónica de comprobantes duplicados | 20d | 2018-06-01 | 2018-06-28 | 340 |  |
| 344 | Piloto de fiscalización parcial electrónica de comprobantes duplicados | 1d | 2018-06-28 | 2018-06-28 | 342FS-1d |  |
| 347 | **Análisis** | 2d | 2018-04-23 | 2018-04-24 |  |  |
| 348 | Revisión del MPN | 1d | 2018-04-23 | 2018-04-23 |  |  |
| 349 | Elaboración del F2-AR1 | 1d | 2018-04-24 | 2018-04-24 | 348 |  |
| 351 | Fiscalización parcial electrónica de diferencias entre RCVE y DJ de IGV | 1d | 2018-04-25 | 2018-04-25 | 349 |  |
| 353 | Fiscalización parcial electrónica de diferencias entre RCVE y DJ de IGV | 1d | 2018-04-26 | 2018-04-26 | 351 |  |
| 355 | Fiscalización parcial electrónica de diferencias entre RCVE y DJ de IGV | 1d | 2018-04-27 | 2018-04-27 | 353 |  |

Removed: 47 Elecución; 51 Entregable: Modelo del IGV y PN -Teradata -QA; 56 Cierre; 57 Acta de aceptación del Producto; 58 Entregable: Acta de Aceptación del Producto - Aprobado; 60 Planificación; 61 Levantamiento de Requerimiento de Variable de Condición de Domicilio - Estado del Contribuyente; 62 Levantamiento de Requerimiento de Variable de Omiso a la Declaración MEPECO; 63 Levantamiento de Requerimiento de Variable de Omiso a la Declaración PRICO; 64 Levantamiento de Requerimiento de Servicio de Perfil; 65 Entregable: Documento de Requerimientos de Matriz PRC; 66 Ejecución; 80 Ajustes en los procesos de la infracción. Graba en la tabla de variables; 81 Actualización de la omisión desde la tabla de variables cuando Llega la DJ; 84 La generación de la variable de omiso de libros electrónicos; 85 Los ajustes a la emisión electrónica basada en el perfil.; 87 Entregable: Matriz de Riesgos del Contrinuyente Desarrollada; 94 Entregable: Matriz de Riesgos del Contrinuyente - QA; 97 Entregable: Matriz de Riesgos del Contrinuyente -Implementada; 98 Cierre; 99 Matriz de Riesgos del Contribuyente; 101 Variables del IGV para la selección en la gestión masiva y selectiva; 102 Planificación; 103 Levantamiento de Requerimientos de Variables del IGV para la selección en la gestión masiva y selectiva; 104 Entregable: Documento de Requerimientos de Variables del IGV para la selección en la gestión masiva y selectiva; 105 Ejecución; 107 Desarrollar Variables del IGV para la selección en la gestión masiva y selectiva; 108 Entregable: Variables del IGV para la selección en la gestión masiva y selectiva- Desarrollo; 110 CC Variables del IGV para la selección en la gestión masiva y selectiva; 111 Entregable: Variables del IGV para la selección en la gestión masiva y selectiva-QA; 113 Implementar Variables del IGV para la selección en la gestión masiva y selectiva; 114 Entregable: Variables del IGV para la selección en la gestión masiva y selectiva - Implementado; 115 Cierre; 116 Realizar el Acta de Aprobación de Variables del IGV para la selección en la gestión masiva y selectiva; 117 Entregable: Acta de Aprobación de Variables del IGV para la selección en la gestión masiva y selectiva; 118 Variables del PPNN para la selección en la gestión masiva y 2.5 selectiva; 119 Planificación; 120 Levantamiento de Requerimientos de Variables del PPNN para la selección en la gestión masiva y 2.5 selectiva; 121 Entregable: Documento de Requerimientos de Variables del PPNN para la selección en la gestión masiva y 2.5 selectiva; 122 Ejecución; 124 Desarrollar Variables del PPNN para la selección en la gestión masiva y 2.5 selectiva; 125 Entregable: Variables del PPNN para la selección en la gestión masiva y 2.5 selectiva; 127 CC Variables del PPNN para la selección en la gestión masiva y 2.5 selectiva; 128 Entregable: Variables del PPNN para la selección en la gestión masiva y 2.5 selectiva-QA; 130 Implementar Variables del PPNN para la selección en la gestión masiva y 2.5 selectiva; 131 Entregable: Variables del PPNN para la selección en la gestión masiva y 2.5 selectiva - Implementado; 132 Cierre; 133 Realizar el Acta de Aprobación de Variables del PPNN para la selección en la gestión masiva y 2.5 selectiva; 134 Entregable: Acta de Aprobación de Variables del PPNN para la selección en la gestión masiva y 2.5 selectiva; 138 Entregable: Documento de Requerimientos de Actualizar vinculaciones a los ONR; 139 Ejecución; 142 Entregable: Actualizar vinculaciones a los ONR; 145 Entregable: Actualizar vinculaciones a los ONR-QA; 148 Entregable: Actualizar vinculaciones a los ONR - Implementado; 149 Cierre; 150 Realizar el Acta de Aprobación de Actualizar vinculaciones a los ONR; 152 Variables de inconsistencias del RCVE; 153 Planificación; 154 Levantamiento de Requerimientos de Variables de Inconsistencias del RCVE; 155 Entregable: Documento de Requerimientos de Variables de Inconsistencia del RCVE; 156 Ejecución; 158 Desarrollar Variables de inconsistencias del RCVE; 159 Entregable: Variables de inconsistencias del RCVE - Desarrollo; 161 Variables de inconsistencias del RCVE; 162 Entregable: Variables de inconsistencias del RCVE-QA; 164 Variables de inconsistencias del RCVE; 165 Entregable: Variables de inconsistencias del RCVE - Implementado; 166 Cierre; 167 Realizar el Acta de Aprobación de Variables de inconsistencias del RCVE; 168 Entregable: Acta de Aprobación de Variables de Inconsistencias del RCVE; 172 Planificación; 173 Levantamiento de Requerimientos de Campaña de Actualización email; 174 Entregable: Documento de Requerimientos de Campaña de Actualización email; 175 Ejecución; 178 Entregable: Campaña de Actualización email-Desarrolado; 181 Entregable: Campaña de Actualización email-QA; 184 Entregable: Campaña de Actualización email - Implementado; 185 Cierre; 186 Realizar el Acta de Aprobación de Campaña de Actualización email; 189 Planificación; 190 Levantamiento de Requerimientos de Campaña de Actualización celular; 191 Entregable: Documento de Requerimientos de Campaña de Actualización celular; 192 Ejecución; 195 Entregable: Campaña de Actualización celular-Desarrolado; 198 Entregable: Campaña de Actualización celular-QA; 201 Entregable: Campaña de Actualización celular- Implementado; 202 Cierre; 203 Realizar el Acta de Aprobación de Campaña de Actualización celular; 207 Planificación; 208 Levantamiento de Requerimientos de Alertas de inconsistencias en el CPE; 209 Entregable: Documento de Requerimientos de Alertas de inconsistencias en el CPE; 210 Ejecución; 213 Entregable: Alertas de inconsistencias en el CPE-Desarrolado; 216 Entregable: Alertas de inconsistencias en el CPE-QA; 219 Entregable: Alertas de inconsistencias en el CPE- Implementado; 220 Cierre; 221 Realizar el Acta de Aprobación de Alertas de inconsistencias en el CPE; 224 Planificación; 225 Levantamiento de Requerimientos de Restricción a la Autorización de CdP; 226 Entregable: Documento de Requerimientos de Restricción a la Autorización de CdP; 227 Ejecución; 230 Entregable: Restricción a la Autorización de CdP-Desarrolado; 233 Entregable: Restricción a la Autorización de CdP-QA; 236 Entregable: Restricción a la Autorización de CdP- Implementado; 237 Cierre; 238 Realizar el Acta de Aprobación de Restricción a la Autorización de CdP; 241 Planificación; 242 Levantamiento de Requerimientos de Limitación de CdP Autorizados; 243 Entregable: Documento de Requerimientos de Limitación de CdP Autorizados; 244 Ejecución; 247 Entregable: Limitación de CdP Autorizados-Desarrolado; 250 Entregable: Limitación de CdP Autorizados-QA; 253 Entregable: Limitación de CdP Autorizados- Implementado; 254 Cierre; 255 Realizar el Acta de Aprobación de Limitación de CdP Autorizados; 256 Entregable: Acta de Aprobación de Limitación de CdP Autorizados; 258 Planificación; 259 Levantamiento de Requerimientos de Restricción a la Emisión de CdP (web services); 260 Entregable: Documento de Requerimientos de Restricción a la Emisión de CdP (web services); 261 Ejecución; 264 Entregable: Restricción a la Emisión de CdP (web services) - Desarrollado; 267 Entregable: Restricción a la Emisión de CdP (web services)-QA; 270 Entregable: Restricción a la Emisión de CdP (web services)- Implementado; 271 Cierre; 272 Realizar el Acta de Aprobación de Restricción a la Emisión de CdP (web services); 275 Planificación; 276 Levantamiento de Requerimientos de Restricción a la Emisión de CPE; 277 Entregable: Documento de Requerimientos de Restricción a la Emisión de CPE; 278 Ejecución; 281 Entregable: Restricción a la Emisión de CPE-Desarrolado; 284 Entregable: Restricción a la Emisión de CPE-QA; 287 Entregable: Restricción a la Emisión de CPE- Implementado; 288 Cierre; 289 Realizar el Acta de Aprobación de Restricción a la Emisión de CPE; 292 Planificación; 293 Levantamiento de Requerimientos de Comprobante de contingencia al CPE; 294 Entregable: Documento de Requerimientos de Comprobante de contingencia al CPE; 295 Ejecución; 298 Entregable: Comprobante de contingencia al CPE-Desarrolado; 301 Entregable: Comprobante de contingencia al CPE-QA; 304 Entregable: Comprobante de contingencia al CPE- Implementado; 305 Cierre; 306 Realizar el Acta de Aprobación de Comprobante de contingencia al CPE; 309 Campaña de omisos al RVCE; 310 Planificación; 311 Levantamiento de Requerimientos de Campaña de Actualización celular; 312 Entregable: Documento de Requerimientos de Campaña de Actualización celular; 313 Ejecución; 315 Desarrollar Campaña de Actualización celular; 316 Entregable: Campaña de Actualización celular-Desarrolado; 318 CC Campaña de Actualización celular; 319 Entregable: Campaña de Actualización celular-QA; 321 Implementar Campaña de Actualización celular; 322 Entregable: Campaña de Actualización celular- Implementado; 323 Cierre; 324 Realizar el Acta de Aprobación de Campaña de Actualización celular; 325 Entregable: Acta de Aprobación de Campaña de Actualización celular; 327 Planificación; 328 Levantamiento de Requerimientos de Padrón de omisos a la presentación del RCVE; 329 Entregable: Documento de Requerimientos de Padrón de omisos a la presentación del RCVE; 330 Ejecución; 333 Entregable: Padrón de omisos a la presentación del RCVE-Desarrolado; 336 Entregable: Padrón de omisos a la presentación del RCVE-QA; 339 Entregable: Padrón de omisos a la presentación del RCVE- Implementado; 340 Cierre; 341 Realizar el Acta de Aprobación de Padrón de omisos a la presentación del RCVE; 344 Planificación; 345 Levantamiento de Requerimientos de Control de omisos con padrón de RCVE; 346 Entregable: Documento de Requerimientos de Control de omisos con padrón de RCVE; 347 Ejecución; 350 Entregable: Control de omisos con padrón de RCVE-Desarrolado; 353 Entregable: Control de omisos con padrón de RCVE-QA; 356 Entregable: Control de omisos con padrón de RCVE- Implementado; 357 Cierre; 358 Realizar el Acta de Aprobación de Control de omisos con padrón de RCVE; 361 Reporte de consistencia del crédito presentado en el RCE con el Declara Fácil IGV Renta Mensual; 366 Reemplazo de PDT por Declara Fácil con propuesta de DJ; 367 Planificación; 368 Levantamiento de Requerimientos de Reemplazo de PDT por Declara Fácil con propuesta de DJ; 369 Entregable: Documento de Requerimientos de Reemplazo de PDT por Declara Fácil con propuesta de DJ; 370 Ejecución; 372 Desarrollar Reemplazo de PDT por Declara Fácil con propuesta de DJ; 373 Entregable: Reemplazo de PDT por Declara Fácil con propuesta de DJ-Desarrolado; 375 CC Reemplazo de PDT por Declara Fácil con propuesta de DJ; 376 Entregable: Reemplazo de PDT por Declara Fácil con propuesta de DJ-QA; 378 Implementar Reemplazo de PDT por Declara Fácil con propuesta de DJ; 379 Entregable: Reemplazo de PDT por Declara Fácil con propuesta de DJ- Implementado; 380 Cierre; 381 Realizar el Acta de Aprobación de Reemplazo de PDT por Declara Fácil con propuesta de DJ; 382 Entregable: Acta de Aprobación de Reemplazo de PDT por Declara Fácil con propuesta de DJ; 383 Reporte de consistencia del crédito presentado en el RCE con el Declara Fácil IGV Renta Mensual; 384 Planificación; 385 Levantamiento de Requerimientos de Reporte de consistencia del crédito presentado en el RCE con el Declara Fácil IGV Renta Mensual; 386 Entregable: Documento de Requerimientos de Reporte de consistencia del crédito presentado en el RCE con el Declara Fácil IGV Renta Mensual; 387 Ejecución; 389 Desarrollar Reporte de consistencia del crédito presentado en el RCE con el Declara Fácil IGV Renta Mensual; 390 Entregable: Reporte de consistencia del crédito presentado en el RCE con el Declara Fácil IGV Renta Mensual-Desarrolado; 392 CC Reporte de consistencia del crédito presentado en el RCE con el Declara Fácil IGV Renta Mensual; 393 Entregable: Reporte de consistencia del crédito presentado en el RCE con el Declara Fácil IGV Renta Mensual-QA; 395 Implementar Reporte de consistencia del crédito presentado en el RCE con el Declara Fácil IGV Renta Mensual; 396 Entregable: Reporte de consistencia del crédito presentado en el RCE con el Declara Fácil IGV Renta Mensual- Implementado; 397 Cierre; 398 Realizar el Acta de Aprobación de Reporte de consistencia del crédito presentado en el RCE con el Declara Fácil IGV Renta Mensual; 399 Entregable: Acta de Aprobación de Reporte de consistencia del crédito presentado en el RCE con el Declara Fácil IGV Renta Mensual; 401 Planificación; 402 Levantamiento de Requerimientos de Determinación de omisos a la DJ del IGV Renta Mensual; 403 Entregable: Documento de Requerimientos de Determinación de omisos a la DJ del IGV Renta Mensual; 404 Ejecución; 406 Desarrollar Determinación de omisos a la DJ del IGV Renta Mensual; 407 Entregable: Determinación de omisos a la DJ del IGV Renta Mensual-Desarrolado; 409 CC Determinación de omisos a la DJ del IGV Renta Mensual; 410 Entregable: Determinación de omisos a la DJ del IGV Renta Mensual-QA; 412 Implementar Determinación de omisos a la DJ del IGV Renta Mensual; 413 Entregable: Determinación de omisos a la DJ del IGV Renta Mensual- Implementado; 414 Cierre; 415 Realizar el Acta de Aprobación de Determinación de omisos a la DJ del IGV Renta Mensual; 416 Entregable: Acta de Aprobación de Determinación de omisos a la DJ del IGV Renta Mensual; 418 Planificación; 419 Levantamiento de Requerimientos de Actualización en línea de las presentaciones de DJ - MEPECO; 420 Entregable: Documento de Requerimientos de Actualización en línea de las presentaciones de DJ - MEPECO; 421 Ejecución; 423 Desarrollar Actualización en línea de las presentaciones de DJ - MEPECO; 424 Entregable: Actualización en línea de las presentaciones de DJ - MEPECO-Desarrolado; 426 CC Actualización en línea de las presentaciones de DJ - MEPECO; 427 Entregable: Actualización en línea de las presentaciones de DJ - MEPECO-QA; 429 Implementar Actualización en línea de las presentaciones de DJ - MEPECO; 430 Entregable: Actualización en línea de las presentaciones de DJ - MEPECO- Implementado; 431 Cierre; 432 Realizar el Acta de Aprobación de Actualización en línea de las presentaciones de DJ - MEPECO; 433 Entregable: Acta de Aprobación de Actualización en línea de las presentaciones de DJ - MEPECO; 435 Planificación; 436 Levantamiento de Requerimientos de Determinación de omisos a la DDJJ IGV Renta Mensual - Comprobante Único; 437 Entregable: Determinación de omisos a la DDJJ IGV Renta Mensual - Comprobante Único; 438 Ejecución; 440 Desarrollar Determinación de omisos a la DDJJ IGV Renta Mensual - Comprobante Único; 441 Entregable: Determinación de omisos a la DDJJ IGV Renta Mensual - Comprobante Único-Desarrolado; 443 CC Determinación de omisos a la DDJJ IGV Renta Mensual - Comprobante Único; 444 Entregable: Determinación de omisos a la DDJJ IGV Renta Mensual - Comprobante Único-QA; 446 Implementar Determinación de omisos a la DDJJ IGV Renta Mensual - Comprobante Único; 447 Entregable: Determinación de omisos a la DDJJ IGV Renta Mensual - Comprobante Único- Implementado; 448 Cierre; 449 Realizar el Acta de Aprobación de Determinación de omisos a la DDJJ IGV Renta Mensual - Comprobante Único; 450 Entregable: Acta de Aprobación de Determinación de omisos a la DDJJ IGV Renta Mensual - Comprobante Único; 451 Fiscalización: Gestión Masiva de Inconsistencias; 452 Programa de Gestión Masiva de Inconsistencias; 453 Planificación; 454 Levantamiento de Requerimientos de Programa de Gestión Masiva de Inconsistencias; 455 Entregable: Documento de Requerimientos de Programa de Gestión Masiva de Inconsistencias; 456 Ejecución; 458 Desarrollar Programa de Gestión Masiva de Inconsistencias; 459 Entregable: Programa de Gestión Masiva de Inconsistencias-Desarrolado; 461 CC Programa de Gestión Masiva de Inconsistencias; 462 Entregable: Programa de Gestión Masiva de Inconsistencias-QA; 464 Implementar Programa de Gestión Masiva de Inconsistencias; 465 Entregable: Programa de Gestión Masiva de Inconsistencias- Implementado; 466 Cierre; 467 Realizar el Acta de Aprobación de Programa de Gestión Masiva de Inconsistencias; 468 Entregable: Acta de Aprobación de Programa de Gestión Masiva de Inconsistencias; 470 Planificación; 471 Levantamiento de Requerimientos de Nuevo CCV que integra el Gema WEB; 472 Entregable: Documento de Requerimientos de Nuevo CCV que integra el Gema WEB; 473 Ejecución; 475 Desarrollar Nuevo CCV que integra el Gema WEB; 476 Entregable: Nuevo CCV que integra el Gema WEB-Desarrolado; 478 CC Nuevo CCV que integra el Gema WEB; 479 Entregable: Nuevo CCV que integra el Gema WEB-QA; 481 Implementar Nuevo CCV que integra el Gema WEB; 482 Entregable: Nuevo CCV que integra el Gema WEB- Implementado; 483 Cierre; 484 Realizar el Acta de Aprobación de Nuevo CCV que integra el Gema WEB; 485 Entregable: Acta de Aprobación de Nuevo CCV que integra el Gema WEB; 487 Planificación; 488 Levantamiento de Requerimientos de Utilización del CRM como soporte a las campañas de gestión inductiva; 489 Entregable: Documento de Requerimientos de Utilización del CRM como soporte a las campañas de gestión inductiva; 490 Ejecución; 492 Desarrollar Utilización del CRM como soporte a las campañas de gestión inductiva; 493 Entregable: Utilización del CRM como soporte a las campañas de gestión inductiva-Desarrolado; 495 Verificar Utilización del CRM como soporte a las campañas de gestión inductiva; 496 Entregable: Utilización del CRM como soporte a las campañas de gestión inductiva-QA; 498 Implementar Utilización del CRM como soporte a las campañas de gestión inductiva; 499 Entregable: Utilización del CRM como soporte a las campañas de gestión inductiva- Implementado; 500 Cierre; 501 Realizar el Acta de Aprobación de Utilización del CRM como soporte a las campañas de gestión inductiva; 502 Entregable: Acta de Aprobación de Utilización del CRM como soporte a las campañas de gestión inductiva; 504 Planificación; 505 Levantamiento de Requerimientos de SINE para las carta inductivas y esquelas; 506 Entregable: Documento de Requerimientos de SINE para las carta inductivas y esquelas; 507 Ejecución; 509 Desarrollar SINE para las carta inductivas y esquelas; 510 Entregable: SINE para las carta inductivas y esquelas-Desarrolado; 511 Control de Calidad; 512 Verificar SINE para las carta inductivas y esquelas; 513 Entregable: SINE para las carta inductivas y esquelas-QA; 514 Implantación; 515 Implementar SINE para las carta inductivas y esquelas; 516 Entregable: SINE para las carta inductivas y esquelas- Implementado; 517 Cierre; 518 Realizar el Acta de Aprobación de SINE para las carta inductivas y esquelas; 519 Entregable: Acta de Aprobación de SINE para las carta inductivas y esquelas; 521 Planificación; 522 Levantamiento de Requerimientos de SIEV para la gestión inductiva; 523 Entregable: Documento de Requerimientos de SIEV para la gestión inductiva; 524 Ejecución; 525 Desarrollo; 526 Desarrollar SIEV para la gestión inductiva; 527 Entregable: SIEV para la gestión inductiva-Desarrolado; 528 Control de Calidad; 529 Verificar SIEV para la gestión inductiva; 530 Entregable: SIEV para la gestión inductiva-QA; 531 Implantación; 532 Implementar SIEV para la gestión inductiva; 533 Entregable: SIEV para la gestión inductiva- Implementado; 534 Cierre; 535 Realizar el Acta de Aprobación de SIEV para la gestión inductiva; 536 Entregable: Acta de Aprobación de SIEV para la gestión inductiva; 537 Seleccionar contribuyentes para el Control del IGV; 538 Planificación; 539 Levantamiento de Requerimientos de Seleccionar contribuyentes para el Control del IGV; 540 Entregable: Documento de Requerimientos de Seleccionar contribuyentes para el Control del IGV; 541 Ejecución; 542 Desarrollo; 543 Desarrollar Seleccionar contribuyentes para el Control del IGV; 544 Entregable: Seleccionar contribuyentes para el Control del IGV-Desarrolado; 545 Control de Calidad; 546 Realizar Pruebas de Seleccionar contribuyentes para el Control del IGV; 547 Entregable: Seleccionar contribuyentes para el Control del IGV-QA; 548 Implantación; 549 Implementar Seleccionar contribuyentes para el Control del IGV; 550 Entregable: Seleccionar contribuyentes para el Control del IGV- Implementado; 551 Cierre; 552 Realizar el Acta de Aprobación de Seleccionar contribuyentes para el Control del IGV; 553 Entregable: Acta de Aprobación de Seleccionar contribuyentes para el Control del IGV; 554 Seleccionar contribuyentes para el Control del incremento patrimonial no justificado; 555 Planificación; 556 Levantamiento de Requerimientos de Seleccionar contribuyentes para el Control del incremento patrimonial no justificado; 557 Entregable: Documento de Requerimientos de Seleccionar contribuyentes para el Control del incremento patrimonial no justificado; 558 Ejecución; 559 Desarrollo; 560 Desarrollar Seleccionar contribuyentes para el Control del incremento patrimonial no justificado; 561 Entregable: Seleccionar contribuyentes para el Control del incremento patrimonial no justificado-Desarrolado; 562 Control de Calidad; 563 Realizar pruebas de Seleccionar contribuyentes para el Control del incremento patrimonial no justificado; 564 Entregable: Seleccionar contribuyentes para el Control del incremento patrimonial no justificado-QA; 565 Implantación; 566 Implementar Seleccionar contribuyentes para el Control del incremento patrimonial no justificado; 567 Entregable: Seleccionar contribuyentes para el Control del incremento patrimonial no justificado- Implementado; 568 Cierre; 569 Realizar el Acta de Aprobación de Seleccionar contribuyentes para el Control del incremento patrimonial no justificado; 570 Entregable: Acta de Aprobación de Seleccionar contribuyentes para el Control del incremento patrimonial no justificado; 572 Planificación; 573 Levantamiento de Requerimientos de Perfil para seleccionar Accion masiva; 574 Entregable: Documento de Requerimientos de Perfil para seleccionar Accion masiva; 575 Ejecución; 576 Desarrollo; 577 Desarrollar Perfil para seleccionar Accion masiva; 578 Entregable: Perfil para seleccionar Accion masiva-Desarrolado; 579 Control de Calidad; 580 Realizar pruebas de Perfil para seleccionar Accion masiva; 581 Entregable: Perfil para seleccionar Accion masiva-QA; 582 Implantación; 583 Implementar Perfil para seleccionar Accion masiva; 584 Entregable: Perfil para seleccionar Accion masiva- Implementado; 585 Cierre; 586 Realizar el Acta de Aprobación de Perfil para seleccionar Accion masiva; 587 Entregable: Acta de Aprobación de Perfil para seleccionar Accion masiva; 590 Planificación; 591 Levantamiento de Requerimientos de Piloto de fiscalización parcial electrónica de comprobantes duplicados; 592 Entregable: Documento de Requerimientos de Piloto de fiscalización parcial electrónica de comprobantes duplicados; 593 Ejecución; 594 Desarrollo; 595 Desarrollar Piloto de fiscalización parcial electrónica de comprobantes duplicados; 596 Entregable: Piloto de fiscalización parcial electrónica de comprobantes duplicados-Desarrolado; 597 Control de Calidad; 598 Realizar pruebas de Piloto de fiscalización parcial electrónica de comprobantes duplicados; 599 Entregable: Piloto de fiscalización parcial electrónica de comprobantes duplicados-QA; 600 Implantación; 601 Implementar Piloto de fiscalización parcial electrónica de comprobantes duplicados; 603 Cierre; 604 Realizar el Acta de Aprobación de Piloto de fiscalización parcial electrónica de comprobantes duplicados; 605 Entregable: Acta de Aprobación de Piloto de fiscalización parcial electrónica de comprobantes duplicados; 607 Planificación; 608 Levantamiento de Requerimientos de Fiscalización parcial electrónica de diferencias entre RCVE y DJ de IGV; 609 Entregable: Documento de Requerimientos de Fiscalización parcial electrónica de diferencias entre RCVE y DJ de IGV; 610 Ejecución; 611 Desarrollo; 612 Desarrollar Fiscalización parcial electrónica de diferencias entre RCVE y DJ de IGV; 613 Entregable: Fiscalización parcial electrónica de diferencias entre RCVE y DJ de IGV; 614 Control de Calidad; 615 Realizar pruebas de Fiscalización parcial electrónica de diferencias entre RCVE y DJ de IGV; 616 Entregable: Fiscalización parcial electrónica de diferencias entre RCVE y DJ de IGV-QA; 617 Implantación; 618 Implementar Fiscalización parcial electrónica de diferencias entre RCVE y DJ de IGV; 620 Cierre; 621 Realizar el Acta de Aprobación de Fiscalización parcial electrónica de diferencias entre RCVE y DJ de IGV; 622 Entregable: Acta de Aprobación de Fiscalización parcial electrónica de diferencias entre RCVE y DJ de IGV

Changed:

| ID | Task | Start | Finish | Duration | Complete | Total float | Predecessors | Other |
| --- | --- | --- | --- | --- | --- | --- | --- | --- |
| 1 | **Control Electrónico del IGV** | 2014-03-03 A → 2018-04-23 A (+1512d) | 2018-07-16 → 2018-11-22 (+129d) | 1140d? → 153d | 2% → 11% |  |  |  |
| 2 | **Gestión del Proyecto** | 2014-03-03 → 2018-04-23 A (+1512d) | 2018-04-27 → 2018-08-31 (+126d) | 1085d → 93.25d | 0% → 63% | 55d → 59.75d |  |  |
| 3 | **Iniciación** | 2018-04-23 A | 2018-04-23 → 2018-05-02 A (+9d) | 0.5d → 6.25d | 0% → 100% | 55d → none |  |  |
| 4 | **Project Charter** | 2018-04-23 A | 2018-04-23 → 2018-04-24 A (+1d) | 0.5d → 1.12d | 0% → 100% | 59.5d → none |  |  |
| 5 | Elaborar el Project Charter | 2018-04-23 A | 2018-04-23 A | 3h → 1d | 0% → 100% | 59.5d → none |  | resources none → JANTON |
| 6 | Revisar el Project Charter | 2018-04-23 → 2018-04-24 A (+1d) | 2018-04-23 → 2018-04-24 A (+1d) |  | 0% → 100% | 59.5d → none |  | resources none → JANTON |
| 7 | **Scope Statement** | 2018-04-23 → 2018-04-24 A (+1d) | 2018-04-23 → 2018-05-02 A (+9d) | 0.5d → 5.12d | 0% → 100% | 55d → none |  |  |
| 8 | Elaborar el Scope Statement | 2018-04-23 → 2018-04-24 A (+1d) | 2018-04-23 → 2018-05-02 A (+9d) | 3h → 5d | 0% → 100% | 55d → none | none → 6 | resources none → JANTON |
| 9 | Revisar el Scope Statement | 2018-04-23 → 2018-05-02 A (+9d) | 2018-04-23 → 2018-05-02 A (+9d) |  | 0% → 100% | 55d → none |  | resources none → JANTON |
| 10 | **Plan de Proyecto** | 2018-04-23 → 2018-05-02 A (+9d) | 2018-04-27 → 2018-05-07 A (+10d) | 4.5d → 3d | 0% → 100% | 55d → none |  |  |
| 11 | Elaborar el Plan de Proyecto | 2018-04-23 → 2018-05-02 A (+9d) | 2018-04-27 → 2018-05-07 A (+10d) | 36h → 3d | 0% → 100% | 55d → none |  | resources none → JANTON |
| 12 | **Informes de Estado del Proyecto** | 2014-03-03 → 2018-05-18 A (+1537d) | 2014-06-09 → 2018-08-28 (+1541d) | 70.12d → 72.12d | 0% → 18% | 1069.88d → 62.38d |  |  |
| 13 | Informes de Estado del Proyecto 1 | 2014-03-03 → 2018-05-18 A (+1537d) | 2014-03-03 → 2018-05-18 A (+1537d) | 1h → 3h | 0% → 100% | 1139.88d → none | none → 5FS+17d | resources none → JANTON |
| 14 | Informes de Estado del Proyecto 2 | 2014-03-10 → 2018-05-25 (+1537d) | 2014-03-10 → 2018-05-25 (+1537d) |  |  | 1134.88d → 62.38d | none → 13FS+5d | resources none → JANTON |
| 15 | Informes de Estado del Proyecto 3 | 2014-03-17 → 2018-06-01 (+1537d) | 2014-03-17 → 2018-06-01 (+1537d) |  |  | 1129.88d → 62.38d | none → 14FS+5d | resources none → JANTON |
| 16 | Informes de Estado del Proyecto 4 | 2014-03-24 → 2018-06-08 (+1537d) | 2014-03-24 → 2018-06-08 (+1537d) |  |  | 1124.88d → 62.38d | none → 15FS+5d | resources none → JANTON |
| 17 | Informes de Estado del Proyecto 5 | 2014-03-31 → 2018-06-15 (+1537d) | 2014-03-31 → 2018-06-15 (+1537d) |  |  | 1119.88d → 62.38d | none → 16FS+5d | resources none → JANTON |
| 18 | Informes de Estado del Proyecto 6 | 2014-04-07 → 2018-06-22 (+1537d) | 2014-04-07 → 2018-06-22 (+1537d) |  |  | 1114.88d → 62.38d | none → 17FS+5d | resources none → JANTON |
| 19 | Informes de Estado del Proyecto 7 | 2014-04-14 → 2018-07-02 (+1540d) | 2014-04-14 → 2018-07-02 (+1540d) |  |  | 1109.88d → 62.38d | none → 18FS+5d | resources none → JANTON |
| 20 | Informes de Estado del Proyecto 8 | 2014-04-21 → 2018-07-09 (+1540d) | 2014-04-21 → 2018-07-09 (+1540d) |  |  | 1104.88d → 62.38d | none → 19FS+5d | resources none → JANTON |
| 21 | Informes de Estado del Proyecto 9 | 2014-04-28 → 2018-07-16 (+1540d) | 2014-04-28 → 2018-07-16 (+1540d) |  |  | 1099.88d → 62.38d | none → 20FS+5d | resources none → JANTON |
| 22 | Informes de Estado del Proyecto 10 | 2014-05-05 → 2018-07-23 (+1540d) | 2014-05-05 → 2018-07-23 (+1540d) |  |  | 1094.88d → 62.38d | none → 21FS+5d | resources none → JANTON |
| 23 | Informes de Estado del Proyecto 11 | 2014-05-12 → 2018-07-30 (+1540d) | 2014-05-12 → 2018-07-30 (+1540d) |  |  | 1089.88d → 62.38d | none → 22FS+5d | resources none → JANTON |
| 24 | Informes de Estado del Proyecto 12 | 2014-05-19 → 2018-08-06 (+1540d) | 2014-05-19 → 2018-08-06 (+1540d) |  |  | 1084.88d → 62.38d | none → 23FS+5d | resources none → JANTON |
| 25 | Informes de Estado del Proyecto 13 | 2014-05-26 → 2018-08-13 (+1540d) | 2014-05-26 → 2018-08-13 (+1540d) |  |  | 1079.38d → 62.38d | none → 24FS+5d | resources none → JANTON |
| 26 | Informes de Estado del Proyecto 14 | 2014-06-02 → 2018-08-20 (+1540d) | 2014-06-02 → 2018-08-20 (+1540d) |  |  | 1074.88d → 62.38d | none → 25FS+5d | resources none → JANTON |
| 27 | Informes de Estado del Proyecto 15 | 2014-06-09 → 2018-08-28 (+1541d) | 2014-06-09 → 2018-08-28 (+1541d) |  |  | 1069.88d → 62.38d | none → 26FS+5d | resources none → JANTON |
| 28 | **Reunión de Coordinación Semanal** | 2014-03-03 → 2018-05-21 A (+1540d) | 2014-06-09 → 2018-08-30 (+1543d) | 70.12d → 73.75d | 0% → 7% | 1069.88d → 59.75d |  |  |
| 29 | Reunión de Coordinación Semanal 1 | 2014-03-03 → 2018-05-21 A (+1540d) | 2014-03-03 → 2018-05-21 A (+1540d) | 1h → 2h | 0% → 100% | 1139.88d → none | none → 5FS+18d | resources none → JANTON |
| 30 | Reunión de Coordinación Semanal 2 | 2014-03-10 → 2018-05-28 (+1540d) | 2014-03-10 → 2018-05-28 (+1540d) | 1h → 2h |  | 1134.88d → 59.75d | none → 29FS+5d | resources none → JANTON |
| 31 | Reunión de Coordinación Semanal 3 | 2014-03-17 → 2018-06-04 (+1540d) | 2014-03-17 → 2018-06-04 (+1540d) | 1h → 2h |  | 1129.88d → 59.75d | none → 30FS+5d | resources none → JANTON |
| 32 | Reunión de Coordinación Semanal 4 | 2014-03-24 → 2018-06-11 (+1540d) | 2014-03-24 → 2018-06-11 (+1540d) | 1h → 2h |  | 1124.88d → 59.75d | none → 31FS+5d | resources none → JANTON |
| 33 | Reunión de Coordinación Semanal 5 | 2014-03-31 → 2018-06-19 (+1541d) | 2014-03-31 → 2018-06-19 (+1541d) | 1h → 2h |  | 1119.88d → 59.75d | none → 32FS+5d | resources none → JANTON |
| 34 | Reunión de Coordinación Semanal 6 | 2014-04-07 → 2018-06-26 (+1541d) | 2014-04-07 → 2018-06-26 (+1541d) | 1h → 2h |  | 1114.88d → 59.75d | none → 33FS+5d | resources none → JANTON |
| 35 | Reunión de Coordinación Semanal 7 | 2014-04-14 → 2018-07-03 (+1541d) | 2014-04-14 → 2018-07-03 (+1541d) | 1h → 2h |  | 1109.88d → 59.75d | none → 34FS+5d | resources none → JANTON |
| 36 | Reunión de Coordinación Semanal 8 | 2014-04-21 → 2018-07-10 (+1541d) | 2014-04-21 → 2018-07-10 (+1541d) | 1h → 2h |  | 1104.88d → 59.75d | none → 35FS+5d | resources none → JANTON |
| 37 | Reunión de Coordinación Semanal 9 | 2014-04-28 → 2018-07-18 (+1542d) | 2014-04-28 → 2018-07-18 (+1542d) | 1h → 2h |  | 1099.88d → 59.75d | none → 36FS+5d | resources none → JANTON |
| 38 | Reunión de Coordinación Semanal 10 | 2014-05-05 → 2018-07-25 (+1542d) | 2014-05-05 → 2018-07-25 (+1542d) | 1h → 2h |  | 1094.88d → 59.75d | none → 37FS+5d | resources none → JANTON |
| 39 | Reunión de Coordinación Semanal 11 | 2014-05-12 → 2018-08-01 (+1542d) | 2014-05-12 → 2018-08-01 (+1542d) | 1h → 2h |  | 1089.88d → 59.75d | none → 38FS+5d | resources none → JANTON |
| 40 | Reunión de Coordinación Semanal 12 | 2014-05-19 → 2018-08-08 (+1542d) | 2014-05-19 → 2018-08-08 (+1542d) | 1h → 2h |  | 1084.88d → 59.75d | none → 39FS+5d | resources none → JANTON |
| 41 | Reunión de Coordinación Semanal 13 | 2014-05-26 → 2018-08-16 (+1543d) | 2014-05-26 → 2018-08-16 (+1543d) | 1h → 2h |  | 1079.38d → 59.75d | none → 40FS+5d | resources none → JANTON |
| 42 | Reunión de Coordinación Semanal 14 | 2014-06-02 → 2018-08-23 (+1543d) | 2014-06-02 → 2018-08-23 (+1543d) | 1h → 2h |  | 1074.88d → 59.75d | none → 41FS+5d | resources none → JANTON |
| 43 | Reunión de Coordinación Semanal 15 | 2014-06-09 → 2018-08-30 (+1543d) | 2014-06-09 → 2018-08-30 (+1543d) | 1h → 2h |  | 1069.88d → 59.75d | none → 42FS+5d | resources none → JANTON |
| 44 | **Cierre del Proyecto** | 2014-05-26 → 2018-08-30 (+1557d) | 2014-05-26 → 2018-08-31 (+1558d) |  |  | 1079.38d → 59.75d |  |  |
| 45 | Elaborar Documentos de Cierre del Proyecto | 2014-05-26 → 2018-08-30 (+1557d) | 2014-05-26 → 2018-08-31 (+1558d) |  |  | 1079.38d → 59.75d | 25, 41 → 27, 43 |  |
| 46 | **Disponibilidad de Información** | 2018-04-23 A → 2018-04-23 | 2018-06-21 → 2018-06-19 (-2d) | 42.5d → 41d | 31% → 0% | 17.5d → 112d |  |  |
| 47 | **Control de Calidad** | 2018-04-23 A → 2018-04-23 |  |  | 32% → 0% | 17.5d → 112d |  |  |
| 48 | Revisar Modelo de IGV - Teradata | 2018-04-23 A → 2018-04-23 | 2018-04-30 A → 2018-04-30 |  | 100% → 0% | none → 147d |  |  |
| 49 | Revisar Modelo de PN – Teradata | 2018-05-02 A → 2018-04-23 (-9d) |  | 35d → 41d | 20% → 0% | 17.5d → 112d | 48 → none |  |
| 50 | **Implantación** | 2018-06-20 A → 2018-04-30 (-51d) | 2018-06-20 → 2018-06-19 (-1d) | 0.5d → 36d | 50% → 0% | 17.5d → 112d |  |  |
| 51 | Modelo de IGV - Teradata | 2018-06-20 A → 2018-04-30 (-51d) | 2018-06-20 A → 2018-04-30 (-51d) | 0.5d → 1d | 100% → 0% | none → 147d | Entregable: Modelo del IGV y PN -Teradata -QA → 48FS-1d |  |
| 52 | Modelo de PN – Teradata | 2018-06-20 → 2018-06-19 (-1d) | 2018-06-20 → 2018-06-19 (-1d) | 0.5d → 1d |  | 17.5d → 112d | Entregable: Modelo del IGV y PN -Teradata -QA → 49FS-1d |  |
| 53 | Entregable: Modelo del IGV y PN -Teradata - Implementado | 2018-06-20 → 2018-06-19 (-1d) | 2018-06-20 → 2018-06-19 (-1d) |  |  | 17.5d → 112d | 52 → 52, 51 |  |
| 54 | **Gestión de Riesgo del Cumplimiento Tributario del IGV** | 2018-04-23 A | 2018-07-16 → 2018-06-29 (-17d) | 60d → 49d | 0% → 51% | 0d → 104d |  |  |
| 59 | Ambiente Calidad |  |  |  |  | 34d → 127d |  | resources DAIA; DGIT; DAT → DAIA-1; DGIT-1; DAT-1 |
| 63 | Ambiente de Calidad |  |  |  |  | 34d → 127d |  | resources DAIA; DGIT; DAT → DAIA-1; DGIT-1; DAT-1 |
| 67 | **Desarrollo** | 2018-04-23 A | 2018-05-28 → 2018-05-25 (-3d) | 25d → 24d | 0% → 83% | 3d → 104d |  |  |
| 68 | Matriz PRC - Variable de Condición de Domicilio - Estado del Contribuyente | 2018-04-23 A | 2018-05-28 → 2018-05-18 A (-10d) | 25d → 19d | 0% → 100% | 3d → none |  |  |
| 69 | Matriz PRC - Variable de Omiso a la Declaración MEPECO | 2018-04-23 A | 2018-05-28 → 2018-05-18 A (-10d) | 25d → 19d | 0% → 100% | 3d → none |  | resources none → KAVILES |
| 70 | Matriz PRC - Variable de Omiso a la Declaración PRICO | 2018-04-23 A | 2018-05-28 → 2018-05-18 A (-10d) | 25d → 19d | 0% → 100% | 3d → none |  |  |
| 71 | Matriz PRC - Variable Omisos Libros Electrónicos - Padrón acotado | 2018-04-23 A | 2018-05-28 → 2018-05-18 A (-10d) | 25d → 19d | 0% → 100% | 3d → none |  | resources none → VMENDIETA |
| 72 | Matriz PRC - Servicio de Perfil | 2018-04-23 A | 2018-05-18 A |  | 0% → 100% | 9d → none |  |  |
| 74 | Matriz PRC - Variable de Condición de Domicilio - Estado del Contribuyente | 2018-05-29 → 2018-05-21 A (-8d) | 2018-07-09 → 2018-05-25 (-45d) | 30d → 5d | 0% → 20% | 3d → 104d |  | resources MPURILLA → WGALINDEZ |
| 75 | Matriz PRC - Variable de Omiso a la Declaración MEPECO | 2018-05-29 → 2018-05-21 A (-8d) | 2018-07-09 → 2018-05-25 (-45d) | 30d → 5d | 0% → 20% | 3d → 104d | Actualización de la omisión desde la tabla de variables cuando Llega la DJ → 69 | resources MPURILLA-1 → KAVILES |
| 76 | Matriz PRC - Variable de Omiso a la Declaración PRICO | 2018-05-29 → 2018-05-21 A (-8d) | 2018-07-09 → 2018-05-25 (-45d) | 30d → 5d | 0% → 20% | 3d → 104d |  | resources PESPINOZA → EYATACO |
| 77 | Matriz PRC - Variable Omisos Libros Electrónicos - Padrón acotado | 2018-05-29 → 2018-05-21 A (-8d) | 2018-07-09 → 2018-05-25 (-45d) | 30d → 5d | 0% → 20% | 3d → 104d | Los ajustes a la emisión electrónica basada en el perfil. → 71 | resources AREYES → VMENDIETA |
| 78 | Matriz PRC - Servicio de Perfil | 2018-05-21 A | 2018-06-29 → 2018-05-25 (-35d) | 30d → 5d | 0% → 20% | 9d → 104d |  | resources MPURILLA-2 → JQUENTA |
| 79 | **Control de Calidad** | 2018-05-21 → 2018-05-28 (+7d) | 2018-07-09 → 2018-06-28 (-11d) | 36d → 24d |  | 3d → 104d |  |  |
| 81 | **Implantación** | 2018-07-10 → 2018-06-29 (-11d) | 2018-07-10 → 2018-06-29 (-11d) |  |  | 3d → 104d |  |  |
| 82 | Instalación de Matriz de Riesgos del Contribuyente | 2018-07-10 → 2018-06-29 (-11d) | 2018-07-10 → 2018-06-29 (-11d) |  |  | 3d → 104d | Entregable: Matriz de Riesgos del Contrinuyente - QA → 80 | was named Insatación de Matriz de Riesgos del Contribuyente; resources none → OPERACIONES |

| ID | Task | Start | Finish | Duration | Complete | Total float | Predecessors | Other |
| --- | --- | --- | --- | --- | --- | --- | --- | --- |
| 83 | Entregable: Matriz de Riesgos del Contribuyente -Implementada | 2018-07-11 → 2018-06-29 (-12d) | 2018-07-11 → 2018-06-29 (-12d) |  |  | 3d → 104d | Matriz de Riesgos del Contribuyente → 82 | was named Entregable: Matriz de Riesgos del Contrinuyente -Implementada |
| 84 | **Actualizar vinculaciones a los ONR** | 2018-04-23 A | 2018-04-24 → 2018-04-26 (+2d) | 2d → 4d | 0% → 80% | 58d → 149d |  |  |
| 85 | **Análisis** | 2018-04-23 A |  |  | 0% → 50% | 59d → 152d |  | was named Planificación |
| 87 | Elaboración del F2-AR1 | 2018-04-23 A | 2018-04-23 A |  | 0% → 100% | 59d → none | none → 86 | was named Levantamiento de Requerimientos de Actualizar vinculaciones a los ONR; resources none → CQUENTA |
| 88 | **Desarrollo** | 2018-04-23 → 2018-04-24 A (+1d) | 2018-04-23 → 2018-04-24 A (+1d) |  | 0% → 100% | 59d → none |  |  |
| 89 | Desarrollar Actualizar vinculaciones a los ONR | 2018-04-23 → 2018-04-24 A (+1d) | 2018-04-23 → 2018-04-24 A (+1d) |  | 0% → 100% | 59d → none | none → 87 | resources none → CQUENTA |
| 90 | **Control de Calidad** | 2018-04-23 → 2018-04-25 A (+2d) | 2018-04-23 → 2018-04-25 A (+2d) |  | 0% → 100% | 59d → none |  |  |
| 91 | Actualizar vinculaciones a los ONR | 2018-04-23 → 2018-04-25 A (+2d) | 2018-04-23 → 2018-04-25 A (+2d) |  | 0% → 100% | 59d → none | none → 89 | was named CC Actualizar vinculaciones a los ONR; resources none → CQUENTA |
| 92 | **Implantación** | 2018-04-23 → 2018-04-26 A (+3d) | 2018-04-23 → 2018-04-26 A (+3d) |  | 0% → 100% | 59d → none |  |  |
| 93 | Implementar Actualizar vinculaciones a los ONR | 2018-04-23 → 2018-04-26 A (+3d) | 2018-04-23 → 2018-04-26 A (+3d) |  | 0% → 100% | 59d → none | none → 91 | resources none → CQUENTA |
| 94 | Entregable: Acta de Aprobación de Actualizar vinculaciones a los ONR - Implementada | 2018-04-23 → 2018-04-26 A (+3d) | 2018-04-23 → 2018-04-26 A (+3d) |  | 0% → 100% | 60d → none | none → 93 | was named Entregable: Acta de Aprobación de Actualizar vinculaciones a los ONR; resources none → CQUENTA |
| 95 | **APP de Consulta de Cumplimiento Tributario del IGV** | 2018-04-23 A | 2018-04-23 A | 1d → 0d | 0% → 100% | 59d → none |  |  |
| 99 | **Actualización del Registro Único de Contribuyente** | 2018-04-23 → 2018-04-24 A (+1d) | 2018-04-23 → 2018-07-02 (+70d) | 1d? → 49d | 0% → 44% | 59d → 103d |  |  |
| 100 | **Campaña de Actualización email (configuración de 12 a 6 meses)** | 2018-04-23 → 2018-05-14 A (+21d) | 2018-04-23 → 2018-05-23 (+30d) | 1d? → 8d | 0% → 75% | 59d → 131d |  | was named Campaña de Actualización email |
| 101 | **Desarrollo** | 2018-04-23 → 2018-05-14 A (+21d) | 2018-04-23 → 2018-05-15 A (+22d) | 1d? → 2d | 0% → 100% | 59d → none |  |  |
| 102 | Campaña de Actualización email (configuración de 12 a 6 meses) | 2018-04-23 → 2018-05-14 A (+21d) | 2018-04-23 → 2018-05-15 A (+22d) | 1d? → 2d | 0% → 100% | 59d → none | none → 5FS+13d | was named Desarrollar Campaña de Actualización email; resources none → DDST1 |
| 103 | **Control de Calidad** | 2018-04-23 → 2018-05-16 A (+23d) | 2018-04-23 → 2018-05-22 (+29d) | 1d? → 5d | 0% → 80% | 59d → 131d |  |  |
| 104 | Campaña de Actualización email (configuración de 12 a 6 meses) | 2018-04-23 → 2018-05-16 A (+23d) | 2018-04-23 → 2018-05-22 (+29d) | 1d? → 5d | 0% → 80% | 59d → 131d | none → 102 | was named CC Campaña de Actualización email; resources none → DCC1 |
| 105 | **Implantación** | 2018-04-23 → 2018-05-23 (+30d) | 2018-04-23 → 2018-05-23 (+30d) | 1d? → 1d |  | 59d → 131d |  |  |
| 106 | Implementar Campaña de Actualización email (configuración de 12 a 6 meses) | 2018-04-23 → 2018-05-23 (+30d) | 2018-04-23 → 2018-05-23 (+30d) | 1d? → 1d |  | 59d → 131d | none → 104 | was named Implementar Campaña de Actualización email |
| 107 | Entregable: Acta de Aprobación de Campaña de Actualización email | 2018-04-23 → 2018-05-23 (+30d) | 2018-04-23 → 2018-05-23 (+30d) | 1d? → 0d |  | 59d → 131d | none → 106 |  |
| 108 | **Campaña de Actualización celular** | 2018-04-23 → 2018-04-24 A (+1d) | 2018-04-23 → 2018-07-02 (+70d) | 1d? → 49d | 0% → 39% | 59d → 103d |  |  |
| 109 | **Desarrollo** | 2018-04-23 → 2018-04-24 A (+1d) | 2018-04-23 → 2018-05-31 (+38d) | 1d? → 27d | 0% → 70% | 59d → 103d |  |  |
| 110 | Desarrollar Campaña de Actualización celular | 2018-04-23 → 2018-04-24 A (+1d) | 2018-04-23 → 2018-05-31 (+38d) | 1d? → 27d | 0% → 70% | 59d → 103d |  |  |
| 111 | **Control de Calidad** | 2018-04-23 → 2018-06-01 (+39d) | 2018-04-23 → 2018-06-29 (+67d) | 1d? → 21d |  | 59d → 103d |  |  |
| 112 | Campaña de Actualización celular | 2018-04-23 → 2018-06-01 (+39d) | 2018-04-23 → 2018-06-29 (+67d) | 1d? → 21d |  | 59d → 103d | none → 110 | was named CC Campaña de Actualización celular |
| 113 | **Implantación** | 2018-04-23 → 2018-07-02 (+70d) | 2018-04-23 → 2018-07-02 (+70d) | 1d? → 1d |  | 59d → 103d |  |  |
| 114 | Implementar Campaña de Actualización celular | 2018-04-23 → 2018-07-02 (+70d) | 2018-04-23 → 2018-07-02 (+70d) | 1d? → 1d |  | 59d → 103d | none → 112 |  |
| 115 | Entregable: Acta de Aprobación de Campaña de Actualización celular | 2018-04-23 → 2018-07-02 (+70d) | 2018-04-23 → 2018-07-02 (+70d) | 1d? → 0d |  | 59d → 103d | none → 114 |  |
| 116 | **Controles electrónicos a la autorización y emisión de CdP** | 2018-04-23 A | 2018-04-23 → 2018-08-01 (+100d) | 1d? → 72d |  | 59d → 81d |  |  |
| 117 | **Alertas de inconsistencias en el CPE** | 2018-04-23 A | 2018-04-23 → 2018-05-30 (+37d) | 1d? → 27d | 0% → 3% | 59d → 126d |  |  |
| 121 | **Desarrollo** | 2018-04-23 → 2018-04-24 A (+1d) | 2018-04-23 → 2018-05-18 (+25d) | 1d? → 18d | 0% → 6% | 59d → 126d |  |  |
| 122 | Desarrollar Alertas de inconsistencias en el CPE | 2018-04-23 → 2018-04-24 A (+1d) | 2018-04-23 → 2018-05-18 (+25d) | 1d? → 18d | 0% → 6% | 59d → 126d | none → 120 |  |
| 123 | **Control de Calidad** | 2018-04-23 → 2018-05-21 (+28d) | 2018-04-23 → 2018-05-30 (+37d) | 1d? → 8d |  | 59d → 126d |  |  |
| 124 | Alertas de inconsistencias en el CPE | 2018-04-23 → 2018-05-21 (+28d) | 2018-04-23 → 2018-05-30 (+37d) | 1d? → 8d |  | 59d → 126d | none → 122 | was named CC Alertas de inconsistencias en el CPE |
| 125 | **Implantación** | 2018-04-23 → 2018-05-30 (+37d) | 2018-04-23 → 2018-05-30 (+37d) | 1d? → 1d |  | 59d → 126d |  |  |
| 126 | Implementar Alertas de inconsistencias en el CPE | 2018-04-23 → 2018-05-30 (+37d) | 2018-04-23 → 2018-05-30 (+37d) | 1d? → 1d |  | 59d → 126d | none → 124FS-1d |  |
| 127 | Entregable: Acta de Aprobación de Alertas de inconsistencias en el CPE | 2018-04-23 → 2018-05-30 (+37d) | 2018-04-23 → 2018-05-30 (+37d) | 1d? → 0d |  | 59d → 126d | none → 126 |  |
| 128 | **Restricción a la Autorización de CdP** | 2018-04-23 → 2018-05-15 (+22d) | 2018-04-23 → 2018-07-02 (+70d) | 1d? → 35d |  | 59d → 103d |  |  |
| 129 | **Desarrollo** | 2018-04-23 → 2018-05-15 (+22d) | 2018-04-23 → 2018-06-01 (+39d) | 1d? → 14d |  | 59d → 103d |  |  |
| 130 | Desarrollar Restricción a la Autorización de CdP | 2018-04-23 → 2018-05-15 (+22d) | 2018-04-23 → 2018-06-01 (+39d) | 1d? → 14d |  | 59d → 103d | none → 5FS+14d |  |
| 131 | **Control de Calidad** | 2018-04-23 → 2018-06-04 (+42d) | 2018-04-23 → 2018-07-02 (+70d) | 1d? → 21d |  | 59d → 103d |  |  |
| 132 | Restricción a la Autorización de CdP | 2018-04-23 → 2018-06-04 (+42d) | 2018-04-23 → 2018-07-02 (+70d) | 1d? → 21d |  | 59d → 103d | none → 130 | was named CC Restricción a la Autorización de CdP |
| 133 | **Implantación** | 2018-04-23 → 2018-07-02 (+70d) | 2018-04-23 → 2018-07-02 (+70d) | 1d? → 1d |  | 59d → 103d |  |  |
| 134 | Implementar Restricción a la Autorización de CdP | 2018-04-23 → 2018-07-02 (+70d) | 2018-04-23 → 2018-07-02 (+70d) | 1d? → 1d |  | 59d → 103d | none → 132FS-1d |  |
| 135 | Entregable: Acta de Aprobación de Restricción a la Autorización de CdP | 2018-04-23 → 2018-07-02 (+70d) | 2018-04-23 → 2018-07-02 (+70d) | 1d? → 0d |  | 59d → 103d | none → 134 |  |
| 136 | **Limitación de CdP Autorizados** | 2018-04-23 → 2018-05-14 (+21d) | 2018-04-23 → 2018-06-28 (+66d) | 1d? → 33.62d |  | 59d → 105.38d |  |  |
| 138 | **Desarrollo** | 2018-04-23 → 2018-06-21 (+59d) | 2018-04-23 → 2018-06-21 (+59d) | 1d? → 1d |  | 59d → 109d |  |  |
| 139 | Desarrollar Limitación de CdP Autorizados | 2018-04-23 → 2018-06-21 (+59d) | 2018-04-23 → 2018-06-21 (+59d) | 1d? → 1d |  | 59d → 109d | none → 5FS+41d |  |
| 140 | **Control de Calidad** | 2018-04-23 → 2018-06-22 (+60d) | 2018-04-23 → 2018-06-22 (+60d) | 1d? → 1d |  | 59d → 109d |  |  |
| 141 | Limitación de CdP Autorizados | 2018-04-23 → 2018-06-22 (+60d) | 2018-04-23 → 2018-06-22 (+60d) | 1d? → 1d |  | 59d → 109d | none → 139 | was named CC Limitación de CdP Autorizados |
| 142 | **Implantación** | 2018-04-23 → 2018-06-22 (+60d) | 2018-04-23 → 2018-06-22 (+60d) | 1d? → 1d |  | 59d → 109d |  |  |
| 143 | Implementar Limitación de CdP Autorizados | 2018-04-23 → 2018-06-22 (+60d) | 2018-04-23 → 2018-06-22 (+60d) | 1d? → 1d |  | 59d → 109d | none → 141FS-1d |  |
| 150 | **Desarrollo** | 2018-04-23 → 2018-05-21 (+28d) | 2018-04-23 → 2018-06-19 (+57d) | 1d → 21.62d |  | 59d → 105.38d |  |  |
| 165 | **Restricción a la Emisión de CdP (web services)** |  | 2018-04-23 → 2018-04-25 (+2d) | 1d? → 3d |  | 59d → 150d |  |  |
| 166 | **Desarrollo** |  |  | 1d? → 1d |  | 59d → 150d |  |  |
| 167 | Desarrollar Restricción a la Emisión de CdP (web services) |  |  | 1d? → 1d |  | 59d → 150d |  |  |
| 168 | **Control de Calidad** | 2018-04-23 → 2018-04-24 (+1d) | 2018-04-23 → 2018-04-24 (+1d) | 1d? → 1d |  | 59d → 150d |  |  |
| 169 | CC Restricción a la Emisión de CdP (web services) | 2018-04-23 → 2018-04-24 (+1d) | 2018-04-23 → 2018-04-24 (+1d) | 1d? → 1d |  | 59d → 150d | none → 167 |  |
| 170 | **Implantación** | 2018-04-23 → 2018-04-25 (+2d) | 2018-04-23 → 2018-04-25 (+2d) | 1d? → 1d |  | 59d → 150d |  |  |
| 171 | Implementar Restricción a la Emisión de CdP (web services) | 2018-04-23 → 2018-04-25 (+2d) | 2018-04-23 → 2018-04-25 (+2d) | 1d? → 1d |  | 59d → 150d | none → 169 |  |
| 172 | Entregable: Acta de Aprobación de Restricción a la Emisión de CdP (web services) | 2018-04-23 → 2018-04-25 (+2d) | 2018-04-23 → 2018-04-25 (+2d) | 1d? → 0d |  | 59d → 150d | none → 171 |  |
| 173 | **Restricción a la Emisión de CPE** |  | 2018-04-23 → 2018-06-29 (+67d) | 1d? → 49d |  | 59d → 104d |  |  |
| 174 | **Desarrollo** |  | 2018-04-23 → 2018-05-18 (+25d) | 1d? → 19d |  | 59d → 104d |  |  |
| 175 | Desarrollar Restricción a la Emisión de CPE |  | 2018-04-23 → 2018-05-18 (+25d) | 1d? → 19d |  | 59d → 104d |  |  |
| 176 | **Control de Calidad** | 2018-04-23 → 2018-05-21 (+28d) | 2018-04-23 → 2018-06-29 (+67d) | 1d? → 30d |  | 59d → 104d |  |  |
| 177 | Restricción a la Emisión de CPE | 2018-04-23 → 2018-05-21 (+28d) | 2018-04-23 → 2018-06-29 (+67d) | 1d? → 30d |  | 59d → 104d | none → 175 | was named CC Restricción a la Emisión de CPE |
| 178 | **Implantación** | 2018-04-23 → 2018-06-29 (+67d) | 2018-04-23 → 2018-06-29 (+67d) | 1d? → 1d |  | 59d → 104d |  |  |
| 179 | Implementar Restricción a la Emisión de CPE | 2018-04-23 → 2018-06-29 (+67d) | 2018-04-23 → 2018-06-29 (+67d) | 1d? → 1d |  | 59d → 104d | none → 177FS-1d |  |
| 180 | Entregable: Acta de Aprobación de Restricción a la Emisión de CPE | 2018-04-23 → 2018-06-29 (+67d) | 2018-04-23 → 2018-06-29 (+67d) | 1d? → 0d |  | 59d → 104d | none → 179 |  |

| ID | Task | Start | Finish | Duration | Total float | Predecessors | Other |
| --- | --- | --- | --- | --- | --- | --- | --- |
| 181 | **Comprobante de contingencia al CPE** |  | 2018-04-23 → 2018-08-01 (+100d) | 1d? → 72d | 59d → 81d |  |  |
| 182 | **Desarrollo** |  | 2018-04-23 → 2018-07-11 (+79d) | 1d? → 57d | 59d → 81d |  |  |
| 183 | Formulario 816-Solicitud de autorización-Contingencia CPE ( RF1/RF2) |  | 2018-04-23 → 2018-05-23 (+30d) | 1d? → 22d | 59d → 111d |  | was named Desarrollar Comprobante de contingencia al CPE |
| 188 | **Control de Calidad** | 2018-04-23 → 2018-05-24 (+31d) | 2018-04-23 → 2018-07-31 (+99d) | 1d? → 49d | 59d → 82d |  |  |
| 193 | Consultas SOL /Intranet - Contingencia CPE ( RF9/RF10/RF11) | 2018-04-23 → 2018-07-12 (+80d) | 2018-04-23 → 2018-07-31 (+99d) | 1d? → 14d | 59d → 81d | none → 187 | was named CC Comprobante de contingencia al CPE |
| 194 | **Implantación** | 2018-04-23 → 2018-08-01 (+100d) | 2018-04-23 → 2018-08-01 (+100d) | 1d? → 1d | 59d → 81d |  |  |
| 195 | Implementar Comprobante de contingencia al CPE | 2018-04-23 → 2018-08-01 (+100d) | 2018-04-23 → 2018-08-01 (+100d) | 1d? → 1d | 59d → 81d | none → 187, 193 |  |
| 196 | Entregable: Acta de Aprobación de Comprobante de contingencia al CPE | 2018-04-23 → 2018-08-01 (+100d) | 2018-04-23 → 2018-08-01 (+100d) | 1d? → 0d | 59d → 81d | none → 195 |  |
| 197 | **Control del registro de compras y ventas electrónico (RCVE)** |  | 2018-04-23 → 2018-08-15 (+114d) | 1d? → 82d | 59d → 71d |  |  |
| 198 | **Nuevo Padrón de omisos a la presentación del RCVE** | 2018-04-23 → 2018-05-02 (+9d) | 2018-04-23 → 2018-08-15 (+114d) | 1d? → 76d | 59d → 71d |  | was named Padrón de omisos a la presentación del RCVE |
| 202 | **Desarrollo** | 2018-04-23 → 2018-05-09 (+16d) | 2018-04-23 → 2018-06-29 (+67d) | 1d? → 38d | 59d → 71d |  |  |
| 203 | Determinación de omisos y obligados | 2018-04-23 → 2018-05-09 (+16d) | 2018-04-23 → 2018-06-29 (+67d) | 1d? → 38d | 59d → 71d | none → 201 | was named Desarrollar Padrón de omisos a la presentación del RCVE |
| 206 | **Control de Calidad** | 2018-04-23 → 2018-07-02 (+70d) | 2018-04-23 → 2018-08-15 (+114d) | 1d? → 33d | 59d → 71d |  |  |
| 207 | Determinación de omisos y obligados | 2018-04-23 → 2018-07-02 (+70d) | 2018-04-23 → 2018-08-15 (+114d) | 1d? → 33d | 59d → 71d | none → 203 | was named CC Padrón de omisos a la presentación del RCVE |
| 210 | **Implantación** | 2018-04-23 → 2018-08-15 (+114d) | 2018-04-23 → 2018-08-15 (+114d) | 1d? → 1d | 59d → 71d |  |  |
| 211 | Implementar Padrón de omisos a la presentación del RCVE | 2018-04-23 → 2018-08-15 (+114d) | 2018-04-23 → 2018-08-15 (+114d) | 1d? → 1d | 59d → 71d | none → 209FS-1d |  |
| 212 | Entregable: Acta de Aprobación de Padrón de omisos a la presentación del RCVE | 2018-04-23 → 2018-08-15 (+114d) | 2018-04-23 → 2018-08-15 (+114d) | 1d? → 0d | 59d → 71d | none → 211 |  |
| 213 | **Control de omisos con padrón de RCVE** |  | 2018-04-23 → 2018-04-27 (+4d) | 1d? → 5d | 59d → 148d |  |  |
| 217 | **Desarrollo** | 2018-04-23 → 2018-04-25 (+2d) | 2018-04-23 → 2018-04-25 (+2d) | 1d? → 1d | 59d → 148d |  |  |
| 218 | Desarrollar Control de omisos con padrón de RCVE | 2018-04-23 → 2018-04-25 (+2d) | 2018-04-23 → 2018-04-25 (+2d) | 1d? → 1d | 59d → 148d | none → 216 |  |
| 219 | **Control de Calidad** | 2018-04-23 → 2018-04-26 (+3d) | 2018-04-23 → 2018-04-26 (+3d) | 1d? → 1d | 59d → 148d |  |  |
| 220 | CC Control de omisos con padrón de RCVE | 2018-04-23 → 2018-04-26 (+3d) | 2018-04-23 → 2018-04-26 (+3d) | 1d? → 1d | 59d → 148d | none → 218 |  |
| 221 | **Implantación** | 2018-04-23 → 2018-04-27 (+4d) | 2018-04-23 → 2018-04-27 (+4d) | 1d? → 1d | 59d → 148d |  |  |
| 222 | Implementar Control de omisos con padrón de RCVE | 2018-04-23 → 2018-04-27 (+4d) | 2018-04-23 → 2018-04-27 (+4d) | 1d? → 1d | 59d → 148d | none → 220 |  |
| 223 | Entregable: Acta de Aprobación de Control de omisos con padrón de RCVE | 2018-04-23 → 2018-04-27 (+4d) | 2018-04-23 → 2018-04-27 (+4d) | 1d? → 0d | 59d → 148d | none → 222 |  |
| 224 | **Control de Declaración IGV - Renta Mensual** |  | 2018-04-23 → 2018-08-30 (+129d) | 1d? → 93d | 59d → 60d |  |  |
| 225 | **Reemplazo de PDT por Declara Fácil con propuesta de DJ** |  | 2018-04-23 → 2018-08-30 (+129d) | 1d? → 93d | 59d → 60d |  |  |
| 229 | **Desarrollo** | 2018-04-23 → 2018-04-25 (+2d) | 2018-04-23 → 2018-08-01 (+100d) | 1d → 70d | 59d → 60d |  |  |
| 231 | **Control de Calidad** | 2018-04-23 → 2018-08-02 (+101d) | 2018-04-23 → 2018-08-30 (+129d) | 1d → 21d | 59d → 60d |  |  |
| 233 | **Implantación** | 2018-04-23 → 2018-08-30 (+129d) | 2018-04-23 → 2018-08-30 (+129d) | 1d → 0d | 59d → 60d |  |  |
| 239 | **Desarrollo** | 2018-04-23 → 2018-04-25 (+2d) | 2018-07-16 → 2018-04-25 (-82d) | 60d → 1d | 0d → 148d |  |  |
| 241 | **Control de Calidad** | 2018-04-23 → 2018-04-26 (+3d) | 2018-04-23 → 2018-04-26 (+3d) |  | 59d → 148d |  |  |
| 243 | **Implantación** | 2018-04-23 → 2018-04-27 (+4d) | 2018-04-23 → 2018-04-27 (+4d) |  | 59d → 148d |  |  |
| 245 | **Determinación de omisos a la DJ del IGV Renta Mensual** |  | 2018-04-23 → 2018-05-30 (+37d) | 1d? → 27d | 59d → 126d |  |  |
| 249 | **Desarrollo** | 2018-04-23 → 2018-04-25 (+2d) | 2018-04-23 → 2018-05-16 (+23d) | 1d? → 15d | 59d → 126d |  |  |
| 250 | Determinación de omisos a la DJ del IGV Renta Mensual | 2018-04-23 → 2018-04-25 (+2d) | 2018-04-23 → 2018-05-16 (+23d) | 1d? → 15d | 59d → 126d | none → 248 |  |
| 251 | **Control de Calidad** | 2018-04-23 → 2018-05-17 (+24d) | 2018-04-23 → 2018-05-30 (+37d) | 1d → 10d | 59d → 126d |  |  |
| 253 | **Implantación** | 2018-04-23 → 2018-05-30 (+37d) | 2018-04-23 → 2018-05-30 (+37d) |  | 59d → 126d |  |  |
| 256 | **Determinación de omisos a la DDJJ IGV Renta Mensual - Comprobante Único** |  | 2018-04-23 → 2018-04-27 (+4d) | 1d? → 5d | 59d → 148d |  |  |
| 260 | **Desarrollo** | 2018-04-23 → 2018-04-25 (+2d) | 2018-04-23 → 2018-04-25 (+2d) | 1d? → 1d | 59d → 148d |  |  |
| 261 | Determinación de omisos a la DDJJ IGV Renta Mensual - Comprobante Único | 2018-04-23 → 2018-04-25 (+2d) | 2018-04-23 → 2018-04-25 (+2d) | 1d? → 1d | 59d → 148d | none → 259 |  |
| 262 | **Control de Calidad** | 2018-04-23 → 2018-04-26 (+3d) | 2018-04-23 → 2018-04-26 (+3d) | 1d? → 1d | 59d → 148d |  |  |
| 264 | **Implantación** | 2018-04-23 → 2018-04-27 (+4d) | 2018-04-23 → 2018-04-27 (+4d) | 1d? → 1d | 59d → 148d |  |  |
| 267 | **Actualización en línea de las presentaciones de DJ - MEPECO** |  | 2018-04-23 → 2018-06-22 (+60d) | 1d? → 44d | 59d → 109d |  |  |
| 271 | **Desarrollo** | 2018-04-23 → 2018-04-25 (+2d) | 2018-04-23 → 2018-05-18 (+25d) | 1d? → 17d | 59d → 109d |  |  |
| 272 | Actualización en línea de las presentaciones de DJ - MEPECO | 2018-04-23 → 2018-04-25 (+2d) | 2018-04-23 → 2018-05-18 (+25d) | 1d? → 17d | 59d → 109d | none → 270 |  |
| 273 | **Control de Calidad** | 2018-04-23 → 2018-05-21 (+28d) | 2018-04-23 → 2018-06-22 (+60d) | 1d? → 25d | 59d → 109d |  |  |
| 275 | **Implantación** | 2018-04-23 → 2018-06-22 (+60d) | 2018-04-23 → 2018-06-22 (+60d) | 1d? → 1d | 59d → 109d |  |  |
| 279 | **Perfil para seleccionar Accion masiva** |  | 2018-04-23 → 2018-04-27 (+4d) | 1d? → 5d | 59d → 148d |  |  |
| 283 | **Desarrollo** | 2018-04-23 → 2018-04-25 (+2d) | 2018-04-23 → 2018-04-25 (+2d) | 1d? → 1d | 59d → 148d |  |  |
| 285 | **Control de Calidad** | 2018-04-23 → 2018-04-26 (+3d) | 2018-04-23 → 2018-04-26 (+3d) | 1d? → 1d | 59d → 148d |  |  |
| 287 | **Implantación** | 2018-04-23 → 2018-04-27 (+4d) | 2018-04-23 → 2018-04-27 (+4d) | 1d? → 1d | 59d → 148d |  |  |
| 290 | **Nuevo CCV que integra el Gema WEB** |  | 2018-04-23 → 2018-04-27 (+4d) | 1d? → 5d | 59d → 148d |  |  |
| 294 | **Desarrollo** | 2018-04-23 → 2018-04-25 (+2d) | 2018-04-23 → 2018-04-25 (+2d) | 1d? → 1d | 59d → 148d |  |  |
| 296 | **Control de Calidad** | 2018-04-23 → 2018-04-26 (+3d) | 2018-04-23 → 2018-04-26 (+3d) | 1d? → 1d | 59d → 148d |  |  |
| 298 | **Implantación** | 2018-04-23 → 2018-04-27 (+4d) | 2018-04-23 → 2018-04-27 (+4d) | 1d? → 1d | 59d → 148d |  |  |
| 301 | **SINE para las carta inductivas y esquelas** |  | 2018-04-23 → 2018-04-27 (+4d) | 1d? → 5d | 59d → 148d |  |  |
| 305 | **Desarrollo** | 2018-04-23 → 2018-04-25 (+2d) | 2018-04-23 → 2018-04-25 (+2d) | 1d? → 1d | 59d → 148d |  |  |
| 307 | **Control de Calidad** | 2018-04-23 → 2018-04-26 (+3d) | 2018-04-23 → 2018-04-26 (+3d) | 1d? → 1d | 59d → 148d |  |  |
| 309 | **Implantación** | 2018-04-23 → 2018-04-27 (+4d) | 2018-04-23 → 2018-04-27 (+4d) | 1d? → 1d | 59d → 148d |  |  |
| 312 | **SIEV para la gestión inductiva** |  | 2018-04-23 → 2018-04-27 (+4d) | 1d? → 5d | 59d → 148d |  |  |
| 316 | **Desarrollo** | 2018-04-23 → 2018-04-25 (+2d) | 2018-04-23 → 2018-04-25 (+2d) | 1d? → 1d | 59d → 148d |  |  |
| 318 | **Control de Calidad** | 2018-04-23 → 2018-04-26 (+3d) | 2018-04-23 → 2018-04-26 (+3d) | 1d? → 1d | 59d → 148d |  |  |
| 320 | **Implantación** | 2018-04-23 → 2018-04-27 (+4d) | 2018-04-23 → 2018-04-27 (+4d) | 1d? → 1d | 59d → 148d |  |  |
| 323 | **Utilización del CRM como soporte a las campañas de gestión inductiva** |  | 2018-04-23 → 2018-04-27 (+4d) | 1d? → 5d | 59d → 148d |  |  |
| 327 | **Desarrollo** | 2018-04-23 → 2018-04-25 (+2d) | 2018-04-23 → 2018-04-25 (+2d) | 1d? → 1d | 59d → 148d |  |  |
| 329 | **Control de Calidad** | 2018-04-23 → 2018-04-26 (+3d) | 2018-04-23 → 2018-04-26 (+3d) | 1d? → 1d | 59d → 148d |  |  |
| 331 | **Implantación** | 2018-04-23 → 2018-04-27 (+4d) | 2018-04-23 → 2018-04-27 (+4d) | 1d? → 1d | 59d → 148d |  |  |
| 334 | **Fiscalización Parcial Electrónica del IGV** |  | 2018-04-23 → 2018-06-28 (+66d) | 1d? → 48d | 59d → 105d |  |  |
| 335 | **Piloto de fiscalización parcial electrónica de comprobantes duplicados** |  | 2018-04-23 → 2018-06-28 (+66d) | 1d? → 48d | 59d → 105d |  |  |

| ID | Task | Start | Finish | Duration | Complete | Total float | Predecessors |
| --- | --- | --- | --- | --- | --- | --- | --- |
| 339 | **Desarrollo** | 2018-04-23 → 2018-04-25 (+2d) | 2018-04-23 → 2018-05-31 (+38d) | 1d? → 26d |  | 59d → 105d |  |
| 341 | **Control de Calidad** | 2018-04-23 → 2018-06-01 (+39d) | 2018-04-23 → 2018-06-28 (+66d) | 1d? → 20d |  | 59d → 105d |  |
| 343 | **Implantación** | 2018-04-23 → 2018-06-28 (+66d) | 2018-04-23 → 2018-06-28 (+66d) | 1d? → 1d |  | 59d → 105d |  |
| 345 | Entregable: Piloto de fiscalización parcial electrónica de comprobantes duplicados- Implementado | 2018-04-23 → 2018-06-28 (+66d) | 2018-04-23 → 2018-06-28 (+66d) | 1d? → 0d |  | 59d → 105d | none → 344 |
| 346 | **Fiscalización parcial electrónica de diferencias entre RCVE y DJ de IGV** |  | 2018-04-23 → 2018-04-30 (+7d) | 1d? → 6d |  | 59d → 147d |  |
| 350 | **Desarrollo** | 2018-04-23 → 2018-04-25 (+2d) | 2018-04-23 → 2018-04-25 (+2d) | 1d? → 1d |  | 59d → 147d |  |
| 352 | **Control de Calidad** | 2018-04-23 → 2018-04-26 (+3d) | 2018-04-23 → 2018-04-26 (+3d) | 1d? → 1d |  | 59d → 147d |  |
| 354 | **Implantación** | 2018-04-23 → 2018-04-27 (+4d) | 2018-04-23 → 2018-04-27 (+4d) | 1d? → 1d |  | 59d → 147d |  |
| 356 | Entregable: Fiscalización parcial electrónica de diferencias entre RCVE y DJ de IGV- Implementado | 2018-04-23 → 2018-04-30 (+7d) | 2018-04-23 → 2018-04-30 (+7d) | 1d? → 1d |  | 59d → 147d | none → 355 |
| 357 | **CEI Alineado a Procesos** | 2018-04-23 A | 2018-04-27 → 2018-11-22 (+209d) | 5d? → 153d | 0% → 8% | 55d → 0d |  |
| 358 | **Iteración 1** | 2018-04-23 A | 2018-04-27 → 2018-09-05 (+131d) | 5d? → 97d | 0% → 8% | 55d → 0d |  |
| 359 | Elaborar Documento de Reglas de Negocio | 2018-04-23 A | 2018-04-27 → 2018-05-07 (+10d) | 5d → 10d | 0% → 50% | 55d → 0d |  |
| 360 | Elaborar Mapa de Procesos AS IS | 2018-04-23 A | 2018-04-23 → 2018-06-15 (+53d) | 1d? → 30d | 0% → 3% | 59d → 0d | none → 359 |
| 361 | Elaborar Mapa de Procesos TO BE | 2018-04-23 A | 2018-04-23 → 2018-07-26 (+94d) | 1d? → 30d | 0% → 3% | 59d → 0d | none → 360 |
| 362 | Elaborar Ficha del Proceso | 2018-04-23 A | 2018-04-23 → 2018-09-05 (+135d) | 1d? → 30d | 0% → 3% | 59d → 0d | none → 361 |
| 363 | **Iteración 2** | 2018-04-23 A | 2018-04-23 → 2018-11-22 (+213d) | 1d? → 153d | 0% → 7% | 59d → 0d |  |
| 364 | Elaborar Documento de Reglas de Negocio | 2018-04-23 A | 2018-04-23 → 2018-09-25 (+155d) | 1d? → 15d | 0% → 7% | 59d → 0d | none → 362 |
| 365 | Elaborar Mapa de Procesos AS IS | 2018-04-23 A | 2018-04-23 → 2018-10-15 (+175d) | 1d? → 15d | 0% → 7% | 59d → 0d | none → 364 |
| 366 | Elaborar Mapa de Procesos TO BE | 2018-04-23 A | 2018-04-23 → 2018-11-02 (+193d) | 1d? → 15d | 0% → 7% | 59d → 0d | none → 365 |
| 367 | Elaborar Ficha del Proceso | 2018-04-23 A | 2018-04-23 → 2018-11-22 (+213d) | 1d? → 15d | 0% → 7% | 59d → 0d | none → 366 |

## Version 5 (data date 2018-04-23, saved 2018-05-23)

Note of the change: Cronograma para aplicar formulas

Last finish stays 2018-11-22.

Added:

| ID | Task | Duration | Start | Finish | Predecessors |
| --- | --- | --- | --- | --- | --- |
| 357 | **Flujo de Caja** | 5d | 2018-04-23 | 2018-04-27 |  |
| 358 | **Análisis** | 2d | 2018-04-23 | 2018-04-24 |  |
| 359 | Revisión del MPN | 1d | 2018-04-23 | 2018-04-23 |  |
| 360 | Elaboración del F2-AR1 | 1d | 2018-04-24 | 2018-04-24 | 359 |
| 361 | **Desarrollo** | 1d | 2018-04-25 | 2018-04-25 |  |
| 362 | Flujo de ingresos e Egresos de efectivo y/o cuentas bancarias | 1d | 2018-04-25 | 2018-04-25 | 360 |
| 363 | **Control de Calidad** | 1d | 2018-04-26 | 2018-04-26 |  |
| 364 | Flujo de ingresos e Egresos de efectivo y/o cuentas bancarias | 1d | 2018-04-26 | 2018-04-26 | 362 |
| 365 | **Implantación** | 1d | 2018-04-27 | 2018-04-27 |  |
| 366 | Flujo de ingresos e Egresos de efectivo y/o cuentas bancarias | 1d | 2018-04-27 | 2018-04-27 | 364 |
| 367 | Entregable: Flujo de ingresos e Egresos de efectivo y/o cuentas bancarias- Implementado | 0d | 2018-04-27 | 2018-04-27 | 366 |

## Version 6 (data date 2018-04-23, saved 2018-06-21)

Note of the change: https://soleramobile.atlassian.net/wiki/spaces/SUNAT/pages/140410887/Historias+de+Usuario

Last finish 2018-11-22 → 2018-12-03 (+11d). Complete tasks 20 → 0.

Added:

| ID | Task | Duration | Start | Finish | Predecessors | Constraint | Resources |
| --- | --- | --- | --- | --- | --- | --- | --- |
| 47 | **Desarrollo** | 32d | 2018-04-23 | 2018-06-06 |  |  |  |
| 48 | **Modelo de PN – Teradata** | 32d | 2018-04-23 | 2018-06-06 |  |  |  |
| 49 | DWE Insumos PPNN - Vehiculos Adquiridos | 32d | 2018-04-23 | 2018-06-06 |  |  |  |
| 50 | Módulo batch Variables PPNN - Ingresos | 32d | 2018-04-23 | 2018-06-06 |  |  |  |
| 51 | Módulo batch Variables PPNN - Salidas | 32d | 2018-04-23 | 2018-06-06 |  |  |  |
| 52 | Módulo batch Variables PPNN - Patrimonio y otros | 32d | 2018-04-23 | 2018-06-06 |  |  |  |
| 56 | DWE Insumos PPNN - Anexas F.617 | 34d | 2018-04-23 | 2018-06-08 |  |  |  |
| 57 | DWE Insumos PPNN - Vehiculos Adquiridos | 5d | 2018-06-07 | 2018-06-13 | 49 |  |  |
| 58 | DWE Insumos PPNN - SUNARP | 35d | 2018-04-23 | 2018-06-11 |  |  |  |
| 59 | Panderos | 39d | 2018-04-23 | 2018-06-15 |  |  |  |
| 60 | Módulo batch Variables PPNN - Ingresos | 9d | 2018-06-07 | 2018-06-19 | 50 |  |  |
| 61 | Módulo batch Variables PPNN - Salidas | 9d | 2018-06-07 | 2018-06-19 | 51 |  |  |
| 62 | Módulo batch Variables PPNN - Patrimonio y otros | 9d | 2018-06-07 | 2018-06-19 | 52 |  |  |
| 86 | Matriz PRC - Consulta | 5d | 2018-06-06 | 2018-06-12 |  | start no earlier than 2018-06-06 |  |
| 95 | Matriz PRC - Variable de Omiso a la Declaración MEPECO | 24d | 2018-05-28 | 2018-06-28 | 89 |  |  |
| 96 | Matriz PRC - Variable de Omiso a la Declaración PRICO | 24d | 2018-05-28 | 2018-06-28 | 90 |  |  |
| 97 | Matriz PRC - Variable Omisos Libros Electrónicos - Padrón acotado | 24d | 2018-05-28 | 2018-06-28 | 91 |  |  |
| 98 | Matriz PRC - Consulta | 12d | 2018-06-13 | 2018-06-28 | 86 |  |  |
| 127 | **Adquisición - Servicio de Centro de Contactos** | 5d | 2018-06-05 | 2018-06-11 |  |  |  |
| 128 | Validación del TDR (Procesos y DDST) | 2d | 2018-06-05 | 2018-06-06 |  | start no earlier than 2018-06-05 | AGAMBOA; WGALINDEZ |
| 129 | Levantamiento de observaciones | 1d | 2018-06-07 | 2018-06-07 | 128 |  | DESPINOZA; J.ANTON |
| 130 | Visado del TDR | 1d | 2018-06-08 | 2018-06-08 | 129 |  | J.ANTON |
| 131 | Envío del TDR para Adjudicación | 1d | 2018-06-11 | 2018-06-11 | 130 |  | J.ANTON |
| 132 | Entregable: TDR Servicio de Centro de Contactos | 0d | 2018-06-11 | 2018-06-11 | 131 |  |  |
| 223 | **Iteración 1** | 16d | 2018-05-28 | 2018-06-18 |  |  |  |
| 224 | Preparación de datos para Padrón de Obligados y Omisos a LE | 8d | 2018-05-28 | 2018-06-06 |  | start no earlier than 2018-05-28 | EYATACO |
| 225 | Elaboración del Padrón de Obligados y Omisos a LE | 7d | 2018-06-07 | 2018-06-15 | 224 |  | LHONDERMAN |
| 226 | Carga de archivos de Padrón de Obligados y Omisos a LE en Base de Datos | 1d | 2018-06-18 | 2018-06-18 | 225 |  | VMENDIETA |
| 227 | Entregable : Padrón de Obligados y Omisos a LE | 0d | 2018-06-18 | 2018-06-18 | 226 |  |  |
| 228 | **Iteración 2** | 76d | 2018-05-02 | 2018-08-15 |  |  |  |

Changed:

| ID | Task | Start | Finish | Duration | Complete | Total float | Predecessors | Other |
| --- | --- | --- | --- | --- | --- | --- | --- | --- |
| 1 | **Control Electrónico del IGV** |  | 2018-11-22 → 2018-12-03 (+11d) | 153d → 160d | 11% → 0% |  |  |  |
| 2 | **Gestión del Proyecto** | 2018-04-23 A → 2018-04-23 |  |  | 63% → 0% | 59.75d → 66.75d |  |  |
| 3 | **Iniciación** | 2018-04-23 A → 2018-04-23 | 2018-05-02 A → 2018-05-02 |  | 100% → 0% | none → 66.75d |  |  |
| 4 | **Project Charter** | 2018-04-23 A → 2018-04-23 | 2018-04-24 A → 2018-04-24 |  | 100% → 0% | none → 66.75d |  |  |
| 5 | Elaborar el Project Charter | 2018-04-23 A → 2018-04-23 | 2018-04-23 A → 2018-04-23 |  | 100% → 0% | none → 66.75d |  |  |
| 6 | Revisar el Project Charter | 2018-04-24 A → 2018-04-24 | 2018-04-24 A → 2018-04-24 |  | 100% → 0% | none → 150.75d |  |  |
| 7 | **Scope Statement** | 2018-04-24 A → 2018-04-24 | 2018-05-02 A → 2018-05-02 |  | 100% → 0% | none → 150.75d |  |  |
| 8 | Elaborar el Scope Statement | 2018-04-24 A → 2018-04-24 | 2018-05-02 A → 2018-05-02 |  | 100% → 0% | none → 150.75d |  |  |
| 9 | Revisar el Scope Statement | 2018-05-02 A → 2018-05-02 | 2018-05-02 A → 2018-05-02 |  | 100% → 0% | none → 150.75d |  |  |
| 10 | **Plan de Proyecto** | 2018-05-02 A → 2018-05-02 | 2018-05-07 A → 2018-05-07 |  | 100% → 0% | none → 150.75d |  |  |
| 11 | Elaborar el Plan de Proyecto | 2018-05-02 A → 2018-05-02 | 2018-05-07 A → 2018-05-07 |  | 100% → 0% | none → 150.75d |  |  |
| 12 | **Informes de Estado del Proyecto** | 2018-05-18 A → 2018-05-18 |  |  | 18% → 0% | 62.38d → 69.38d |  |  |
| 13 | Informes de Estado del Proyecto 1 | 2018-05-18 A → 2018-05-18 | 2018-05-18 A → 2018-05-18 |  | 100% → 0% | none → 69.38d |  |  |
| 28 | **Reunión de Coordinación Semanal** | 2018-05-21 A → 2018-05-21 |  |  | 7% → 0% | 59.75d → 66.75d |  |  |
| 29 | Reunión de Coordinación Semanal 1 | 2018-05-21 A → 2018-05-21 | 2018-05-21 A → 2018-05-21 |  | 100% → 0% | none → 66.75d |  |  |
| 54 | Revisar Modelo de IGV - Teradata |  | 2018-04-30 → 2018-05-31 (+31d) | 6d → 28d |  | 147d → 132d |  |  |
| 63 | **Implantación** | 2018-04-30 → 2018-05-31 (+31d) |  | 36d → 14d |  | 112d → 119d |  |  |
| 64 | Modelo de IGV - Teradata | 2018-04-30 → 2018-05-31 (+31d) | 2018-04-30 → 2018-05-31 (+31d) |  |  | 147d → 132d |  |  |
| 65 | Modelo de PN – Teradata |  |  |  |  | 112d → 119d | 55FS-1d → 62FS-1d |  |
| 67 | **Gestión de Riesgo del Cumplimiento Tributario del IGV** | 2018-04-23 A → 2018-04-23 |  |  | 51% → 0% | 104d → 111d |  |  |
| 68 | **Matriz de Riesgo del Contribuyente** | 2018-04-23 A → 2018-04-23 |  |  | 51% → 0% | 104d → 111d |  |  |
| 80 | **Desarrollo** | 2018-04-23 A → 2018-04-23 | 2018-05-25 → 2018-06-12 (+18d) | 24d → 36d | 83% → 0% | 104d → 111d |  |  |
| 81 | Matriz PRC - Variable de Condición de Domicilio - Estado del Contribuyente | 2018-04-23 A → 2018-04-23 | 2018-05-18 A → 2018-05-18 |  | 100% → 0% | none → 111d |  |  |
| 82 | Matriz PRC - Variable de Omiso a la Declaración MEPECO | 2018-04-23 A → 2018-04-23 | 2018-05-18 A → 2018-05-18 |  | 100% → 0% | none → 112d |  |  |
| 83 | Matriz PRC - Variable de Omiso a la Declaración PRICO | 2018-04-23 A → 2018-04-23 | 2018-05-18 A → 2018-05-18 |  | 100% → 0% | none → 112d |  |  |
| 84 | Matriz PRC - Variable Omisos Libros Electrónicos - Padrón acotado | 2018-04-23 A → 2018-04-23 | 2018-05-18 A → 2018-05-18 |  | 100% → 0% | none → 112d |  |  |
| 85 | Matriz PRC - Servicio de Perfil | 2018-04-23 A → 2018-04-23 | 2018-05-18 A → 2018-05-18 |  | 100% → 0% | none → 136d |  |  |
| 87 | **Integración** | 2018-05-21 A → 2018-05-21 |  |  | 20% → 0% | 104d → 111d |  |  |
| 88 | Matriz PRC - Variable de Condición de Domicilio - Estado del Contribuyente | 2018-05-21 A → 2018-05-21 |  |  | 20% → 0% | 104d → 111d |  |  |
| 89 | Matriz PRC - Variable de Omiso a la Declaración MEPECO | 2018-05-21 A → 2018-05-21 |  |  | 20% → 0% | 104d → 112d |  |  |
| 90 | Matriz PRC - Variable de Omiso a la Declaración PRICO | 2018-05-21 A → 2018-05-21 |  |  | 20% → 0% | 104d → 112d |  |  |
| 91 | Matriz PRC - Variable Omisos Libros Electrónicos - Padrón acotado | 2018-05-21 A → 2018-05-21 |  |  | 20% → 0% | 104d → 112d |  |  |
| 92 | Matriz PRC - Servicio de Perfil | 2018-05-21 A → 2018-05-21 |  |  | 20% → 0% | 104d → 136d |  |  |
| 94 | Matriz PRC - Variable de Condición de Domicilio - Estado del Contribuyente |  |  |  |  | 104d → 111d | 92, 88, 89, 90, 91 → 88 | was named Matriz de Riesgo del Contribuyente |
| 102 | **Actualizar vinculaciones a los ONR** | 2018-04-23 A → 2018-04-23 | 2018-04-26 → 2018-04-27 (+1d) | 4d → 5d | 80% → 0% | 149d → 155d |  |  |
| 103 | **Análisis** | 2018-04-23 A → 2018-04-23 | 2018-04-23 → 2018-04-24 (+1d) | 1d → 2d | 50% → 0% | 152d → 155d |  |  |
| 105 | Elaboración del F2-AR1 | 2018-04-23 A → 2018-04-24 (+1d) | 2018-04-23 A → 2018-04-24 (+1d) |  | 100% → 0% | none → 155d |  |  |
| 106 | **Desarrollo** | 2018-04-24 A → 2018-04-25 (+1d) | 2018-04-24 A → 2018-04-25 (+1d) |  | 100% → 0% | none → 155d |  |  |
| 107 | Desarrollar Actualizar vinculaciones a los ONR | 2018-04-24 A → 2018-04-25 (+1d) | 2018-04-24 A → 2018-04-25 (+1d) |  | 100% → 0% | none → 155d |  |  |
| 108 | **Control de Calidad** | 2018-04-25 A → 2018-04-26 (+1d) | 2018-04-25 A → 2018-04-26 (+1d) |  | 100% → 0% | none → 155d |  |  |
| 109 | Actualizar vinculaciones a los ONR | 2018-04-25 A → 2018-04-26 (+1d) | 2018-04-25 A → 2018-04-26 (+1d) |  | 100% → 0% | none → 155d |  |  |
| 110 | **Implantación** | 2018-04-26 A → 2018-04-27 (+1d) | 2018-04-26 A → 2018-04-27 (+1d) |  | 100% → 0% | none → 155d |  |  |
| 111 | Implementar Actualizar vinculaciones a los ONR | 2018-04-26 A → 2018-04-27 (+1d) | 2018-04-26 A → 2018-04-27 (+1d) |  | 100% → 0% | none → 155d |  |  |
| 112 | Entregable: Acta de Aprobación de Actualizar vinculaciones a los ONR - Implementada | 2018-04-26 A → 2018-04-27 (+1d) | 2018-04-26 A → 2018-04-27 (+1d) |  | 100% → 0% | none → 155d |  |  |
| 113 | **APP de Consulta de Cumplimiento Tributario del IGV** | 2018-04-23 A → 2018-04-23 | 2018-04-23 A → 2018-04-23 |  | 100% → 0% | none → 160d |  |  |
| 114 | Entregable: APP de Consulta de Cumplimiento Tributario - Implementado | 2018-04-23 A → 2018-04-23 | 2018-04-23 A → 2018-04-23 |  | 100% → 0% | none → 160d |  |  |
| 115 | **Tablero de Gestión y Seguimiento del Control Electrónico del IGV** | 2018-04-23 A → 2018-04-23 | 2018-04-23 A → 2018-04-23 |  | 100% → 0% | none → 160d |  |  |
| 116 | Entregable: Tablero de Gestión y Seguimiento de Control Electónico del IGV - Implementado | 2018-04-23 A → 2018-04-23 | 2018-04-23 A → 2018-04-23 |  | 100% → 0% | none → 160d |  |  |
| 117 | **Actualización del Registro Único de Contribuyente** | 2018-04-24 A → 2018-04-23 (-1d) | 2018-07-02 → 2018-06-29 (-3d) |  | 44% → 0% | 103d → 111d |  |  |
| 118 | **Campaña de Actualización email (configuración de 12 a 6 meses)** | 2018-05-14 A → 2018-05-14 |  |  | 75% → 0% | 131d → 138d |  |  |
| 119 | **Desarrollo** | 2018-05-14 A → 2018-05-14 | 2018-05-15 A → 2018-05-15 |  | 100% → 0% | none → 138d |  |  |
| 120 | Campaña de Actualización email (configuración de 12 a 6 meses) | 2018-05-14 A → 2018-05-14 | 2018-05-15 A → 2018-05-15 |  | 100% → 0% | none → 138d |  |  |
| 121 | **Control de Calidad** | 2018-05-16 A → 2018-05-16 |  |  | 80% → 0% | 131d → 138d |  |  |
| 122 | Campaña de Actualización email (configuración de 12 a 6 meses) | 2018-05-16 A → 2018-05-16 |  |  | 80% → 0% | 131d → 138d |  |  |
| 126 | **Campaña de Actualización celular** | 2018-04-24 A → 2018-04-23 (-1d) | 2018-07-02 → 2018-06-29 (-3d) |  | 39% → 0% | 103d → 111d |  |  |
| 133 | **Desarrollo** | 2018-04-24 A → 2018-04-23 (-1d) | 2018-05-31 → 2018-05-30 (-1d) |  | 70% → 0% | 103d → 111d |  |  |
| 134 | Desarrollar Campaña de Actualización celular | 2018-04-24 A → 2018-04-23 (-1d) | 2018-05-31 → 2018-05-30 (-1d) |  | 70% → 0% | 103d → 111d |  |  |
| 135 | **Control de Calidad** | 2018-06-01 → 2018-05-31 (-1d) | 2018-06-29 → 2018-06-28 (-1d) |  |  | 103d → 111d |  |  |
| 136 | Campaña de Actualización celular | 2018-06-01 → 2018-05-31 (-1d) | 2018-06-29 → 2018-06-28 (-1d) |  |  | 103d → 111d |  |  |
| 137 | **Implantación** | 2018-07-02 → 2018-06-29 (-3d) | 2018-07-02 → 2018-06-29 (-3d) |  |  | 103d → 111d |  |  |
| 138 | Implementar Campaña de Actualización celular | 2018-07-02 → 2018-06-29 (-3d) | 2018-07-02 → 2018-06-29 (-3d) |  |  | 103d → 111d |  |  |
| 139 | Entregable: Acta de Aprobación de Campaña de Actualización celular | 2018-07-02 → 2018-06-29 (-3d) | 2018-07-02 → 2018-06-29 (-3d) |  |  | 103d → 111d |  |  |
| 243 | **Determinación y control de Omisos a Libros automatizada** |  |  |  |  | 148d → 155d |  | was named Control de omisos con padrón de RCVE |
| 398 | **CEI Alineado a Procesos** | 2018-04-23 A → 2018-04-23 | 2018-11-22 → 2018-12-03 (+11d) | 153d → 160d | 8% → 0% |  |  |  |
| 399 | **Iteración 1** | 2018-04-23 A → 2018-04-23 | 2018-09-05 → 2018-09-10 (+5d) | 97d → 100d | 8% → 0% |  |  |  |
| 400 | Elaborar Documento de Reglas de Negocio | 2018-04-23 A → 2018-04-23 |  |  | 50% → 0% |  |  |  |
| 401 | Elaborar Mapa de Procesos AS IS | 2018-04-23 A → 2018-05-08 (+15d) | 2018-06-15 → 2018-06-18 (+3d) |  | 3% → 0% |  |  |  |
| 402 | Elaborar Mapa de Procesos TO BE | 2018-04-23 A → 2018-06-19 (+57d) | 2018-07-26 → 2018-07-30 (+4d) |  | 3% → 0% |  |  |  |
| 403 | Elaborar Ficha del Proceso | 2018-04-23 A → 2018-07-31 (+99d) | 2018-09-05 → 2018-09-10 (+5d) |  | 3% → 0% |  |  |  |
| 404 | **Iteración 2** | 2018-04-23 A → 2018-09-11 (+141d) | 2018-11-22 → 2018-12-03 (+11d) | 153d → 60d | 7% → 0% |  |  |  |

| ID | Task | Start | Finish | Complete |
| --- | --- | --- | --- | --- |
| 405 | Elaborar Documento de Reglas de Negocio | 2018-04-23 A → 2018-09-11 (+141d) | 2018-09-25 → 2018-10-01 (+6d) | 7% → 0% |
| 406 | Elaborar Mapa de Procesos AS IS | 2018-04-23 A → 2018-10-02 (+162d) | 2018-10-15 → 2018-10-22 (+7d) | 7% → 0% |
| 407 | Elaborar Mapa de Procesos TO BE | 2018-04-23 A → 2018-10-23 (+183d) | 2018-11-02 → 2018-11-12 (+10d) | 7% → 0% |
| 408 | Elaborar Ficha del Proceso | 2018-04-23 A → 2018-11-13 (+204d) | 2018-11-22 → 2018-12-03 (+11d) | 7% → 0% |
